# Lac La Biche County New Aquatics Facility - 2026.01.16- IPR

How a schedule from Primavera P6 changed from version to version. A marks actual dates.

## Version 1 (data date 2026-01-16, saved 2026-04-15, file UP33-54074-2026.01.16 - IPR.xer)

| ID | WBS | Task | Duration | Start | Finish | Predecessors | Complete | Total float | Constraint |
| --- | --- | --- | --- | --- | --- | --- | --- | --- | --- |
|  | 10 | **PROJECT MILESTONES** |  | 2024-04-22 | 2026-08-13 |  |  |  |  |
|  | 2 | **Contractual Milestones** |  | 2026-03-25 | 2026-08-13 |  |  |  |  |
| MIL-CM-100 |  | Contractual Substantial Completion Date | 0d | 2026-03-25 | 2026-03-25 |  |  | 97d | finish on or after 2026-03-25 |
| MIL-CM-200 |  | Contractual Completion Date | 0d | 2026-05-05 | 2026-05-05 |  |  | 70d | finish on or after 2026-05-05 |
| MIL-C-510 |  | Substantial Completion | 0d | 2026-07-16 | 2026-07-16 | PCO-1000 FF |  | 19d |  |
| MIL-C-520 |  | Total Completion | 0d | 2026-08-13 | 2026-08-13 | PCO-1040 FF, PCO-1010 FF, MIL-C-510 FF |  | 0d |  |
|  | 3 | **Construction Milestones** |  | 2024-04-22 | 2026-06-18 |  |  |  |  |
|  | 1 | **Foundation** |  | 2024-04-22 | 2025-11-08 |  |  |  |  |
| MIL-C-460 |  | Construction Start | 0d | 2024-04-22 A | 2024-04-22 A | C-MOB-210 SS | 100% |  |  |
| MIL-C-500 |  | Piling Completion | 0d | 2024-11-01 A | 2024-11-01 A | C-FDN-1020 FF, C-FDN-A11-1010 FF, C-FDN-A18-1000 FF, C-FDN-A20-1040 FF | 100% |  |  |
| MIL-C-530 |  | Pool Basement Walls | 0d | 2024-11-06 A | 2024-11-06 A | C-FDN-A5-1050 FF | 100% |  |  |
| MIL-C-540 |  | Basement Concrete Slab | 0d | 2024-11-22 A | 2024-11-22 A | C-FDN-A6-1080 FF | 100% |  |  |
| MIL-C-560 |  | Lap Pool Raft Slab | 0d | 2025-04-22 A | 2025-04-22 A | C-FDN-A7-1100 FF, C-FDN-A7-1110 FF, C-FDN-A7-1130 FF | 100% |  |  |
| MIL-C-580 |  | Leisure Pool Footing | 0d | 2025-05-02 A | 2025-05-02 A | C-FDN-A12B-1040 FF, X-LP-1010 FF | 100% |  |  |
| MIL-C-590 |  | Leisure Pool Walls | 0d | 2025-05-14 A | 2025-05-14 A | C-FDN-A13(ABCD)-1070 FF, C-FDN-A13(ABCD)-1080 FF, C-FDN-A13(ABCD)-1090 FF, X-LP-1020 FF, C-FDN-A14-1050 FF | 100% |  |  |
| MIL-C-570 |  | Lap Pool Walls | 0d | 2025-05-30 A | 2025-05-30 A | C-FDN-A8-1070 FF, C-FDN-A8-1080 FF, C-FDN-A8-1140 FF | 100% |  |  |
| MIL-C-600 |  | Leisure Pool Raft Slab | 0d | 2025-06-17 A | 2025-06-17 A | C-FDN-A14-1090 FF | 100% |  |  |
| MIL-C-610 |  | Lazy River | 0d | 2025-07-10 A | 2025-07-10 A | C-FDN-A15-1030 FF | 100% |  |  |
| MIL-C-470 |  | Foundation and Pour Concrete Complete | 0d | 2025-11-08 A | 2025-11-08 A | C-FDN-A1-1080 FF, C-FDN-A2-1060 FF, C-FDN-A3-1060 FF, C-FDN-A4-1060 FF, C-FDN-A5-1050 FF, C-FDN-A6-1080 FF, C-FDN-A7A-1040 FF, C-FDN-A6(AB)-1040 FF, C-FDN-A7-1130 FF, C-FDN-A8-1110 FF, C-FDN-SN-LPT-1040 FF, C-FDN-SN-A16-1070 FF, C-FDN-A7-SN-1380 FF, C-FDN-A7-SN-1300 FF, C-FDN-A12A-1050 FF, C-FDN-A12B-1040 FF, C-FDN-A13A-1050 FF, C-FDN-A13(ABCD)-1090 FF, C-FDN-A14-1090 FF, C-FDN-A15-1030 FF, C-FDN-NN-1210 FF, C-FDN-NN-1310 FF, C-FDN-NN-1390 FF, C-FDN-NN-1470 FF, C-FDN-A9-1060 FF, C-FDN-A10A-1050 FF, C-FDN-A10B-1050 FF, C-FDN-A11-1050 FF | 100% |  |  |
|  | 2 | **Structure** |  | 2025-01-10 | 2025-10-18 |  |  |  |  |
| MIL-C-480 |  | Steel Structure Completion | 0d | 2025-01-10 A | 2025-01-10 A | C-SS-PH1-1070 FF, C-SS-PH2-1100 FF, C-SS-PH3-1110 FF | 100% |  |  |
| MIL-C-620 |  | SOG S1A Slab | 0d | 2025-05-02 A | 2025-05-02 A | C-SOG-1100 FF | 100% |  |  |
| MIL-C-630 |  | SOG- S1B | 0d | 2025-09-02 A | 2025-09-02 A | C-SOG-S1B-1050 FF, C-SOG-S1B-1040 FF | 100% |  |  |
| MIL-C-670 |  | SOG- S6/S2A | 0d | 2025-09-19 A | 2025-09-19 A | C-FDN-NN-S6/S2A-1080 FF, C-FDN-NN-S6/S2A-1060 FF | 100% |  |  |
| MIL-C-640 |  | SOG- S1C/D | 0d | 2025-10-09 A | 2025-10-09 A | C-SOG-S1C/D-1070 FF | 100% |  |  |
| MIL-C-650 |  | SOG S1E, S1F, S2B, & S7 | 0d | 2025-10-18 A | 2025-10-18 A | C-FDN-SN-S1E/S1F/S7/S2B-1100 FF | 100% |  |  |
|  | 3 | **Envelope** |  | 2025-06-17 | 2026-01-23 |  |  |  |  |
| MIL-C-710 |  | Roof Water Tight | 0d | 2025-06-17 A | 2025-06-17 A | C-ENV-RF-E-1030 FF, C-ENV-RF-E&S-1000 FF, C-ENV-RF-E&S-1020 FF, C-ENV-SID-CL-N-1000 FF, C-ENV-SID-CL-E-1000 FF | 100% |  |  |
| MIL-C-490 |  | Roofing Completion | 0d | 2025-08-27 A | 2025-08-27 A | C-ENV-RF-N-1000 FF, C-ENV-RF-E-1000 FF, C-ENV-RF-E-1010 FF, C-ENV-RF-E-1030 FF, C-ENV-RF-E-1040 FF, C-ENV-RF-E&S-1000 FF, C-ENV-RF-E&S-1010 FF, C-ENV-RF-E-1020 FF, C-ENV-RF-E&S-1030 FF, C-ENV-RF-N-1060 FF | 100% |  |  |
| MIL-C-720 |  | North Side Envelope | 0d | 2025-09-26 A | 2025-09-26 A | C-ENV-SID-EW-N-1000 FF, C-ENV-SID-GL-N-1040 FF, C-ENV-SID-CL-N-1020 FF | 100% |  |  |
| MIL-C-730 |  | East Side Envelope | 0d | 2025-10-31 A | 2025-10-31 A | C-ENV-SID-EW-E-1010 FF, C-ENV-SID-EW-E-1000 FF, C-ENV-SID-GL-E-1020 FF, C-ENV-SID-CL-E-1020 FF, C-ENV-SID-CL-AC-1110 FF | 100% |  |  |
| MIL-C-440 |  | 100% Complete Fully Enclosing the Building | 0d | 2026-01-23 | 2026-01-23 | C-ENV-SID-CL-N-1000, C-ENV-RF-E-1030, C-ENV-SID-CL-E-1000, C-ENV-SID-GL-S-1010, C-ENV-RF-E&S-1000 FF, C-ENV-SID-CL-E-1020 FF, C-ENV-SID-CL-E-1030 FF, C-ENV-SID-CL-AC-1120 FF, C-ENV-SID-CL-S-1030 FF, C-ENV-SID-CL-S-1040 FF, C-ENV-SID-CL-S-1050 FF |  | 28d |  |
| MIL-C-740 |  | Remaining East & South Side Envelope | 0d | 2026-01-23 | 2026-01-23 | C-ENV-SID-GL-S-1020 FF, C-ENV-SID-EW-S-1000 FF, C-ENV-SID-CL-S-1020 FF, C-ENV-SID-CL-AC-1120 FF, C-ENV-SID-CL-S-1050 FF, C-ENV-SID-CL-S-1040 FF |  | 113d |  |
|  | 4 | **Interior Milestones** |  | 2026-04-20 | 2026-06-18 |  |  |  |  |
| MIL-C-750 |  | Zone-1 Interior Finishes (Mechanical, Electrical Rooms & Corridor) | 0d | 2026-04-20 | 2026-04-20 | T-INT-MF-Z1-MR-1060 FF, T-INT-MF-Z1-ER-1020 FF, T-INT-MF-Z1-ER-1030 FF, T-INT-MF-Z1-1060 FF, T-INT-MF-Z1-1070 FF, T-INT-MF-Z1-1090 FF, T-INT-MF-Z1-1080 FF, T-INT-MF-Z1-1270 FF |  | 80d |  |
| MIL-C-760 |  | Zone-2 Interior Finishes (Staff Areas) | 0d | 2026-05-01 | 2026-05-01 | T-INT-MF-Z2-1150 FF |  | 71d |  |
| MIL-C-780 |  | Zone-4 Interior Finishes (Pool Mechanical, Storage & Chemical Rooms) | 0d | 2026-05-21 | 2026-05-21 | T-INT-MF-Z4-1190 FF, T-INT-MF-Z4-1210 FF |  | 58d |  |
| MIL-C-770 |  | Zone-3 Interior Finishes (Change Rooms) | 0d | 2026-06-04 | 2026-06-04 | T-INT-MF-Z3-1220 FF |  | 48d |  |
| MIL-C-790 |  | Zone-5 Interior Finishes | 0d | 2026-06-09 | 2026-06-09 | T-INT-MF-Z5-1180 FF, T-INT-MF-Z5-1230 FF, T-INT-MF-Z5-1100 FF, T-INT-MF-Z5-1150 FF, T-INT-MF-Z5-2160 FF, T-INT-MF-Z5-2080 FF, T-INT-MF-Z5-2380 FF, T-INT-MF-Z5-2330 FF, T-INT-MF-Z5-1090 FF, T-INT-MF-Z5-2310 SF, T-INT-MF-Z5-2360 FF, IPP-QAQC-190 FF, T-INT-MF-Z5-2280 SF, T-INT-MF-Z5-2210 FF, T-INT-MF-Z5-1110 FF, C-FDN-NN-S6/S2A-1080 FF, T-INT-MF-Z5-2370 SF, P-PRO-152 FF |  | 45d |  |
| MIL-C-800 |  | Zone-6 Interior Finishes | 0d | 2026-06-18 | 2026-06-18 | T-INT-MF-Z6-1150 FF, T-INT-MF-Z6-1160 FF |  | 38d |  |
|  | 4 | **MEIT & Energization Milestones** |  | 2026-03-11 | 2026-04-08 |  |  |  |  |
| MIL-C-810 |  | Energization | 0d | 2026-03-11 | 2026-03-11 | T-INT-MF-Z1-ER-1150 FF |  | 42d |  |
| MIL-C-830 |  | Elevator Testing and Commissioning | 0d | 2026-04-08 | 2026-04-08 | T-MEIT-EL-1080 FF |  | 88d |  |
|  | 6 | **Durations - Calendar** |  | 2024-04-22 | 2026-08-13 |  |  |  |  |
|  | 6 | **General Duration** |  | 2024-04-22 | 2026-08-13 |  |  |  |  |
| DUR-1000 |  | Construction - Mobilization to Occupancy | 5d | 2024-04-22 A | 2026-08-13 | C-MOB-210 SS, PCO-1040 FF |  | 0d |  |
| DUR-1020 |  | Substructure | 0d | 2024-05-22 A | 2025-11-10 A | C-FDN-1020 SS, C-SOG-S1C/D-1070 FF, C-SOG-S1B-1050 FF, C-SOG-1100 FF, C-FDN-A7-1100 FF, C-FDN-A15-1040 FF, C-FDN-NN-1480 FF | 100% |  |  |
| DUR-1030 |  | Super Structure | 41d | 2024-11-12 A | 2025-02-28 A | C-SS-PH1-1000 SS, C-SS-PH3-1110 FF, C-FDN-PH3-1000 SS, C-FDN-PH3-1010 | 100% |  |  |
| DUR-1040 |  | Envelope | 138d | 2025-01-14 A | 2026-01-23 | C-ENV-RF-N-1000 SS, C-ENV-SID-CL-S-1020 FF, C-ENV-SID-CL-S-1040 FF |  | 28d |  |
| DUR-1050 |  | Fitout to Commissioning | 339d | 2025-05-06 A | 2026-06-04 | T-INT-SF-2010 SS, T-INT-MF-Z5-1180 FF, T-INT-MF-Z5-1230 FF, T-INT-MF-Z5-1100 FF, T-INT-MF-Z5-1150 FF, T-INT-MF-Z4-1120 FF, T-INT-MF-Z5-2380 FF, T-INT-MF-Z5-2330 FF, T-INT-MF-Z5-2410 FF, T-INT-MF-Z5-1090 FF, T-INT-MF-Z5-1210 FF, T-INT-MF-Z5-2310 SF, T-INT-MF-Z5-2360 FF, IPP-QAQC-190 FF, T-INT-MF-Z5-2280 SF, C-FDN-NN-S6/S2A-1080 FF, T-INT-MF-Z5-2370 SF, T-INT-MF-Z3-1220 FF, P-PRO-223 FF, P-PRO-152 FF |  | 22d |  |
| DUR-1060 |  | Commissioning | 86d | 2026-03-11 | 2026-07-13 | CX-2000 SS, CX-2047 FF |  | 0d |  |
| DUR-1070 |  | Close Out | 41d | 2026-06-16 | 2026-08-13 | PCO-1000 SS, PCO-1040 FF, PCO-2010 SS |  | 0d |  |
|  | 1 | **Sub Structure** |  | 2024-07-05 | 2025-11-10 |  |  |  |  |
| DUR-1001 |  | Basement Pool Mechanical | 5d | 2024-07-05 A | 2025-06-17 A | C-FDN-2000 SS, C-FDN-A7A-1040 FF, C-FDN-A5-1080 FF, C-FDN-A5-1090 FF | 100% |  |  |
| DUR-1090 |  | Leisure Pool, Lazy River And Family Hot Tub | 5d | 2024-08-13 A | 2025-11-10 A | C-FDN-A12B-1000 SS, C-FDN-A15-1040 FF, C-FDN-A15-1030 FF, C-FDN-A14-1090 FF, C-FDN-NN-1480 FF | 100% |  |  |
| DUR-1110 |  | SOG S1A | 58d | 2025-02-10 A | 2025-05-02 A | C-SOG-1020 SS, C-SOG-1100 FF, C-SOG-1000 SS | 100% |  |  |
| DUR-1080 |  | Lap Pool | 73d | 2025-02-18 A | 2025-05-30 A | C-FDN-A7-1000 SS, C-FDN-A7-1020 SS, C-FDN-A8-1070 FF, MIL-C-570 FF | 100% |  |  |
| DUR-1100 |  | Adult Hot Tub | 40d | 2025-06-27 A | 2025-11-04 A | C-FDN-SN-A16-1000, C-FDN-A7-SN-1390 FF | 100% |  |  |
|  | 2 | **Steel Strucutre** |  | 2024-11-12 | 2025-01-21 |  |  |  |  |
| DUR-1140 |  | Ph-1 | 5d | 2024-11-12 A | 2024-12-12 A | C-SS-PH1-1000 SS, C-SS-PH1-1070 FF | 100% |  |  |
| DUR-1150 |  | Ph-2 | 15d | 2024-11-26 A | 2024-12-21 A | C-SS-PH2-1100 FF, C-SS-PH2-1040 SS | 100% |  |  |
| DUR-1160 |  | Ph-3 | 23.12d | 2024-12-09 A | 2025-01-21 A | C-SS-PH3-1080 SS, C-SS-PH3-1110 FF | 100% |  |  |
|  | 3 | **Building Envelope** |  | 2025-01-14 | 2026-01-23 |  |  |  |  |
| DUR-1170 |  | Roofing | 87d | 2025-01-14 A | 2025-08-27 A | C-ENV-RF-N-1000 SS, C-ENV-RF-E&S-1010 FF, C-ENV-RF-E&S-1000 FF, C-ENV-RF-E&S-1030 FF, C-ENV-RF-N-1000, C-ENV-RF-N-1060 FF | 100% |  |  |
| DUR-1180 |  | North Side | 128d | 2025-01-28 A | 2025-09-26 A | C-ENV-SID-EW-N-1000 SS, C-ENV-SID-CL-N-1020 FF, C-ENV-SID-GL-N-1040 FF | 100% |  |  |
| DUR-1190 |  | East Side | 128d | 2025-01-28 A | 2025-09-05 A | C-ENV-SID-EW-E-1000 SS, C-ENV-SID-GL-E-1020 FF, C-ENV-SID-CL-E-1020 FF | 100% |  |  |
| DUR-1200 |  | South Side | 128d | 2025-01-28 A | 2026-01-23 | C-ENV-SID-EW-S-1000 SS, C-ENV-SID-GL-S-1020 FF, C-ENV-SID-CL-S-1020 FF, C-ENV-SID-CL-S-1040 FF |  | 28d |  |
|  | 4 | **Interior** |  | 2025-01-23 | 2026-06-19 |  |  |  |  |
| DUR-1260 |  | Zone #5 - Natatorium, Steam And Sauna, Viewing | 102d | 2025-01-23 A | 2026-06-09 | T-INT-MF-Z5-9000 FF, T-INT-MF-Z5-9010 FF |  | 45d |  |
| DUR-1280 |  | Second Floor | 204d | 2025-01-28 A | 2026-03-19 | T-INT-SF-2000 SS, T-INT-SF-2040 FF, T-INT-SF-MR-2110 FF, T-INT-SF-9000 FF |  | 101d |  |

| ID | WBS | Task | Duration | Start | Finish | Predecessors | Complete | Total float |
| --- | --- | --- | --- | --- | --- | --- | --- | --- |
| DUR-1210 |  | Basement | 90d | 2025-06-04 A | 2026-05-25 | T-INT-BA-2080 FF, P-PRO-223 FF, T-INT-MF-BA-9000 FF |  | 56d |
| DUR-1220 |  | Zone #1 - Mechanical Room, Electrical Room, Exit Corridor | 77d | 2025-09-15 A | 2026-04-28 | T-INT-MF-Z1-9000 FF |  | 74d |
| DUR-1230 |  | Zone #2 - Staff Areas | 94d | 2025-09-15 A | 2026-05-01 | T-INT-MF-Z2-9000 FF |  | 71d |
| DUR-1240 |  | Zone #3 - Change Rooms | 96d | 2026-01-19 | 2026-06-04 | T-INT-MF-Z3-1260 FF |  | 48d |
| DUR-1250 |  | Zone #4 - Pool Mechanical, Storage, Chemical, Rooms | 86d | 2026-01-19 | 2026-05-21 | T-INT-MF-Z4-9000 FF |  | 58d |
| DUR-1270 |  | Zone #6 - Lobby And Vestibule | 107d | 2026-01-19 | 2026-06-19 | T-INT-MF-Z6-9000 FF |  | 37d |
| DUR-1290 |  | Elevator | 32d | 2026-02-23 | 2026-04-08 | T-MEIT-EL-1080 FF, T-MEIT-EL-1050 SS |  | 66d |
|  | 5 | **Site Work** |  | 2025-10-08 | 2026-05-05 |  |  |  |
| DUR-1300 |  | Site Concrete And Paving | 34d | 2025-10-08 A | 2026-05-05 | C-SW-1060 SS, C-SW-1120 FF, C-SW-1130 FF, C-SW-1140 SS, C-SW-1160 FF, C-SW-1170 FF, C-SW-1190 FF, C-SW-1200 FF |  | 43d |
| DUR-1310 |  | Landscaping And Site Furniture | 4d | 2025-11-03 A | 2025-11-07 A | C-SW-1070 SS, C-SW-1070 FF, C-SW-1180 SS, C-SW-1180 FF | 100% |  |
|  | 7 | **Commissioning** |  |  |  |  |  |  |
|  | pre | **PRE- CONSTRUCTION** |  | 2024-02-09 | 2026-04-17 |  |  |  |
|  | 1 | **Tendering** |  | 2024-02-09 | 2024-11-22 |  |  |  |
|  | 2 | **TP1B (FOUNDATIONS)** |  | 2024-02-09 | 2024-04-19 |  |  |  |
| P-TEA-4 |  | TP1B IFT Issuance | 1d | 2024-02-09 A | 2024-02-09 A |  | 100% |  |
| P-TEA-5 |  | TP1B IFC Documents | 18d | 2024-02-12 A | 2024-03-07 A | P-TEA-4 | 100% |  |
| P-TEA-6 |  | TP1B Tendering Process and Recommendation | 27d | 2024-02-12 A | 2024-03-20 A | P-TEA-4 | 100% |  |
| P-TEA-7 |  | TP1B Tender Document Review (TCPM/LLB) | 11d | 2024-02-12 A | 2024-02-27 A | P-TEA-4 | 100% |  |
| P-TEA-8 |  | TP1B Recommendation Lac La Biche Review and Approval | 9d | 2024-03-21 A | 2024-04-03 A | P-TEA-6, P-TEA-7 | 100% |  |
| P-TEA-9 |  | TP1B LOI Award to the Subcontractors | 12d | 2024-04-04 A | 2024-04-19 A | P-TEA-8 | 100% |  |
|  | 1 | **TP2 (ROOFING, CLADDING, GLAZING, STRUCTURAL STEEL, STEEL STUD/DRYWALL, MASONRY)** |  | 2024-04-23 | 2024-11-14 |  |  |  |
| P-TEA-11 |  | TP2 IFT Issuance (Incl. Steel IFC's) | 1d | 2024-04-23 A | 2024-04-23 A | P-TEA-9 | 100% |  |
| P-TEA-12 |  | TP2 IFC Documents | 20d | 2024-04-24 A | 2024-06-17 A | P-TEA-11 | 100% |  |
| P-TEA-13 |  | TP2 Tendering Process and Recommendation | 14d | 2024-05-06 A | 2024-06-19 A | P-TEA-11 FS+8d | 100% |  |
| P-TEA-14 |  | LLB Approval and Fixed Price Approval | 10d | 2024-06-19 A | 2024-11-14 A | P-TEA-13, P-TEA-20 FF+5d, P-TEA-31 SS, P-TEA-51 | 100% |  |
| P-TEA-15 |  | TP2 LOI Award to Subcontractors | 5d | 2024-08-07 A | 2024-08-14 A | P-TEA-13 | 100% |  |
|  | 3 | **TP3 (INTERIOR FIT UP, SITE WORKS, M/E IFC'S)** |  | 2024-06-03 | 2024-11-22 |  |  |  |
| P-TEA-17 |  | TP3 (Interior Fit-up and Site Works) IFT Issuance | 36d | 2024-06-03 A | 2024-07-26 A | P-TEA-12 | 100% |  |
| P-TEA-18 |  | TP3 IFC Documents Development | 20d | 2024-07-29 A | 2024-08-26 A | P-TEA-17 | 100% |  |
| P-TEA-19 |  | TP3 Tendering Process | 14d | 2024-07-29 A | 2024-08-21 A | P-TEA-17 | 100% |  |
| P-TEA-20 |  | Value Engineering Exercise | 5d | 2024-08-19 A | 2024-10-17 A | P-TEA-4 | 100% |  |
| P-TEA-21 |  | TP3 (Interior Fit-up and Site Work) LOI Award to Subcontractors | 10d | 2024-08-21 A | 2024-11-22 A | P-TEA-19, P-TEA-20 FF+5d, P-TEA-31 SS, P-TEA-51 | 100% |  |
| P-TEA-31 |  | Fixed Price Resubmission | 1d | 2024-10-21 A | 2024-10-21 A | P-TEA-20 | 100% |  |
| P-TEA-41 |  | Fixed Price Resubmission Review | 5d | 2024-10-21 A | 2024-10-29 A | P-TEA-31 | 100% |  |
| P-TEA-51 |  | Fixed Price Resubmission ED clarification stage | 5d | 2024-10-30 A | 2024-11-08 A | P-TEA-41 | 100% |  |
|  | 2 | **STRUCTURAL STEEL PROCUREMENT** |  |  |  |  |  |  |
|  | 3 | **MECHANICAL, ELECTRICAL, POOL EQUIPMENT PROCUREMENT** |  | 2024-06-19 | 2024-10-15 |  |  |  |
| P-PRO-44 |  | GMP Approval Based on TP3 Package | 8d | 2024-06-19 A | 2024-10-15 A | P-TEA-14 FF, P-TEA-31 SS, P-TEA-51 | 100% |  |
|  | 4 | **SHOP DRAWINGS AND MATERIAL PROCUREMENT** |  | 2024-04-18 | 2026-04-17 |  |  |  |
|  | 4 | **TP1B (Foundations)** |  | 2024-04-22 | 2025-06-23 |  |  |  |
|  | 1 | **Concrete Reinforcing** |  | 2024-04-22 | 2025-06-23 |  |  |  |
| P-SD-57 |  | Area 1A/2 Pile Caps SD | 1d | 2024-04-22 A | 2024-04-22 A | P-TEA-9 | 100% |  |
| P-SD-58 |  | Area 2/3/4/5 North Grade beams SD | 1d | 2024-04-22 A | 2024-04-22 A | P-TEA-9 | 100% |  |
| P-SD-100 |  | Area 7 Lap Pool and Basement Foundations AP | 15d | 2024-04-23 A | 2024-05-13 A | P-SD-58 | 100% |  |
| P-SD-59 |  | Area 7 Lap Pool and Basement Foundations SD | 6d | 2024-04-23 A | 2024-04-30 A | P-SD-58 | 100% |  |
| P-SD-99 |  | Area 1A/2 Pile Caps AP | 15d | 2024-04-23 A | 2024-05-13 A | P-SD-57 | 100% |  |
| P-SD-101 |  | Area 2/3/4/5 North Grade beams AP | 15d | 2024-05-01 A | 2024-05-06 A | P-SD-59 | 100% |  |
| P-SD-60 |  | Area 11/12/13 South Grade beams SD | 4d | 2024-05-01 A | 2024-05-06 A | P-SD-59 | 100% |  |
| P-SD-102 |  | Area 11/12/13 South Grade beams AP | 15d | 2024-05-07 A | 2024-05-21 A | P-SD-60 | 100% |  |
| P-SD-61 |  | Area 5/7 Lap Pool and Basement Walls SD | 5d | 2024-05-07 A | 2024-05-13 A | P-SD-60 | 100% |  |
| P-PRO-140 |  | Area 1A/2 Pile Caps | 5d | 2024-05-14 A | 2024-06-19 A | P-SD-99 | 100% |  |
| P-PRO-141 |  | Area 7 Lap Pool and Basement Foundations | 5d | 2024-05-14 A | 2024-06-19 A | P-SD-100 | 100% |  |
| P-SD-62 |  | Area 3/5 Leisure Pool, Surge Tank, Family Hot Tub Foundations and Walls SD | 5d | 2024-05-14 A | 2024-07-15 A | P-SD-61 | 100% |  |
| P-SD-103 |  | Area 5/7 Lap Pool and Basement Walls AP | 15d | 2024-05-29 A | 2024-06-11 A | P-SD-61 | 100% |  |
| P-PRO-142 |  | Area 2/3/4/5 North Grade beams | 13d | 2024-06-03 A | 2024-06-19 A | P-SD-101 | 100% |  |
| P-PRO-1444 |  | Area 5/7 Lap Pool and Basement Walls | 15d | 2024-06-11 A | 2024-07-03 A | P-SD-103 | 100% |  |
| P-PRO-143 |  | Area 11/12/13 South Grade beams | 5d | 2024-07-02 A | 2024-07-08 A | P-SD-102 | 100% |  |
| P-SD-63 |  | Adult Hot Tub and Outdoor Hot Tub SD | 5d | 2024-07-02 A | 2024-07-24 A | P-TEA-4 | 100% |  |
| P-SD-64 |  | Slabs SD | 15d | 2024-07-09 A | 2024-08-12 A | P-TEA-4 | 100% |  |
| P-SD-104 |  | Area 3/5 Leisure Pool, Surge Tank, Family Hot Tub Foundations and Walls AP | 15d | 2024-07-11 A | 2024-07-22 A | P-SD-62 | 100% |  |
| P-PRO-145 |  | Area 3/5 Leisure Pool, Surge Tank, Family Hot Tub Foundations and Walls | 5d | 2024-07-23 A | 2024-07-31 A | P-SD-104 | 100% |  |
| P-SD-105 |  | Adult Hot Tub and Outdoor Hot Tub AP | 10d | 2024-07-25 A | 2024-08-13 A | P-SD-63 | 100% |  |
| P-SD-106 |  | Slabs AP | 15d | 2024-08-10 A | 2024-08-10 A | P-SD-64 | 100% |  |
| P-PRO-147 |  | Slabs Delivery | 20d | 2024-11-07 A | 2025-05-23 A | P-SD-106 | 100% |  |
| P-PRO-146 |  | Adult Hot Tub and Outdoor Hot Tub Delivery | 5d | 2025-05-30 A | 2025-06-23 A | P-SD-105 | 100% |  |
|  | 2 | **Piling** |  | 2024-04-22 | 2024-05-22 |  |  |  |
| P-SD-51 |  | Piling R0 | 2d | 2024-04-22 A | 2024-04-23 A | P-TEA-9, P-TEA-5 | 100% |  |
| P-SD-93 |  | Piling R0 - Revise and Resubmit | 13d | 2024-04-24 A | 2024-05-10 A | P-SD-51 | 100% |  |
| P-PRO-135 |  | Piling Delivery | 7d | 2024-05-13 A | 2024-05-22 A | P-SD-93, P-SD-94 | 100% |  |
| P-SD-52 |  | Piling R1 | 3d | 2024-05-13 A | 2024-05-15 A | P-SD-93 | 100% |  |

| ID | WBS | Task | Duration | Start | Finish | Predecessors | Complete |
| --- | --- | --- | --- | --- | --- | --- | --- |
| P-SD-94 |  | Piling R1 | 1d | 2024-05-16 A | 2024-05-16 A | P-SD-52 | 100% |
|  | 3 | **Sheet Piling** |  | 2024-04-22 | 2024-05-27 |  |  |
| P-SD-53 |  | Sheet Piling | 5d | 2024-04-22 A | 2024-04-26 A | P-TEA-9 | 100% |
| P-SD-95 |  | Sheet Piling | 10d | 2024-04-29 A | 2024-05-10 A | P-SD-53 | 100% |
| P-PRO-136 |  | Sheet Piling Delivery | 10d | 2024-05-13 A | 2024-05-27 A | P-SD-95 | 100% |
|  | 4 | **Concrete Formwork** |  | 2024-04-22 | 2024-06-12 |  |  |
| P-SD-54 |  | Concrete Formwork | 15d | 2024-04-22 A | 2024-05-10 A | P-TEA-9 | 100% |
| P-SD-96 |  | Concrete Formwork-R0 | 10d | 2024-05-13 A | 2024-05-22 A | P-SD-54 | 100% |
| P-SD-186 |  | Concrete Formwork-R1 | 10d | 2024-05-30 A | 2024-06-12 A | P-SD-96 | 100% |
| P-PRO-137 |  | Concrete Formwork Delivery | 10d | 2024-05-30 A | 2024-06-12 A | P-SD-96, P-SD-186 | 100% |
|  | 5 | **Concrete Mix Design** |  | 2024-04-22 | 2024-09-03 |  |  |
| P-SD-55 |  | Concrete Mix Design SD | 5d | 2024-04-22 A | 2024-04-26 A | P-TEA-9 | 100% |
| P-SD-97 |  | Concrete Mix Design AP | 10d | 2024-04-29 A | 2024-05-10 A | P-SD-55 | 100% |
| P-PRO-138 |  | Concrete Mix Design Delivery | 1d | 2024-09-03 A | 2024-09-03 A | P-SD-97 | 100% |
|  | 6 | **Weeping Tile** |  | 2024-04-22 | 2024-07-10 |  |  |
| P-SD-65 |  | Weeping Tile | 15d | 2024-04-22 A | 2024-05-10 A | P-TEA-9 | 100% |
| P-SD-107 |  | Weeping Tile | 10d | 2024-05-13 A | 2024-05-24 A | P-SD-65 | 100% |
| P-PRO-148 |  | Weeping Tile Delivery | 10d | 2024-06-17 A | 2024-07-10 A | P-SD-107 | 100% |
|  | 7 | **Waterproofing** |  | 2024-04-22 | 2024-09-03 |  |  |
| P-SD-66 |  | Waterproofing | 15d | 2024-04-22 A | 2024-05-10 A | P-TEA-9 | 100% |
| P-SD-108 |  | Waterproofing | 10d | 2024-05-29 A | 2024-07-25 A | P-SD-66 | 100% |
| P-PRO-149 |  | Waterproofing Delivery | 11d | 2024-07-26 A | 2024-09-03 A | P-SD-108 | 100% |
|  | 8 | **Underground Mechanical and Weeping Tile Sump** |  | 2024-05-13 | 2024-11-05 |  |  |
| P-SD-67 |  | Underground Mechanical and Weeping Tile Sump R0 | 15d | 2024-05-13 A | 2024-06-24 A | P-TEA-9 FS+15d | 100% |
| P-SD-109 |  | Underground Mechanical and Weeping Tile Sump R0 | 15d | 2024-06-24 A | 2024-06-25 A | P-SD-67 | 100% |
| P-SD-327 |  | Underground Mechanical and Weeping Tile Sump R1 | 5d | 2024-06-25 A | 2024-09-13 A | P-SD-109 | 100% |
| P-SD-119 |  | Underground Mechanical and Weeping Tile Sump R1 | 1d | 2024-09-12 A | 2024-09-12 A | P-SD-327 | 100% |
| P-PRO-150 |  | Underground Mechanical and Weeping Tile Sump Delivery | 15d | 2024-09-16 A | 2024-11-05 A | P-SD-109, P-SD-119 | 100% |
|  | 9 | **Weeping Tile - Beding Gravel and Filter Fabric Samples** |  | 2024-05-16 | 2024-07-10 |  |  |
| P-SD-77 |  | Weeping Tile - Bedding Gravel and filter fabric samples | 5d | 2024-05-16 A | 2024-06-07 A | P-TEA-9 | 100% |
| P-SD-287 |  | Weeping Tile - Bedding Gravel and filter fabric samples | 5d | 2024-06-07 A | 2024-06-17 A | P-SD-77 | 100% |
| P-PRO-144 |  | Weeping Tile - Bedding Gravel and filter fabric samples Delivery | 10d | 2024-06-26 A | 2024-07-10 A | P-SD-77, P-SD-287 | 100% |
|  | 6 | **TP2 (Core and Shell)** |  | 2024-04-18 | 2026-02-20 |  |  |
|  | 1 | **Structural Steel** |  | 2024-04-24 | 2024-11-12 |  |  |
| P-PRO-23 |  | TP2 IFT Document Issuance | 0d | 2024-04-24 A | 2024-04-24 A | P-TEA-11 | 100% |
| P-PRO-24 |  | Steel Inventory List | 6d | 2024-04-24 A | 2024-05-01 A | P-PRO-23 | 100% |
| P-PRO-26 |  | Shop Drawing Development and Issuance | 40d | 2024-04-24 A | 2024-08-08 A | P-PRO-23 | 100% |
| P-PRO-25 |  | Bulk Order and Procurement | 60d | 2024-05-02 A | 2024-07-26 A | P-PRO-24 | 100% |
| P-PRO-27 |  | Shop Drawing Review and Approval | 13d | 2024-08-08 A | 2024-08-21 A | P-PRO-26 | 100% |
| P-PRO-28 |  | Steel Fabrication | 20d | 2024-08-22 A | 2024-11-12 A | P-PRO-27, P-PRO-25 | 100% |
| P-PRO-29 |  | Coating | 10d | 2024-09-30 A | 2024-11-12 A | P-PRO-28 SS+5d | 100% |
| P-PRO-1454 |  | Steel Delivery - Phase-2 | 0d | 2024-11-12 A | 2024-11-12 A | P-PRO-25 FF | 100% |
| P-PRO-1464 |  | Steel Delivery - Phase-3 | 0d | 2024-11-12 A | 2024-11-12 A | P-PRO-29 FF | 100% |
| P-PRO-30 |  | Steel Delivery - Phase-1 | 0d | 2024-11-12 A | 2024-11-12 A | P-PRO-25 FF | 100% |
|  | 11 | **Cladding** |  | 2024-08-16 | 2025-07-16 |  |  |
| P-SD-71 |  | Cladding SD | 15d | 2024-08-16 A | 2024-10-24 A | P-TEA-15 FS+1d | 100% |
| P-SD-113 |  | Cladding Review R0 | 15d | 2024-10-25 A | 2024-11-08 A | P-SD-71 | 100% |
| P-SD-133 |  | Cladding SD R1 | 5d | 2024-11-09 A | 2025-01-17 A | P-SD-113 | 100% |
| P-SD-143 |  | Cladding AP R1 | 5d | 2025-01-17 A | 2025-01-28 A | P-SD-133 | 100% |
| P-PRO-154 |  | Cladding Delivery | 116d | 2025-01-29 A | 2025-07-16 A | P-SD-113, P-SD-143 | 100% |
|  | 2 | **IMP** |  | 2024-08-16 | 2025-08-04 |  |  |
| P-SD-72 |  | IMP SD | 10d | 2024-08-16 A | 2024-10-10 A | P-TEA-15 FS+1d | 100% |
| P-SD-114 |  | IMP AP | 15d | 2024-10-10 A | 2024-10-24 A | P-SD-72 | 100% |
| P-SD-134 |  | Sample Submission | 5d | 2024-10-23 A | 2024-10-29 A |  | 100% |
| P-SD-144 |  | Sample Review | 5d | 2024-10-29 A | 2024-11-06 A | P-SD-134 | 100% |
| P-SD-154 |  | Sample Submission R-1 | 5d | 2024-11-07 A | 2024-12-13 A | P-SD-144 | 100% |
| P-SD-164 |  | Sample Review and Approval | 1d | 2024-12-13 A | 2024-12-13 A | P-SD-154 | 100% |
| P-PRO-155 |  | IMP Delivery | 105d | 2024-12-16 A | 2025-08-04 A | P-SD-114, P-SD-164 | 100% |
|  | 5 | **Curatin Wall & Glazing** |  | 2024-08-16 | 2025-05-05 |  |  |
| P-SD-73 |  | Curtain wall & Glazing SD R-0 | 15d | 2024-08-16 A | 2024-11-06 A | P-TEA-15 FS+1d | 100% |
| P-SD-153 |  | Curtain wall & Glazing AP R-0 | 5d | 2024-11-06 A | 2024-11-14 A | P-SD-73 | 100% |
| P-SD-163 |  | Curtain wall & Glazing SD R-1 | 5d | 2024-11-15 A | 2024-11-15 A | P-SD-153 | 100% |
| P-SD-115 |  | Glazing AP R-1 | 15d | 2024-11-15 A | 2024-11-15 A | P-SD-73, P-SD-163 | 100% |
| P-SD-1674 |  | Curtain wall & Glazing SD R-2 | 5d | 2024-11-15 A | 2024-12-23 A | P-SD-115 | 100% |
| P-SD-1684 |  | Glazing AP R-2 | 5d | 2024-12-23 A | 2025-01-10 A | P-SD-1674, P-SD-1674 FF | 100% |
| P-PRO-176 |  | Aluminum Bulk Order | 20d | 2025-01-13 A | 2025-02-07 A | P-SD-115, P-SD-1684 | 100% |
| P-PRO-186 |  | Fabrication Glazing - North Elevation | 15d | 2025-02-10 A | 2025-03-03 A | P-PRO-176 | 100% |
| P-PRO-196 |  | Aluminum Frame Fabrication | 15d | 2025-02-10 A | 2025-03-03 A | P-PRO-176, P-PRO-176 FF | 100% |
| P-PRO-1474 |  | Fabrication Glazing - East Elevation | 15d | 2025-02-25 A | 2025-03-17 A |  | 100% |
| P-PRO-1484 |  | Glazing Delivery - East Elevation | 25d | 2025-02-25 A | 2025-05-05 A | P-PRO-1474 | 100% |

| ID | WBS | Task | Duration | Start | Finish | Predecessors | Complete | Total float |
| --- | --- | --- | --- | --- | --- | --- | --- | --- |
| P-PRO-156 |  | Glazing Delivery - North Elevation | 25d | 2025-03-04 A | 2025-05-05 A | P-SD-115, P-PRO-186, P-SD-1684 | 100% |  |
| P-PRO-1494 |  | Fabrication Glazing - South Elevation | 15d | 2025-03-10 A | 2025-03-28 A |  | 100% |  |
| P-PRO-1504 |  | Glazing Delivery - South Elevation | 25d | 2025-03-31 A | 2025-05-05 A | P-PRO-1494 | 100% |  |
|  | 8 | **Anchor Bolts** |  | 2024-04-18 | 2024-06-14 |  |  |  |
| P-PRO-32 |  | Authorization to proceed | 1d | 2024-04-18 A | 2024-04-18 A | P-TEA-9 | 100% |  |
| P-PRO-33 |  | IFA Shopdrawings | 20d | 2024-04-19 A | 2024-05-16 A | P-PRO-32 | 100% |  |
| P-PRO-34 |  | ED/DLG Shopdrawings Review | 10d | 2024-05-16 A | 2024-05-30 A | P-PRO-33 | 100% |  |
| P-PRO-35 |  | IFS | 3d | 2024-05-30 A | 2024-06-03 A | P-PRO-34 | 100% |  |
| P-PRO-36 |  | Fabrication | 10d | 2024-06-04 A | 2024-06-14 A | P-PRO-35 | 100% |  |
| P-PRO-37 |  | Anchor Bolts Onsite | 3d | 2024-06-14 A | 2024-06-14 A | P-PRO-36 | 100% |  |
|  | 12 | **Exterior Steel Stud and Drywall** |  | 2024-08-16 | 2025-01-13 |  |  |  |
| P-SD-74 |  | Exterior Steel Stud and Drywall SD | 10d | 2024-08-16 A | 2024-10-01 A | P-TEA-15 FS+1d | 100% |  |
| P-SD-116 |  | Exterior Steel Stud and Drywall AP | 15d | 2024-10-04 A | 2024-10-25 A | P-SD-74 | 100% |  |
| P-PRO-157 |  | Exterior Steel Stud and Drywall Delivery | 5d | 2024-12-04 A | 2025-01-13 A | P-SD-116 | 100% |  |
|  | 3 | **Masonry** |  | 2024-08-16 | 2025-05-05 |  |  |  |
| P-SD-75 |  | Masonry SD | 10d | 2024-08-16 A | 2025-03-10 A | P-TEA-15 FS+1d, P-TEA-21 SS | 100% |  |
| P-SD-117 |  | Masonry AP | 15d | 2025-03-11 A | 2025-04-15 A | P-SD-75 | 100% |  |
| P-PRO-158 |  | Masonry Delivery | 15d | 2025-04-16 A | 2025-05-05 A | P-SD-117 | 100% |  |
|  | 6 | **Elevator** |  | 2024-08-16 | 2026-02-20 |  |  |  |
| P-SD-76 |  | Elevator R-0 SD | 20d | 2024-08-16 A | 2024-09-03 A | P-TEA-15 FS+1d | 100% |  |
| P-SD-118 |  | Elevator - R0 AP | 15d | 2024-09-04 A | 2024-09-18 A | P-SD-76 | 100% |  |
| P-SD-136 |  | Elevator SD - R1 | 5d | 2024-09-19 A | 2024-10-04 A | P-SD-118 | 100% |  |
| P-SD-146 |  | Elevator AP - R1 | 10d | 2024-10-04 A | 2024-10-18 A | P-SD-136 | 100% |  |
| P-SD-1654 |  | Elevator SD - R2 | 13d | 2024-11-13 A | 2024-11-22 A | P-SD-146 | 100% |  |
| P-SD-1664 |  | Elevator AP - R2 | 10d | 2024-11-25 A | 2024-12-02 A | P-SD-1654, P-SD-1654 FF | 100% |  |
| P-PRO-159 |  | Elevator Delivery | 90d | 2025-09-12 A | 2026-02-20 | P-SD-118, P-SD-146, P-SD-1664, X-PRO-1000 |  | 66d |
|  | 9 | **Glazing** |  |  |  |  |  |  |
|  | 10 | **Fireproofing** |  | 2024-09-19 | 2025-09-08 |  |  |  |
| P-SD-135 |  | Fireproofing SD | 5d | 2024-09-19 A | 2024-09-20 A | P-TEA-4 | 100% |  |
| P-SD-337 |  | Fireproofing AP R-0 | 15d | 2024-09-21 A | 2024-10-11 A | P-SD-135 | 100% |  |
| P-SD-517 |  | Fireproofing SD R-1 | 5d | 2024-10-03 A | 2024-10-21 A | P-SD-337 | 100% |  |
| P-SD-527 |  | Fireproofing AP R-1 | 5d | 2024-10-22 A | 2024-10-28 A | P-SD-517 | 100% |  |
| P-PRO-100 |  | Fireproofing Delivery | 40d | 2024-10-29 A | 2025-09-08 A | P-SD-337, P-SD-527 | 100% |  |
|  | 13 | **OWSJ** |  | 2024-04-24 | 2024-11-12 |  |  |  |
| P-PRO-38 |  | TP2 IFC Document Issuance | 0d | 2024-04-24 A | 2024-04-24 A | P-TEA-11 | 100% |  |
| P-PRO-40 |  | OWSJ Shop Drawing Issuance R0 | 25d | 2024-04-24 A | 2024-07-10 A | P-PRO-38 | 100% |  |
| P-PRO-41 |  | Shop Drawing review and Approval - OWSJ R0 | 10d | 2024-07-11 A | 2024-07-17 A | P-PRO-40, P-PRO-40 FF | 100% |  |
| P-PRO-91 |  | OWSJ Shop Drawing Issuance R1 | 5d | 2024-07-18 A | 2024-08-16 A | P-PRO-41 | 100% |  |
| P-PRO-50 |  | Shop Drawing review and Approval -OWSJ R1 | 5d | 2024-08-16 A | 2024-08-16 A | P-PRO-40, P-PRO-91 | 100% |  |
| P-PRO-1514 |  | OWSJ Fabrication and Delivery PH-2 | 24d | 2024-08-17 A | 2024-11-12 A | P-PRO-42 FF | 100% |  |
| P-PRO-1524 |  | OWSJ Fabrication and Delivery PH-3 | 24d | 2024-08-17 A | 2024-11-12 A | P-PRO-1514 FF | 100% |  |
| P-PRO-42 |  | OWSJ Fabrication and Delivery PH-1 | 24d | 2024-08-17 A | 2024-11-12 A | P-PRO-41, P-PRO-50 | 100% |  |
|  | 7 | **Painting** |  | 2024-12-16 | 2025-02-19 |  |  |  |
| P-SD-86 |  | Painting SD | 10d | 2024-12-16 A | 2025-01-09 A | P-TEA-21 | 100% |  |
| P-SD-128 |  | Painting AP | 15d | 2025-01-13 A | 2025-01-21 A | P-SD-86 | 100% |  |
| P-PRO-169 |  | Painting Delivery | 20d | 2025-01-22 A | 2025-02-19 A | P-SD-128 | 100% |  |
|  | 4 | **Roofing** |  | 2024-08-14 | 2025-02-03 |  |  |  |
| P-SD-70 |  | Roofing SD | 10d | 2024-08-14 A | 2024-10-25 A | P-TEA-15 FS+1d | 100% |  |
| P-SD-112 |  | Roofing AP R-0 | 15d | 2024-10-28 A | 2024-11-14 A | P-SD-70 | 100% |  |
| P-SD-142 |  | Roofing SD R-1 | 5d | 2024-11-14 A | 2024-11-20 A | P-SD-112 | 100% |  |
| P-SD-152 |  | Roofing AP R-1 | 5d | 2024-11-21 A | 2024-12-02 A | P-SD-112, P-SD-142 | 100% |  |
| P-PRO-153 |  | Roofing Delivery | 60d | 2024-12-03 A | 2025-02-03 A | P-SD-112, P-SD-142, P-SD-152 | 100% |  |
|  | 5 | **TP3 (Interior, Site Works, Mechanical and Electrical)** |  | 2024-07-16 | 2026-04-17 |  |  |  |
|  | 9 | **Waterslide** |  | 2024-08-16 | 2026-01-21 |  |  |  |
| P-SD-69 |  | Waterslide Preliminary Design SB | 10d | 2024-08-16 A | 2024-10-23 A | P-TEA-15 FS+1d | 100% |  |
| P-SD-111 |  | Waterslide Preliminary Design AP | 10d | 2024-10-24 A | 2024-11-06 A | P-SD-69 | 100% |  |
| P-SD-139 |  | Waterslide IFA SD | 20d | 2025-02-14 A | 2025-03-11 A | P-SD-111 | 100% |  |
| P-SD-141 |  | Waterslide AP | 15d | 2025-03-12 A | 2025-04-24 A | P-SD-139 | 100% |  |
| P-SD-151 |  | Waterslide IFC SDs | 20d | 2025-04-25 A | 2025-05-23 A | P-SD-141 | 100% |  |
| P-SD-1714 |  | Waterslide IFC AP | 15d | 2025-05-26 A | 2025-06-19 A | P-SD-151 | 100% |  |
| P-PRO-152 |  | Waterslide Delivery | 120d | 2025-09-12 A | 2026-01-21 | P-SD-111, P-SD-141, P-SD-1714 |  | 104d |
|  | 13 | **Door Frames** |  | 2024-08-20 | 2025-05-14 |  |  |  |
| P-SD-83 |  | Door, Frames and Hardware SD | 20d | 2024-08-20 A | 2024-09-10 A | P-TEA-21 SS | 100% |  |
| P-SD-125 |  | Door, Frames and Hardware AP | 15d | 2024-09-11 A | 2024-12-09 A | P-SD-83 | 100% |  |
| P-SD-145 |  | Door Frames SD R-1 | 5d | 2024-12-10 A | 2025-01-31 A | P-SD-125 | 100% |  |
| P-SD-155 |  | Door Frames AP R-1 | 5d | 2025-02-03 A | 2025-03-20 A | P-SD-145 | 100% |  |
| P-PRO-166 |  | Door Frames Delivery | 60d | 2025-03-20 A | 2025-05-14 A | P-SD-125, P-SD-155 SS | 100% |  |
|  | 14 | **Pool** |  | 2024-07-16 | 2025-12-10 |  |  |  |
| P-SD-800 |  | Pool Piping & Main Drain SD | 5d | 2024-07-16 A | 2024-07-16 A |  | 100% |  |
| P-SD-810 |  | Pool Piping & Main Drain AP | 5d | 2024-07-16 A | 2024-07-30 A | P-SD-800 | 100% |  |

| ID | WBS | Task | Duration | Start | Finish | Predecessors | Complete | Total float |
| --- | --- | --- | --- | --- | --- | --- | --- | --- |
| P-PRO-820 |  | Pool Piping & Main Drain Delivery | 5d | 2024-07-30 A | 2025-02-03 A | P-SD-810 | 100% |  |
| P-PRO-393 |  | Motorized Valves | 60d | 2025-01-14 A | 2025-03-11 A |  | 100% |  |
| P-PRO-363 |  | Filters | 60d | 2025-03-03 A | 2025-04-28 A |  | 100% |  |
| P-PRO-303 |  | Storage | 60d | 2025-03-11 A | 2025-04-07 A |  | 100% |  |
| P-PRO-353 |  | Flow Meters - Main Floor | 60d | 2025-03-14 A | 2025-09-05 A |  | 100% |  |
| P-PRO-323 |  | VFD's | 60d | 2025-03-28 A | 2025-08-29 A |  | 100% |  |
| P-PRO-293 |  | pH Feeders | 60d | 2025-04-11 A | 2025-09-04 A |  | 100% |  |
| P-PRO-333 |  | Pumps and Boosters | 60d | 2025-04-11 A | 2025-09-03 A |  | 100% |  |
| P-PRO-413 |  | Chemical Controllers - Main Floor SD | 5d | 2025-04-18 A | 2025-05-15 A |  | 100% |  |
| P-PRO-343 |  | Strainers | 60d | 2025-04-25 A | 2025-09-06 A |  | 100% |  |
| P-SD-132 |  | Pool Fixtures AP | 15d | 2025-04-25 A | 2025-05-20 A | P-SD-90 | 100% |  |
| P-SD-90 |  | Pool Fixtures SD | 10d | 2025-04-25 A | 2025-04-25 A | P-TEA-21 | 100% |  |
| P-SD-373 |  | Autofill AP | 5d | 2025-05-05 A | 2025-05-05 A |  | 100% |  |
| P-PRO-313 |  | Autofill | 40d | 2025-05-06 A | 2025-12-10 A | P-SD-373 | 100% |  |
| P-PRO-423 |  | Chemical Controllers - Main Floor AP | 0d | 2025-05-16 A | 2025-06-04 A | P-PRO-413 | 100% |  |
| P-PRO-403 |  | Chemical Controllers - Main Floor | 30d | 2025-06-04 A | 2025-08-29 A | P-PRO-413, P-PRO-423 | 100% |  |
| P-PRO-383 |  | Ultra Violet Disinfection | 42d | 2025-07-09 A | 2025-10-27 A |  | 100% |  |
| P-PRO-173 |  | Pool Fixtures Delivery | 40d | 2025-09-12 A | 2025-11-07 A | P-SD-132 | 100% |  |
|  | 5 | **Misc Metals** |  | 2024-11-11 | 2025-02-17 |  |  |  |
| P-SD-81 |  | RTU Frames, Roof Ladder (Misc Metals) SD | 15d | 2024-11-11 A | 2025-01-10 A | P-TEA-21 | 100% |  |
| P-SD-123 |  | RTU Frames, Roof Ladder (Misc Metals) AP | 15d | 2025-01-13 A | 2025-02-17 A | P-SD-81 | 100% |  |
| P-SD-173 |  | RTU Frames, Roof Ladder (Misc Metals) SD R1 | 24d | 2025-01-13 A | 2025-02-13 A |  | 100% |  |
|  | 10 | **Millwork** |  | 2025-01-30 | 2026-03-16 |  |  |  |
| P-SD-82 |  | Millwork SD | 30d | 2025-01-30 A | 2025-03-13 A | P-TEA-21 | 100% |  |
| P-SD-124 |  | Millwork AP | 15d | 2025-03-21 A | 2025-04-04 A | P-SD-82 | 100% |  |
| P-PRO-165 |  | Millwork Delivery | 60d | 2025-04-04 A | 2026-03-16 | P-SD-124 |  | 18d |
|  | 8 | **Interior Steel Stud and Drywall** |  | 2024-09-13 | 2025-03-07 |  |  |  |
| P-SD-84 |  | Interior Steel Stud and Drywall SD | 10d | 2024-09-13 A | 2024-09-26 A | P-TEA-21 SS | 100% |  |
| P-SD-126 |  | Interior Steel Stud and Drywall AP | 15d | 2024-09-27 A | 2024-10-11 A | P-SD-84 | 100% |  |
| P-PRO-167 |  | Interior Steel Stud and Drywall Delivery | 20d | 2024-10-11 A | 2025-03-07 A | P-SD-126 | 100% |  |
|  | 6 | **Flooring** |  | 2024-11-21 | 2025-09-30 |  |  |  |
| P-SD-85 |  | Flooring SD | 10d | 2024-11-21 A | 2024-11-22 A | P-TEA-21 | 100% |  |
| P-SD-127 |  | Flooring AP | 15d | 2024-11-25 A | 2024-12-18 A | P-SD-85 | 100% |  |
| P-PRO-168 |  | Resilient Flooring Delivery | 60d | 2024-12-19 A | 2025-09-30 A | P-SD-127 | 100% |  |
|  | 7 | **Furnishings** |  | 2025-01-28 | 2026-01-30 |  |  |  |
| P-SD-88 |  | Bleacher Seating SD | 10d | 2025-01-28 A | 2025-02-03 A | P-TEA-21 | 100% |  |
| P-SD-130 |  | Bleacher Seating AP | 15d | 2025-02-07 A | 2025-02-14 A | P-SD-88 | 100% |  |
| P-PRO-171 |  | Bleacher Seating Delivery | 41d | 2025-02-17 A | 2026-01-30 | P-SD-130 |  | 113d |
|  | 12 | **Landscape and Site Improvements** |  | 2025-02-18 | 2025-10-27 |  |  |  |
| P-SD-89 |  | Landscape and Site Improvements SD | 10d | 2025-02-18 A | 2025-06-26 A | P-TEA-21 | 100% |  |
| P-SD-131 |  | Landscape and Site Improvements AP | 15d | 2025-07-07 A | 2025-08-15 A | P-SD-89 | 100% |  |
| P-PRO-172 |  | Landscape and Site Improvements Delivery | 20d | 2025-08-18 A | 2025-10-27 A | P-SD-131 | 100% |  |
|  | 1 | **Mechanical** |  | 2024-11-22 | 2026-02-20 |  |  |  |
|  | 19 | **Floor Drain** |  | 2024-12-03 | 2025-08-14 |  |  |  |
| P-SD-1694 |  | Floor Drain SD | 15d | 2024-12-03 A | 2025-01-17 A |  | 100% |  |
| P-SD-1704 |  | Floor Drain AP | 15d | 2025-02-06 A | 2025-03-06 A | P-SD-1694 | 100% |  |
| P-PRO-1534 |  | Floor Drain Delivery | 160d | 2025-03-07 A | 2025-08-14 A | P-SD-1704 | 100% |  |
|  | 10 | **Pumps** |  | 2024-11-22 | 2025-11-28 |  |  |  |
| P-SD-170 |  | Pumps SD | 10d | 2024-11-22 A | 2025-02-05 A | P-PRO-44, P-TEA-21 | 100% |  |
| P-SD-387 |  | Pumps AP | 15d | 2025-02-06 A | 2025-03-07 A | P-SD-170 | 100% |  |
| P-SD-300 |  | Pumps SD R1 | 5d | 2025-03-10 A | 2025-04-29 A | P-SD-387 | 100% |  |
| P-SD-537 |  | Pumps AP R1 | 5d | 2025-04-30 A | 2025-05-13 A | P-SD-300 | 100% |  |
| P-PRO-557 |  | Pumps Delivery | 60d | 2025-06-26 A | 2025-11-28 A | P-SD-387, P-SD-537 | 100% |  |
|  | 3 | **Heat Exchanger** |  | 2024-11-22 | 2026-01-15 |  |  |  |
| P-SD-150 |  | Heat Exchanger SD | 10d | 2024-11-22 A | 2025-02-06 A | P-PRO-44, P-TEA-21 | 100% |  |
| P-SD-367 |  | Heat Exchanger AP | 15d | 2025-02-07 A | 2025-03-07 A | P-SD-150 | 100% |  |
| P-SD-1864 |  | Heat Exchanger SD R1 | 10d | 2025-03-10 A | 2025-04-29 A | P-SD-367 | 100% |  |
| P-SD-1874 |  | Heat Exchanger AP R1 | 15d | 2025-04-30 A | 2025-05-07 A | P-SD-1864 | 100% |  |
| P-PRO-537 |  | Heat Exchanger Delivery | 110d | 2025-05-20 A | 2026-01-15 A | P-SD-1874 | 100% |  |
|  | 5 | **FCU** |  | 2024-11-22 | 2025-05-26 |  |  |  |
| P-SD-160 |  | FCU SD | 10d | 2024-11-22 A | 2024-12-03 A | P-PRO-44, P-TEA-21 | 100% |  |
| P-SD-377 |  | FCU AP | 15d | 2024-12-04 A | 2025-01-29 A | P-SD-160 | 100% |  |
| P-PRO-547 |  | FCU Delivery | 40d | 2025-01-30 A | 2025-05-26 A | P-SD-377 | 100% |  |
|  | 9 | **HRV's** |  | 2024-12-03 | 2025-10-15 |  |  |  |
| P-SD-110 |  | HRV'S SD | 15d | 2024-12-03 A | 2025-01-07 A | P-PRO-44, P-TEA-21, X-HRV-1010 | 100% |  |
| P-SD-347 |  | HRV'S AP | 15d | 2025-01-15 A | 2025-03-21 A | P-SD-110 | 100% |  |
| P-PRO-517 |  | HRV'S Delivery | 120d | 2025-02-24 A | 2025-10-15 A | P-SD-347 | 100% |  |
|  | 1 | **AHU** |  | 2024-11-23 | 2025-11-06 |  |  |  |
| P-SD-140 |  | AHU SD | 15d | 2024-11-23 A | 2025-01-07 A | P-PRO-44, P-TEA-21 | 100% |  |
| P-SD-357 |  | AHU AP | 15d | 2025-01-08 A | 2025-02-06 A | P-SD-140 | 100% |  |

| ID | WBS | Task | Duration | Start | Finish | Predecessors | Complete | Total float |
| --- | --- | --- | --- | --- | --- | --- | --- | --- |
| P-PRO-527 |  | AHU Delivery | 110d | 2025-02-07 A | 2025-11-06 A | P-SD-357 | 100% |  |
|  | 11 | **Water Heater** |  | 2024-11-22 | 2025-03-21 |  |  |  |
| P-SD-200 |  | Water Heater SD | 25d | 2024-11-22 A | 2025-02-04 A | P-PRO-44, P-TEA-21 | 100% |  |
| P-SD-417 |  | Water Heater AP | 15d | 2025-02-05 A | 2025-03-07 A | P-SD-200 | 100% |  |
| P-PRO-587 |  | Water Heater Delivery | 80d | 2025-03-10 A | 2025-03-21 A | P-SD-417 | 100% |  |
|  | 6 | **Unit Heater** |  | 2024-11-22 | 2025-10-15 |  |  |  |
| P-SD-190 |  | Unit Heater SD | 10d | 2024-11-22 A | 2024-12-03 A | P-PRO-44, P-TEA-21 | 100% |  |
| P-SD-407 |  | Unit Heater AP | 15d | 2025-02-03 A | 2025-02-24 A | P-SD-190 | 100% |  |
| P-PRO-577 |  | Unit Heater Delivery | 100d | 2025-02-25 A | 2025-10-15 A | P-SD-407 | 100% |  |
|  | 8 | **Boilers** |  | 2024-11-22 | 2025-09-08 |  |  |  |
| P-SD-180 |  | Boilers SD | 15d | 2024-11-22 A | 2025-02-03 A | P-PRO-44, P-TEA-21 | 100% |  |
| P-SD-397 |  | Boilers AP | 15d | 2025-02-04 A | 2025-03-06 A | P-SD-180 | 100% |  |
| P-SD-1724 |  | Boilers SD R1 | 15d | 2025-03-07 A | 2025-04-08 A |  | 100% |  |
| P-SD-1734 |  | Boilers AP R1 | 15d | 2025-04-09 A | 2025-04-30 A | P-SD-1724 | 100% |  |
| P-SD-1744 |  | Boilers SD R2 | 15d | 2025-05-01 A | 2025-05-16 A | P-SD-1734 | 100% |  |
| P-SD-1754 |  | Boilers AP R2 | 15d | 2025-05-16 A | 2025-07-10 A | P-SD-1744 | 100% |  |
| P-PRO-567 |  | Boilers Delivery | 50d | 2025-07-11 A | 2025-09-08 A | P-SD-397, P-SD-1754 | 100% |  |
|  | 12 | **Exhaust Fans** |  | 2024-11-23 | 2026-01-30 |  |  |  |
| P-SD-220 |  | Exhaust Fans SD | 25d | 2024-11-23 A | 2025-02-03 A | P-PRO-44, P-TEA-21 | 100% |  |
| P-SD-437 |  | Exhaust Fans AP | 15d | 2025-02-04 A | 2025-03-07 A | P-SD-220 | 100% |  |
| P-SD-1764 |  | Exhaust Fans SD R1 | 25d | 2025-03-10 A | 2025-03-28 A | P-SD-437 | 100% |  |
| P-SD-1774 |  | Exhaust Fans AP R1 | 15d | 2025-03-31 A | 2025-04-17 A | P-SD-1764 | 100% |  |
| P-PRO-607 |  | Exhaust Fans Delivery | 100d | 2025-04-18 A | 2026-01-30 | P-SD-437, P-SD-1774 |  | 64d |
|  | 7 | **Air Conditioning** |  | 2024-11-22 | 2025-10-15 |  |  |  |
| P-SD-210 |  | Air Conditioning SD | 25d | 2024-11-22 A | 2025-02-13 A | P-PRO-44, P-TEA-21 | 100% |  |
| P-SD-427 |  | Air Conditioning AP | 15d | 2025-02-14 A | 2025-03-12 A | P-SD-210 | 100% |  |
| P-PRO-597 |  | Air Conditioning Delivery | 60d | 2025-03-13 A | 2025-10-15 A | P-SD-427 | 100% |  |
|  | 2 | **Radiator** |  | 2024-11-23 | 2026-01-19 |  |  |  |
| P-SD-230 |  | Radiator SD | 30d | 2024-11-23 A | 2024-12-03 A | P-PRO-44, P-TEA-21 | 100% |  |
| P-SD-447 |  | Radiator AP | 34d | 2024-12-03 A | 2025-01-29 A | P-SD-230 | 100% |  |
| P-PRO-617 |  | Radiator Delivery | 100d | 2025-01-30 A | 2026-01-19 | P-SD-447 |  | 19d |
|  | 4 | **Fixtures** |  | 2024-11-23 | 2026-01-30 |  |  |  |
| P-SD-240 |  | Fixtures SD | 30d | 2024-11-23 A | 2025-02-05 A | P-PRO-44, P-TEA-21 | 100% |  |
| P-SD-457 |  | Fixtures AP | 15d | 2025-02-06 A | 2025-03-20 A | P-SD-240 | 100% |  |
| P-SD-1784 |  | Fixtures SD R1 | 30d | 2025-03-21 A | 2025-05-15 A | P-SD-457 | 100% |  |
| P-SD-1794 |  | Fixtures AP R1 | 15d | 2025-05-15 A | 2025-05-26 A | P-SD-1784 | 100% |  |
| P-PRO-627 |  | Fixtures Delivery | 50d | 2025-05-27 A | 2026-01-30 | P-SD-1794 |  | 69d |
|  | 16 | **Slab Heating** |  | 2024-12-04 | 2025-09-09 |  |  |  |
| P-SD-250 |  | Slab Heating SD | 30d | 2024-12-04 A | 2025-05-08 A | P-PRO-44, P-TEA-21 | 100% |  |
| P-SD-467 |  | Slab Heating AP | 15d | 2025-05-09 A | 2025-07-04 A | P-SD-250 | 100% |  |
| P-PRO-637 |  | Slab Heating Delivery | 20d | 2025-07-07 A | 2025-09-09 A | P-SD-467 FF | 100% |  |
|  | 15 | **Terminal Boxes** |  | 2024-11-23 | 2025-09-19 |  |  |  |
| P-SD-260 |  | Terminal Boxes SD | 30d | 2024-11-23 A | 2025-05-15 A | P-PRO-44, P-TEA-21 | 100% |  |
| P-SD-477 |  | Terminal Boxes AP | 15d | 2025-05-15 A | 2025-05-30 A | P-SD-260 | 100% |  |
| P-PRO-647 |  | Terminal Boxes Delivery | 40d | 2025-06-26 A | 2025-09-19 A | P-SD-477 | 100% |  |
|  | 14 | **Grills / Diffusers** |  | 2024-11-23 | 2026-01-15 |  |  |  |
| P-SD-270 |  | Grills / Diffusers SD | 30d | 2024-11-23 A | 2025-05-12 A | P-PRO-44, P-TEA-21 | 100% |  |
| P-SD-487 |  | Grills / Diffusers AP- R0 | 15d | 2025-05-12 A | 2025-05-28 A | P-SD-270 | 100% |  |
| P-SD-547 |  | Grills / Diffusers SD- R1 | 5d | 2025-05-29 A | 2025-09-18 A | P-SD-487 | 100% |  |
| P-SD-1904 |  | Grills / Diffusers AP- R1 | 10d | 2025-09-19 A | 2025-09-24 A | P-SD-547 | 100% |  |
| P-PRO-657 |  | Grills / Diffusers Delivery | 80d | 2025-09-25 A | 2026-01-15 A | P-SD-487, P-SD-1904 | 100% |  |
|  | 13 | **VFD's** |  | 2024-11-23 | 2025-03-07 |  |  |  |
| P-SD-280 |  | VFD's SD | 25d | 2024-11-23 A | 2025-02-06 A | P-PRO-44, P-TEA-21 | 100% |  |
| P-SD-497 |  | VFD's AP | 15d | 2025-02-07 A | 2025-03-07 A | P-SD-280 | 100% |  |
|  | 18 | **Sprinklers** |  | 2024-11-23 | 2025-09-01 |  |  |  |
| P-SD-290 |  | Sprinkles SD | 25d | 2024-11-23 A | 2025-03-21 A | P-PRO-44, P-TEA-21 | 100% |  |
| P-SD-507 |  | Sprinkles AP | 15d | 2025-03-21 A | 2025-04-17 A | P-SD-290 | 100% |  |
| P-PRO-677 |  | Sprinkles Delivery | 40d | 2025-04-21 A | 2025-09-01 A | P-SD-507 | 100% |  |
|  | 17 | **Controls** |  | 2024-11-23 | 2026-02-20 |  |  |  |
| P-SD-01 |  | Controls SD | 25d | 2024-11-23 A | 2025-07-28 A | P-PRO-44, P-TEA-21 | 100% |  |
| P-SD-687 |  | Controls AP (Valves) | 15d | 2025-07-29 A | 2025-09-23 A | P-SD-01 | 100% |  |
| P-SD-1914 |  | Controls AP (BMS) Submitted on 23-Sep | 15d | 2025-09-23 A | 2025-12-10 A | P-SD-687 | 100% |  |
| P-PRO-697 |  | Controls Delivery | 50d | 2025-09-24 A | 2026-02-20 | P-SD-687, P-SD-1914 |  | 54d |
|  | 2 | **Electrical** |  | 2024-11-23 | 2026-02-10 |  |  |  |
|  | 1 | **Light Fixtuers** |  | 2024-11-23 | 2025-09-12 |  |  |  |
| P-SD-291 |  | Light Fixtures SD | 20d | 2024-11-23 A | 2025-03-20 A | P-PRO-44, P-TEA-21 | 100% |  |
| P-SD-707 |  | Light Fixtures AP | 15d | 2025-03-21 A | 2025-04-10 A | P-SD-291 | 100% |  |
| P-PRO-747 |  | Light Fixtures Delivery | 100d | 2025-04-11 A | 2025-09-12 A | P-SD-707 | 100% |  |
|  | 2 | **Distibution** |  | 2024-11-23 | 2025-10-10 |  |  |  |
| P-SD-301 |  | Distribution SD | 20d | 2024-11-23 A | 2025-02-19 A | P-PRO-44, P-TEA-21 | 100% |  |

| ID | WBS | Task | Duration | Start | Finish | Predecessors | Complete | Total float |
| --- | --- | --- | --- | --- | --- | --- | --- | --- |
| P-SD-717 |  | Distribution AP | 15d | 2025-02-20 A | 2025-02-27 A | P-SD-301 | 100% |  |
| P-PRO-757 |  | Distribution Delivery | 60d | 2025-02-28 A | 2025-10-10 A | P-SD-717 | 100% |  |
|  | 3 | **Lighting Controls** |  | 2024-12-04 | 2026-02-10 |  |  |  |
| P-SD-311 |  | Lighting Controls SD | 40d | 2024-12-04 A | 2025-02-25 A | P-PRO-44, P-TEA-21 | 100% |  |
| P-SD-727 |  | Lighting Controls AP | 15d | 2025-02-25 A | 2025-04-09 A | P-SD-311 | 100% |  |
| P-PRO-767 |  | Lighting Controls Delivery | 100d | 2025-04-10 A | 2026-02-10 | P-SD-727 |  | 67d |
|  | 4 | **Fire Alarm** |  | 2024-11-23 | 2026-01-15 |  |  |  |
| P-SD-321 |  | Fire Alarm SD (R0) | 40d | 2024-11-23 A | 2025-05-12 A | P-PRO-44, P-TEA-21 | 100% |  |
| P-SD-737 |  | Fire Alarm AP (R0) | 15d | 2025-05-12 A | 2025-05-15 A | P-SD-321 | 100% |  |
| P-SD-757 |  | Fire Alarm SD (R1) | 5d | 2025-05-16 A | 2025-06-20 A | P-SD-321 | 100% |  |
| P-SD-1884 |  | Fire Alarm AP (R1) | 15d | 2025-06-20 A | 2025-06-24 A | P-SD-737, P-SD-757 | 100% |  |
| P-PRO-777 |  | Fire Alarm Delivery | 40d | 2025-06-25 A | 2026-01-15 A | P-SD-737, P-SD-757, P-SD-1884, P-SD-321 | 100% |  |
|  | 5 | **Transformer** |  | 2024-11-23 | 2025-09-12 |  |  |  |
| P-SD-331 |  | Transformer SD | 20d | 2024-11-23 A | 2025-02-19 A | P-PRO-44, P-TEA-21 | 100% |  |
| P-SD-747 |  | Transformer AP | 15d | 2025-02-20 A | 2025-02-27 A | P-SD-331 | 100% |  |
| P-PRO-787 |  | Transformer Delivery | 60d | 2025-02-28 A | 2025-09-12 A | P-SD-747 | 100% |  |
|  | 3 | **Finishes** |  | 2024-11-20 | 2026-04-17 |  |  |  |
|  | 6 | **Interior Glazing** |  | 2025-02-13 | 2025-12-08 |  |  |  |
| P-SD-1454 |  | Interior Glazing SD | 25d | 2025-02-13 A | 2025-03-07 A | P-PRO-44, P-TEA-21 | 100% |  |
| P-SD-1554 |  | Interior Glazing AP | 15d | 2025-03-10 A | 2025-03-24 A | P-SD-1454 | 100% |  |
| P-SD-1824 |  | Interior Glazing SD R1 | 25d | 2025-03-25 A | 2025-07-21 A | P-SD-1554 | 100% |  |
| P-SD-1834 |  | Interior Glazing AP R1 | 15d | 2025-07-22 A | 2025-07-30 A | P-SD-1824 | 100% |  |
| P-PRO-183 |  | Interior Glazing Delivery | 30d | 2025-08-01 A | 2025-12-08 A | P-TEA-21, P-SD-1554, P-SD-1834 | 100% |  |
|  | 1 | **Arch Louvers** |  | 2024-11-23 | 2026-03-17 |  |  |  |
| P-SD-1464 |  | Arch Louvers SD | 15d | 2024-11-23 A | 2025-01-13 A | P-PRO-44, P-TEA-21 | 100% |  |
| P-SD-1564 |  | Arch Louvers AP | 15d | 2025-01-14 A | 2025-01-17 A | P-SD-1464 | 100% |  |
| P-PRO-193 |  | Arch Louvers Delivery | 40d | 2025-01-20 A | 2026-03-17 | P-TEA-21, P-SD-1564 | 100% | 22d |
|  | Lockers | **Epoxy Flooring** |  | 2024-11-20 | 2024-12-19 |  |  |  |
| P-SD-1474 |  | Epoxy Flooring SD | 11d | 2024-11-20 A | 2024-12-03 A | P-PRO-44, P-TEA-21 | 100% |  |
| P-SD-1574 |  | Epoxy Flooring AP | 15d | 2024-12-04 A | 2024-12-04 A | P-SD-1474 | 100% |  |
| P-PRO-203 |  | Epoxy Flooring Delivery | 10d | 2024-12-05 A | 2024-12-19 A | P-TEA-21, P-SD-1574 | 100% |  |
|  | 2 | **Accoustic Spray Insulation** |  | 2024-12-04 | 2025-11-03 |  |  |  |
| P-SD-1484 |  | Acoustic Spray Insulation SD | 15d | 2024-12-04 A | 2025-06-24 A | P-PRO-44, P-TEA-21 | 100% |  |
| P-SD-1584 |  | Acoustic Spray Insulation AP | 15d | 2025-06-24 A | 2025-07-03 A | P-SD-1484 | 100% |  |
| P-PRO-213 |  | Acoustic Spray Insulation Delivery | 20d | 2025-08-15 A | 2025-11-03 A | P-TEA-21, P-SD-1584 | 100% |  |
|  | 8 | **Signage** |  | 2024-12-04 | 2026-04-17 |  |  |  |
| P-SD-1494 |  | Signage SD | 15d | 2024-12-04 A | 2025-05-08 A | P-PRO-44, P-TEA-21 | 100% |  |
| P-SD-1594 |  | Signage AP- R0 | 15d | 2025-05-09 A | 2025-05-13 A | P-SD-1494 | 100% |  |
| P-SD-1894 |  | Signage- Resubmit- R1 | 5d | 2025-05-14 A | 2025-08-06 A | P-SD-1594 | 100% |  |
| P-PRO-283 |  | Signage AP- R1 | 10d | 2025-08-07 A | 2025-08-13 A | P-SD-1894 | 100% |  |
| P-PRO-373 |  | Signage- Resubmit- R2 | 5d | 2025-08-14 A | 2025-08-20 A | P-PRO-283 | 100% |  |
| P-PRO-433 |  | Signage AP- R2 | 5d | 2025-08-21 A | 2025-08-27 A | P-PRO-373 | 100% |  |
| P-PRO-223 |  | Signage Delivery | 40d | 2025-08-28 A | 2026-04-17 | P-TEA-21, P-SD-1594, P-PRO-283, P-PRO-433 |  | 40d |
|  | 3 | **Toliet Partitions** |  | 2024-11-23 | 2025-05-09 |  |  |  |
| P-SD-1504 |  | Toilet Partitions SD | 15d | 2024-11-23 A | 2024-12-11 A | P-PRO-44, P-TEA-21 | 100% |  |
| P-SD-1604 |  | Toilet Partitions AP | 15d | 2025-01-20 A | 2025-02-05 A | P-SD-1504 | 100% |  |
| P-PRO-233 |  | Toilet Partitions Delivery | 40d | 2025-02-06 A | 2025-05-09 A | P-TEA-21, P-SD-1604 | 100% |  |
|  | 9 | **Wahsroom Accessories** |  | 2024-11-23 | 2026-03-31 |  |  |  |
| P-SD-1514 |  | Washroom Accessories SD | 15d | 2024-11-23 A | 2025-02-20 A | P-PRO-44, P-TEA-21 | 100% |  |
| P-SD-1614 |  | Washroom Accessories AP | 15d | 2025-02-21 A | 2025-03-04 A | P-SD-1514 | 100% |  |
| P-PRO-243 |  | Washroom Accessories Delivery | 40d | 2025-03-05 A | 2026-03-31 | P-TEA-21, P-SD-1614 |  | 62d |
|  | 10 | **Steam/ Sauna** |  | 2024-12-04 | 2026-02-17 |  |  |  |
| P-SD-1534 |  | Steam/Sauna SD | 15d | 2024-12-04 A | 2025-06-13 A | P-PRO-44, P-TEA-21 | 100% |  |
| P-SD-1634 |  | Steam/Sauna AP | 15d | 2025-06-16 A | 2025-11-26 A | P-SD-1534 | 100% |  |
| P-PRO-263 |  | Sauna Cedar & Heater Delivery | 43d | 2025-12-10 A | 2026-02-17 | P-TEA-21, P-SD-1634 |  | 76d |
|  | 4 | **Lockers** |  | 2024-11-23 | 2026-03-16 |  |  |  |
| P-SD-1524 |  | Lockers SD | 15d | 2024-11-23 A | 2025-02-25 A | P-PRO-44, P-TEA-21 | 100% |  |
| P-SD-1624 |  | Lockers AP | 15d | 2025-02-26 A | 2025-03-06 A | P-SD-1524 | 100% |  |
| P-SD-1844 |  | Lockers SD R1 | 15d | 2025-03-07 A | 2025-04-09 A |  | 100% |  |
| P-SD-1854 |  | Lockers AP R1 | 15d | 2025-04-09 A | 2025-04-22 A | P-SD-1844 | 100% |  |
| P-PRO-253 |  | Lockers Delivery | 50d | 2025-04-23 A | 2026-03-16 | P-TEA-21, P-SD-1624, P-SD-1854 |  | 28d |
|  | 5 | **Paving** |  | 2025-02-13 | 2025-05-02 |  |  |  |
| P-SD-1544 |  | Paving SD | 15d | 2025-02-13 A | 2025-04-24 A | P-PRO-44, P-TEA-21 | 100% |  |
| P-SD-1644 |  | Paving AP | 15d | 2025-04-25 A | 2025-04-30 A | P-SD-1544 | 100% |  |
| P-PRO-273 |  | Paving Delivery | 15d | 2025-05-01 A | 2025-05-02 A | P-TEA-21, P-SD-1644 | 100% |  |
|  | 11 | **INTEGRATED PHASED PLANNING - IPP** |  | 2024-04-26 | 2026-03-09 |  |  |  |
|  | 5 | **SAFETY HOLD POINTS** |  | 2024-04-26 | 2026-02-04 |  |  |  |
| IPP-SAFE-175 |  | Safety Hold Point: Foundation Kick Off Meeting | 1d | 2024-04-26 A | 2024-04-26 A | P-TEA-9 FS+4d | 100% |  |
| IPP-SAFE-176 |  | Safety Hold Point: Fall Protection and Steel Erection Safety Plan | 0d | 2024-11-14 A | 2024-11-14 A | C-SS-PH1-1050 SS | 100% |  |
| IPP-SAFE-180 |  | Safety Hold Point: Core and Shell Kick Off Meeting | 1d | 2024-11-21 A | 2024-11-21 A | P-TEA-14, C-SS-PH1-1000 SS-6d | 100% |  |

| ID | WBS | Task | Duration | Start | Finish | Predecessors | Complete | Total float |
| --- | --- | --- | --- | --- | --- | --- | --- | --- |
| IPP-SAFE-178 |  | Safety Hold Point: Fall Protection and Envelope Safety Review | 10d | 2025-01-16 A | 2025-01-29 A | C-ENV-SID-EW-N-1000 SF | 100% |  |
| IPP-SAFE-177 |  | Safety Hold Point: Fall Protection and Roofing Safety Review | 10d | 2025-02-24 A | 2025-03-28 A | C-ENV-RF-E-1040 SF, C-ENV-RF-E&S-1010, C-ENV-RF-E&S-1030 | 100% |  |
| IPP-SAFE-179 |  | Safety Hold Point: Fall Protection and Curtain Wall Safety Review | 10d | 2025-05-05 A | 2025-05-14 A |  | 100% |  |
| IPP-SAFE-181 |  | Safety Hold Point: Mechanical Equipment Placement Safety Review | 10d | 2025-05-23 A | 2025-05-23 A |  | 100% |  |
| IPP-SAFE-183 |  | Safety Hold Point: Interior Kick Off Meeting | 1d | 2025-09-12 A | 2025-09-12 A |  | 100% |  |
| IPP-SAFE-182 |  | Safety Hold Point: Electrical Equipment Placement Safety Review | 1d | 2025-11-17 A | 2025-11-17 A | T-INT-MF-Z1-ER-1050 FF-11d | 100% |  |
| IPP-SAFE-194 |  | Scaffold Dance Floor Inspection/Working At Heights | 1d | 2025-12-17 A | 2025-12-17 A | T-INT-MF-Z5-1300, T-INT-MF-Z5-2670 FF | 100% |  |
| IPP-SAFE-184 |  | Safety Hold Point: Main Electrical Room Energization Safety Review | 10d | 2026-01-22 | 2026-02-04 | T-INT-MF-Z1-ER-1160 |  | 61d |
|  | 6 | **QAQC HOLD POINTS** |  | 2024-07-09 | 2026-03-09 |  |  |  |
| IPP-QAQC-188 |  | QAQC Hold Point: Anchor Bolt & Embed Review | 1d | 2024-07-09 A | 2024-07-09 A | C-FDN-A2-1050 | 100% |  |
| IPP-QAQC-187 |  | QAQC Hold Point: Elevators Shafts Pits and Rebar Review | 1d | 2024-09-24 A | 2024-09-24 A | C-FDN-A13A-1050 | 100% |  |
| IPP-QAQC-198 |  | QAQC Hold Point: Steel and Deck Inspections | 1d | 2024-12-06 A | 2024-12-09 A | C-SS-PH2-1040 | 100% |  |
| IPP-QAQC-200 |  | QAQC Hold Point: Structural Slab Rebar Stand Forms Inspection | 1d | 2024-12-13 A | 2024-12-13 A | C-FDN-A7A-1000, C-FDN-A7A-1040 | 100% |  |
| IPP-QAQC-195 |  | QAQC Hold Point: Shallow U/G Mechanical Inspection | 1d | 2025-01-17 A | 2025-01-17 A | C-FDN-A5-1030 | 100% |  |
| IPP-QAQC-197 |  | QAQC Hold Point: Slab Frost Check | 1d | 2025-03-03 A | 2025-03-03 A | C-FDN-PH3-1000 | 100% |  |
| IPP-QAQC-196 |  | QAQC Hold Point: U/G Pool Piping Inspection | 1d | 2025-03-11 A | 2025-03-11 A | C-FDN-A7-1040, C-FDN-A7-1010, C-FDN-A7-1030 | 100% |  |
| IPP-QAQC-202 |  | QAQC Hold Point: Pre-board Review and Inspection - Main Floor | 1d | 2025-11-04 A | 2025-11-04 A | T-INT-MF-Z1-1010 FS+1d | 100% |  |
| IPP-QAQC-209 |  | Zone #1 Pre-board Inspection | 1d | 2025-11-07 A | 2025-11-07 A |  | 100% |  |
| IPP-QAQC-309 |  | Concrete Finishing walkthrough | 5d | 2025-11-26 A | 2025-12-11 A |  | 100% |  |
| IPP-QAQC-299 |  | Heat and Monitor checks | 5d | 2025-11-27 A | 2025-12-02 A | T-INT-MF-Z5-2760 | 100% |  |
| IPP-QAQC-239 |  | Zone #3 Wall Pre-board Inspection | 1d | 2025-12-02 A | 2025-12-02 A | T-INT-MF-Z3-1040 | 100% |  |
| IPP-QAQC-219 |  | Zone #2 Pre-board Inspection | 1d | 2025-12-03 A | 2025-12-03 A | T-INT-MF-Z2-1040, T-INT-MF-Z2-1020 | 100% |  |
| IPP-QAQC-190 |  | QAQC Hold Point: Pool Tank Water Test- All Pools | 35d | 2026-01-19 | 2026-03-09 | T-INT-MF-Z5-1040 SS, C-FDN-A8-1070, C-FDN-A15-1030, C-SOG-S1C/D-1060, T-INT-MF-Z5-2360 SS, T-INT-MF-Z5-2740 SS, T-INT-MF-Z5-2850 SS |  | 11d |
| IPP-QAQC-201 |  | QAQC Hold Point: Pre-board Review and Inspection - Second Floor | 1d | 2026-01-19 | 2026-01-19 | T-INT-SF-2060, T-INT-SF-2070 |  | 138d |
| IPP-QAQC-259 |  | Zone #5 North Pre-board Inspection | 1d | 2026-01-19 | 2026-01-19 | T-INT-MF-Z5-1320 FF |  | 12d |
| IPP-QAQC-269 |  | Zone #5 South Pre-board Inspection | 1d | 2026-02-02 | 2026-02-02 | T-INT-MF-Z5-2720 SS+5d |  | 24d |
| IPP-QAQC-319 |  | Final Block Wall Inspections | 1d | 2026-02-02 | 2026-02-02 | T-INT-MF-Z4-1000, T-INT-MF-Z5-2010 FF |  | 133d |
| IPP-QAQC-199 |  | QAQC Hold Point: Elevators Site Readiness | 1d | 2026-02-09 | 2026-02-09 | T-MEIT-EL-1040 |  | 74d |
| IPP-QAQC-249 |  | Zone #4 Pre-board Inspection | 1d | 2026-02-17 | 2026-02-17 | T-INT-MF-Z4-1040, T-INT-MF-Z4-1020 |  | 8d |
| IPP-QAQC-229 |  | Zone #3 Ceiling Pre-board Inspection | 1d | 2026-02-25 | 2026-02-25 | T-INT-MF-Z3-1060, T-INT-MF-Z3-1070, T-INT-MF-Z3-1090 FF |  | 6d |
| IPP-QAQC-279 |  | Zone #6 Pre-board Inspection | 1d | 2026-03-03 | 2026-03-03 | T-INT-MF-Z6-1030, T-INT-MF-Z6-1010 |  | 16d |
|  | 5 | **DELAY EVENTS** |  | 2024-10-24 | 2026-01-26 |  |  |  |
|  | 1 | **Backfill Rock Procurement** |  | 2024-10-28 | 2024-10-31 |  |  |  |
| X-FDN-1000 |  | Delay Event- Backfill Rock Procurement | 5d | 2024-10-28 A | 2024-10-31 A |  | 100% |  |
|  | 14 | **Leisure Pool** |  | 2025-04-17 | 2025-05-14 |  |  |  |
| X-LP-1000 |  | Delay Event - Inlet Pool Piping | 5d | 2025-04-17 A | 2025-04-25 A | C-FDN-A14-1020 | 100% |  |
| X-LP-1010 |  | Delay Event - Zero Entry footing | 5d | 2025-04-29 A | 2025-05-02 A | X-LP-1000 | 100% |  |
| X-LP-1020 |  | Delay Event - Zero Entry Walls | 7d | 2025-05-05 A | 2025-05-14 A | X-LP-1010, MIL-C-580 | 100% |  |
|  | 2 | **Piling Second Call & Drilling Rig Repair** |  | 2024-10-24 | 2024-11-01 |  |  |  |
| X-PIL-1000 |  | Delay Event- Piling Second Call & Drilling Rig Repair | 5d | 2024-10-24 A | 2024-11-01 A |  | 100% |  |
|  | 3 | **Building Cladding Removal for Steel Strucutre Installation** |  | 2024-11-20 | 2024-11-21 |  |  |  |
| X-CR-1000 |  | Delay Event- Cladding Removal | 3d | 2024-11-20 A | 2024-11-21 A |  | 100% |  |
|  | 4 | **HRV RFI 56#** |  | 2024-11-22 | 2024-12-02 |  |  |  |
| X-HRV-1000 |  | Delay Event- HRV RFI Submission | 5d | 2024-11-22 A | 2024-11-22 A |  | 100% |  |
| X-HRV-1010 |  | Delay Event- HRV RFI Response | 5d | 2024-11-23 A | 2024-12-02 A | X-HRV-1000 | 100% |  |
|  | 5 | **Water Stop Repairs (Lap Pool Raft Slab)** |  | 2025-04-23 | 2025-05-05 |  |  |  |
| X-WS-1000 |  | Delay Event - Water Stop Repairs | 5d | 2025-04-23 A | 2025-05-05 A | C-FDN-A7-1110 | 100% |  |
|  | 6 | **Piping Fastening Error** |  | 2025-06-04 | 2025-06-20 |  |  |  |
| X-PIP-1000 |  | Delay Event- Piping Fastening Error | 2d | 2025-06-04 A | 2025-06-20 A | C-FDN-NN-1070 FF+1d | 100% |  |
|  | 9 | **Water Proofing On Basement Walls** |  | 2025-06-09 | 2025-06-17 |  |  |  |
| X-WP-1000 |  | Delay Event- Waterproofing on Basement Walls ( Trade Dependency) | 1d | 2025-06-09 A | 2025-06-17 A |  | 100% |  |
|  | 7 | **Coring Hole in South Basement Walls** |  | 2025-06-05 | 2025-06-19 |  |  |  |
| X-BW-1000 |  | Delay Event- Backfilling & Waterproofing for Access | 2d | 2025-06-05 A | 2025-06-19 A |  | 100% |  |
|  | 8 | **Reinforcing Steel Completion** |  | 2025-06-23 | 2025-06-23 |  |  |  |
| X-RS-1000 |  | Delay Event- Reinforcing steel completion | 1d | 2025-06-23 A | 2025-06-23 A |  | 100% |  |
|  | 10 | **Green Manpower Availability (Area 10B South Grade Beam)** |  | 2025-06-20 | 2025-08-28 |  |  |  |
| X-A10-1010 |  | Delay Event- Green Manpower Availability (Formwork) | 2d | 2025-06-20 A | 2025-06-21 A |  | 100% |  |
| X-A10-1020 |  | Delay Event: Green Manpower Availability (Pour) | 5d | 2025-06-27 A | 2025-07-02 A |  | 100% |  |
| X-A10-1030 |  | Delay Event: Green Error with Riser Elevation | 11d | 2025-08-14 A | 2025-08-28 A |  | 100% |  |
|  | 11 | **Igloo Manpower Availability** |  | 2025-06-19 | 2025-06-23 |  |  |  |
| X-ENV-1160 |  | Delay Event- Igloo Manpower Availability | 1d | 2025-06-19 A | 2025-06-23 A |  | 100% |  |
|  | 12 | **Adult Hot Tub UG Piping (Inlet Pool Piping)** |  | 2025-06-23 | 2025-07-02 |  |  |  |
| X-P.PIP-1000 |  | Delay Event- Missing Core in South Basement Wall | 4d | 2025-06-23 A | 2025-07-02 A |  | 100% |  |
|  | 18 | **Area-16 Adult Hot Tub Slab** |  | 2025-07-05 | 2025-07-09 |  |  |  |
| X-A16-1000 |  | Delay Event: Green Missed Forming Drain Bases | 5d | 2025-07-05 A | 2025-07-09 A | C-FDN-SN-A16-1010 | 100% |  |
|  | 17 | **OutDoor Waterpool Piping** |  | 2025-07-06 | 2025-07-08 |  |  |  |
| X-P.PIP-1010 |  | Delay Event: ED not acquiring 1st Call | 5d | 2025-07-06 A | 2025-07-08 A | C-FDN-SN-UG-1080 | 100% |  |
|  | 13 | **Elevator Contract Award** |  | 2024-12-03 | 2025-09-02 |  |  |  |
| X-PRO-1000 |  | Delay Event- Executing Schindlers Contract (Elevator) | 5d | 2024-12-03 A | 2025-09-02 A | P-SD-1664 | 100% |  |
|  | 15 | **Area-15 Lazy River- WaterSlide C2 Thickening** |  | 2025-07-04 | 2025-07-09 |  |  |  |

| ID | WBS | Task | Duration | Start | Finish | Predecessors | Complete | Total float | Constraint |
| --- | --- | --- | --- | --- | --- | --- | --- | --- | --- |
| X-A15-1000 |  | Delay Event: Misalignment between Green and LMS activities | 5d | 2025-07-04 A | 2025-07-06 A | C-FDN-A15-1060, C-FDN-A15-1070 | 100% |  |  |
| X-A15-1010 |  | Delay Event: Green Prolonged Closing Duration | 5d | 2025-07-06 A | 2025-07-09 A | X-A15-1000 | 100% |  |  |
|  | 16 | **Family Whirlpool Main Drain** |  | 2025-07-02 | 2025-07-28 |  |  |  |  |
| X-FW-1000 |  | Delay Event: Push on Fillcrete Encasement due to Manpower | 5d | 2025-07-02 A | 2025-07-03 A | C-FDN-NN-1260 | 100% |  |  |
| X-FW-1010 |  | LMS detailing error, formwork issues (Family Whirlpool raft Slab) | 5d | 2025-07-14 A | 2025-07-18 A |  | 100% |  |  |
| X-FW-1020 |  | Revised Dowel Details | 5d | 2025-07-24 A | 2025-07-28 A |  | 100% |  |  |
|  | 19 | **Architectural Concrete Bases** |  | 2025-06-19 | 2025-06-30 |  |  |  |  |
| C-FDN-ACB-1180 |  | Delay Event- RFI Response to Snow Melt Core. | 5d | 2025-06-19 A | 2025-06-30 A | C-FDN-ACB-1020 | 100% |  |  |
|  | 20 | **South SIde Cladding** |  | 2025-12-12 | 2026-01-12 |  |  |  |  |
| C-ENV-S-CL-1000 |  | Delay Event- South Side Steel Angle Procurement | 1d | 2025-12-12 A | 2026-01-12 A |  | 100% |  |  |
|  | 21 | **Lap Pool** |  | 2025-11-25 | 2025-12-02 |  |  |  |  |
| C-ENV-LP-1000 |  | Delay Event- Patching & Grinding | 1d | 2025-11-25 A | 2025-12-02 A |  | 100% |  |  |
|  | 22 | **Zone 05- North Natatorium HVAC Wall** |  | 2025-11-24 | 2026-01-23 |  |  |  |  |
| C-Z5-NN-HVAC-1000 |  | Delay Event- Manpower Availability by MNA for HVAC Wall | 5d | 2025-11-24 A | 2025-12-08 A |  | 100% |  |  |
| C-Z5-NN-ELEC-1010 |  | North Natatorium Missed TV Screen Backing & Electrical Rough In | 5d | 2026-01-14 A | 2026-01-23 |  |  | 8d |  |
|  | 23 | **Zone -04- Frame Delivery** |  | 2026-01-26 | 2026-01-26 |  |  |  |  |
| C-Z5-NN-FRA-1020 |  | Remaining 5 opening Frame Delivery | 1d | 2026-01-26 | 2026-01-26 |  |  | 12d | start on or after 2026-01-23 |
|  | 7 | **CLIENT EVENTS** |  | 2024-06-11 | 2024-09-03 |  |  |  |  |
| WX-1000 |  | High School Exams | 2d | 2024-06-11 A | 2024-06-12 A | P-TEA-4 | 100% |  |  |
| WX-1010 |  | High School Exams | 4d | 2024-06-17 A | 2024-06-20 A | P-TEA-4 | 100% |  |  |
| WX-1020 |  | High School | 3d | 2024-06-24 A | 2024-06-26 A | P-TEA-4 | 100% |  |  |
| WX-1030 |  | Last Day of School 2024 | 1d | 2024-06-27 A | 2024-06-27 A | P-TEA-4 | 100% |  |  |
| WX-1040 |  | Summer Days | 1d | 2024-08-02 A | 2024-08-02 A | P-TEA-4 | 100% |  |  |
| WX-1050 |  | First Day of School 2024/2025 | 1d | 2024-09-03 A | 2024-09-03 A | P-TEA-4 | 100% |  |  |
|  | 2 | **Work Constraints** |  | 2025-11-08 | 2026-05-01 |  |  |  |  |
| WX-2000 |  | Winter 2025 - 2026 | 5d | 2025-11-08 A | 2026-05-01 |  |  | 43d |  |
|  | 8 | **CONSTRUCTION** |  | 2024-04-22 | 2026-06-19 |  |  |  |  |
| C-MOB-210 |  | Mobilization and Site Preparation | 5d | 2024-04-22 A | 2024-04-26 A | P-TEA-9 | 100% |  |  |
|  | 1 | **SUBSTRUCTURE (FOUNDATIONS)** |  | 2024-04-29 | 2026-04-11 |  |  |  |  |
| C-FDN-1000 |  | Strip to Underside of Subgrade, to Pile Cutoff Elevation - Entire Footprint | 5d | 2024-04-29 A | 2024-05-03 A | C-MOB-210, IPP-SAFE-175 | 100% |  |  |
| C-FDN-1010 |  | Temporary Power and Gas Connections | 5d | 2024-05-06 A | 2024-05-10 A | C-FDN-1000 | 100% |  |  |
| C-FDN-1020 |  | Piling | 10d | 2024-05-22 A | 2024-06-06 A | P-PRO-135 FS-1d, C-FDN-1010 | 100% |  |  |
| C-FDN-1030 |  | Sheet Piling | 3d | 2024-06-07 A | 2024-06-25 A | P-PRO-136, C-FDN-1020, C-FDN-1040 FF | 100% |  |  |
| C-FDN-1040 |  | Event: weather, delays, Underground Bolders, Exam Schedule | 2d | 2024-06-13 A | 2024-06-25 A | P-TEA-4 | 100% |  |  |
|  | 1 | **AREA 1A, 2, 3, 4,5, 9, 11, 12 - PILE CAPS AND GRADEBEAMS** |  | 2024-06-05 | 2024-08-07 |  |  |  |  |
|  | 1 | **Area-1 Pile Extension & Pile Caps** |  | 2024-06-05 | 2024-08-07 |  |  |  |  |
| C-FDN-A1-1000 |  | Area 1A/2/1B Detailed Excavation | 4d | 2024-06-05 A | 2024-06-11 A | C-FDN-1020 | 100% |  |  |
| C-FDN-A1-1010 |  | Pile Extensions | 5d | 2024-06-19 A | 2024-06-24 A | P-TEA-4 | 100% |  |  |
| C-FDN-A1-1020 |  | Backfilling of Pile Extensions | 5d | 2024-07-02 A | 2024-07-08 A | C-FDN-A1-1010 | 100% |  |  |
| C-FDN-A1-1030 |  | Backfill GL PC-PA / P7-P5 | 4d | 2024-07-02 A | 2024-07-05 A | C-FDN-A1-1020 SS | 100% |  |  |
| C-FDN-A1-1040 |  | Stand Forms | 3d | 2024-07-10 A | 2024-07-19 A | C-FDN-A1-1000, C-FDN-A1-1010, C-FDN-A1-1020 SS+3d, C-FDN-A1-1030 | 100% |  |  |
| C-FDN-A1-1050 |  | Rebar | 1d | 2024-07-10 A | 2024-07-17 A | C-FDN-A1-1040 FF, P-PRO-140, C-FDN-A1-1030 | 100% |  |  |
| C-FDN-A1-1060 |  | Welding of Steel Plate to Rebar | 5d | 2024-07-19 A | 2024-07-31 A | C-FDN-A1-1050 | 100% |  |  |
| C-FDN-A1-1070 |  | Inspection | 1d | 2024-08-01 A | 2024-08-01 A | C-FDN-A1-1050, C-FDN-A1-1060 | 100% |  |  |
| C-FDN-A1-1080 |  | Pour | 1d | 2024-08-02 A | 2024-08-02 A | C-FDN-A1-1070 FF | 100% |  |  |
| C-FDN-A1-1090 |  | Strip | 1d | 2024-08-07 A | 2024-08-07 A | C-FDN-A1-1080 FS+2d | 100% |  |  |
|  | 2 | **Area-2 North Gradebeam , GL PD- PG / P1-P4** |  | 2024-06-21 | 2024-07-18 |  |  |  |  |
| C-FDN-A2-1000 |  | Outside Forms | 7d | 2024-06-21 A | 2024-06-25 A | C-FDN-A2-1020 SS+1d | 100% |  |  |
| C-FDN-A2-1010 |  | Area 3/4 Excavation -Grade beams | 4d | 2024-06-24 A | 2024-06-26 A | C-FDN-A1-1000 FS+1d, C-FDN-1030 | 100% |  |  |
| C-FDN-A2-1020 |  | Sleeper, Sand, Voidform | 3d | 2024-06-27 A | 2024-07-18 A | C-FDN-A6(AB)-1000 | 100% |  |  |
| C-FDN-A2-1030 |  | Rebar | 2d | 2024-07-03 A | 2024-07-04 A | P-TEA-4 | 100% |  |  |
| C-FDN-A2-1040 |  | Inspection | 1d | 2024-07-05 A | 2024-07-05 A | C-FDN-A2-1030 | 100% |  |  |
| C-FDN-A2-1050 |  | Inside Forms and Embeds | 1d | 2024-07-08 A | 2024-07-08 A | C-FDN-A2-1040, P-PRO-37 | 100% |  |  |
| C-FDN-A2-1060 |  | Concrete Pour | 1d | 2024-07-08 A | 2024-07-08 A | C-FDN-A2-1050 FF | 100% |  |  |
| C-FDN-A2-1070 |  | Strip | 2d | 2024-07-11 A | 2024-07-11 A | C-FDN-A2-1060 FS+2d | 100% |  |  |
|  | 3 | **Area-3 East Grade Beam, GL PG/ P6- P9** |  | 2024-07-03 | 2024-07-31 |  |  |  |  |
| C-FDN-A3-1000 |  | Sleeper, Sand, Voidform | 3d | 2024-07-03 A | 2024-07-05 A | C-FDN-A2-1020, C-FDN-A3-1010 | 100% |  |  |
| C-FDN-A3-1010 |  | Area 13 Excavation | 3d | 2024-07-04 A | 2024-07-05 A | C-FDN-2000 | 100% |  |  |
| C-FDN-A3-1020 |  | Outside Forms | 8d | 2024-07-05 A | 2024-07-06 A | C-FDN-A3-1000, C-FDN-A2-1000 | 100% |  |  |
| C-FDN-A3-1030 |  | Rebar | 3d | 2024-07-07 A | 2024-07-10 A | C-FDN-A3-1020, C-FDN-A2-1040, P-PRO-143 | 100% |  |  |
| C-FDN-A3-1040 |  | Inspection | 1d | 2024-07-10 A | 2024-07-10 A | C-FDN-A3-1030 | 100% |  |  |
| C-FDN-A3-1050 |  | Inside Forms and Embeds | 8d | 2024-07-11 A | 2024-07-18 A | C-FDN-A3-1040, C-FDN-A2-1050 | 100% |  |  |
| C-FDN-A3-1060 |  | Concrete Pour | 1d | 2024-07-19 A | 2024-07-19 A | C-FDN-A3-1050, C-FDN-A2-1060 | 100% |  |  |
| C-FDN-A3-1070 |  | Strip | 2d | 2024-07-30 A | 2024-07-31 A | C-FDN-A3-1060 FS+2d | 100% |  |  |
|  | 2 | **BASEMENT POOL MECHANICAL** |  | 2024-07-05 | 2025-07-16 |  |  |  |  |
| C-FDN-2000 |  | Bulk Excavation - Down to 94750 & include surge tank | 3d | 2024-07-05 A | 2024-07-19 A | C-FDN-1020, C-FDN-1030 | 100% |  |  |
|  | 1 | **Area-4 Basement Footings** |  | 2024-07-25 | 2024-08-02 |  |  |  |  |
| C-FDN-A4-1000 |  | Inside Forms, Embeds | 1d | 2024-07-25 A | 2024-07-25 A | C-FDN-A4-1050 FF | 100% |  |  |
| C-FDN-A4-1010 |  | Detail Excavation: Pilasters | 2d | 2024-07-26 A | 2024-07-29 A | C-FDN-2000 FS+1d | 100% |  |  |
| C-FDN-A4-1020 |  | Mud Slab Placement | 1d | 2024-07-29 A | 2024-07-30 A | P-TEA-4 | 100% |  |  |

| ID | WBS | Task | Duration | Start | Finish | Predecessors | Complete |
| --- | --- | --- | --- | --- | --- | --- | --- |
| C-FDN-A4-1030 |  | Forms | 1d | 2024-07-30 A | 2024-07-31 A | C-FDN-A4-1010, C-FDN-A4-1020 | 100% |
| C-FDN-A4-1040 |  | Rebar | 1d | 2024-07-30 A | 2024-07-31 A | C-FDN-A4-1030 SS, P-PRO-141 | 100% |
| C-FDN-A4-1050 |  | Inspection | 1d | 2024-08-01 A | 2024-08-01 A | C-FDN-A4-1040 FF | 100% |
| C-FDN-A4-1060 |  | Pour - 4 Sides | 1d | 2024-08-02 A | 2024-08-02 A | C-FDN-A4-1000 | 100% |
|  | 2 | **Area-5 Basement Walls** |  | 2024-08-05 | 2025-06-17 |  |  |
| C-FDN-A5-1000 |  | Inside Forms | 4d | 2024-08-05 A | 2024-08-22 A | C-FDN-A4-1060, P-PRO-137, C-FDN-A6(AB)-1040 | 100% |
| C-FDN-A5-1010 |  | Rebar | 7d | 2024-08-05 A | 2024-09-17 A | C-FDN-A5-1000 SS, P-PRO-1444, C-FDN-A4-1050, P-PRO-137, C-FDN-A5-1020 FF | 100% |
| C-FDN-A5-1020 |  | Pool Mechanical Sleeving | 3d | 2024-08-21 A | 2024-08-23 A | C-FDN-A11-1020, C-FDN-A5-1000 | 100% |
| C-FDN-A5-1030 |  | Inspection | 1d | 2024-09-06 A | 2024-09-17 A | C-FDN-A5-1010 FF, P-PRO-137 | 100% |
| C-FDN-A5-1040 |  | Out Side Forms, Embeds and Bulkheads | 10d | 2024-09-07 A | 2024-11-05 A | P-PRO-137, C-FDN-A5-1020 | 100% |
| C-FDN-A5-1050 |  | Concrete Pour | 15d | 2024-09-20 A | 2024-11-06 A | P-PRO-138, C-FDN-A5-1040 SS+4d, C-FDN-A5-1040 FF | 100% |
| C-FDN-A5-1060 |  | Surge Tank Walls | 10d | 2024-09-30 A | 2024-10-21 A | C-FDN-A4-1060 | 100% |
| C-FDN-A5-1070 |  | Waterproofing up to 4ft | 11d | 2024-10-16 A | 2024-10-22 A | P-PRO-149 FF, C-FDN-A5-1050 SS+10d, C-FDN-A5-1060 SS, C-FDN-A5-1060 FF | 100% |
| C-FDN-A5-1080 |  | Weeping Tile Around the footing | 2d | 2024-10-23 A | 2024-10-24 A | C-FDN-A5-1070, P-PRO-148 | 100% |
| C-FDN-A5-1090 |  | Waterproofing to the top of basement walls | 5d | 2025-06-05 A | 2025-06-17 A | MIL-C-530, C-FDN-A7A-1040, C-SS-PH3-1110, C-FDN-PH3-1000, C-FDN-PH3-1010, C-FDN-A7-1130, X-WP-1000 | 100% |
|  | 4 | **Area-6 Basement125 Thick Slab on Grade** |  | 2024-11-05 | 2025-07-16 |  |  |
| C-FDN-A6-1000 |  | Trenchs (Modren Niagara) | 2d | 2024-11-05 A | 2024-11-06 A | C-FDN-A4-1010, C-FDN-A5-1050 SS+20d, C-FDN-A5-1060 | 100% |
| C-FDN-A6-1010 |  | Install the Sump-Pit and Piping | 0d | 2024-11-05 A | 2024-11-06 A | P-PRO-150, C-FDN-A4-1010, C-FDN-A6-1020 SS, C-FDN-2000 | 100% |
| C-FDN-A6-1020 |  | Interior Weeping Tile Installation and Backfill | 1d | 2024-11-08 A | 2024-11-13 A | P-PRO-144, C-FDN-A4-1010, C-FDN-A6-1000 | 100% |
| C-FDN-A6-1030 |  | Backfilling Trenches | 2d | 2024-11-09 A | 2024-11-13 A | C-FDN-A4-1010 FF, C-FDN-A6-1020 FF, C-FDN-A6-1010 FF, C-FDN-A6-1000 FF | 100% |
| C-FDN-A6-1040 |  | Installation of Rock and Prep for SOG | 1d | 2024-11-14 A | 2024-11-15 A | C-FDN-A6-1030 | 100% |
| C-FDN-A6-1050 |  | Polly | 1d | 2024-11-18 A | 2024-11-19 A | C-FDN-A6-1010, C-FDN-A6-1020, C-FDN-A6-1040 FF | 100% |
| C-FDN-A6-1060 |  | Rebar | 2d | 2024-11-20 A | 2024-11-21 A | C-FDN-A6-1050, C-FDN-A4-1060 | 100% |
| C-FDN-A6-1070 |  | Inspection | 1d | 2024-11-21 A | 2024-11-21 A | C-FDN-A6-1060 FF | 100% |
| C-FDN-A6-1080 |  | Pour the Slab | 1d | 2024-11-22 A | 2024-11-22 A | C-FDN-A6-1060, C-FDN-A6-1020, C-FDN-A6-1010, C-FDN-A6-1050, C-FDN-A5-1050, C-FDN-A6-1070 | 100% |
| C-FDN-A6-1090 |  | Added Task- Sump Pit Thawing & Retest | 5d | 2025-02-24 A | 2025-07-16 A | C-FDN-A6-1010 | 100% |
|  | 5 | **Area-7 A S5 - 300/375 Thick Concrete Structural Slab (high priority)** |  | 2024-11-25 | 2024-12-16 |  |  |
| C-FDN-A7A-1000 |  | Formwork System Installation | 6d | 2024-11-25 A | 2024-12-04 A | C-FDN-A6-1080 | 100% |
| C-FDN-A7A-1010 |  | M&E Sleeves | 1d | 2024-12-04 A | 2024-12-05 A | C-FDN-A7A-1000 FF | 100% |
| C-FDN-A7A-1020 |  | Rebar | 4d | 2024-12-05 A | 2024-12-10 A | C-FDN-A7A-1010 SS+1d | 100% |
| C-FDN-A7A-1030 |  | Inspection | 1d | 2024-12-10 A | 2024-12-10 A | C-FDN-A7A-1020 FF | 100% |
| C-FDN-A7A-1040 |  | Pouring | 1d | 2024-12-16 A | 2024-12-16 A | C-FDN-A7A-1020, C-FDN-A7A-1030 FS+1d | 100% |
|  | 10 | **Area-6 A&B Lap Pool Step Footings** |  | 2024-07-11 | 2024-08-16 |  |  |
| C-FDN-A6(AB)-1000 |  | Area-6 A&B Excavation -Gradebeams | 5d | 2024-07-11 A | 2024-07-17 A | C-FDN-A2-1010, C-FDN-A3-1010 | 100% |
| C-FDN-A6(AB)-1010 |  | Forms | 2d | 2024-08-12 A | 2024-08-13 A | P-TEA-4 | 100% |
| C-FDN-A6(AB)-1020 |  | Rebar | 2d | 2024-08-13 A | 2024-08-14 A | C-FDN-A6(AB)-1010 FF+1d | 100% |
| C-FDN-A6(AB)-1030 |  | Inspection | 1d | 2024-08-15 A | 2024-08-15 A | C-FDN-A6(AB)-1020 | 100% |
| C-FDN-A6(AB)-1040 |  | Pour Concrete | 1d | 2024-08-16 A | 2024-08-16 A | C-FDN-A6(AB)-1030 | 100% |
|  | 3 | **SOUTH NATATORIUM GL P5.5-P10** |  | 2025-02-18 | 2026-04-11 |  |  |
|  | 1 | **Area 7 B Lap Pool Raft Slab** |  | 2025-02-18 | 2025-05-06 |  |  |
| C-FDN-A7-1000 |  | Trenching weeping tile | 3d | 2025-02-18 A | 2025-02-26 A | C-FDN-A4-1010, C-FDN-2000, C-FDN-A5-1050, C-FDN-A6-1000, C-SS-PH3-1110, C-FDN-A5-1060, C-FDN-PH3-1000 SS, C-FDN-PH3-1010, C-FDN-2000 FF, C-FDN-A12A-1010 | 100% |
| C-FDN-A7-1010 |  | Area 7A/B Main drain base complete | 1d | 2025-02-27 A | 2025-02-27 A | P-PRO-820 | 100% |
| C-FDN-A7-1020 |  | Trenching mechanical | 3d | 2025-02-28 A | 2025-03-04 A | C-FDN-2000, C-FDN-A5-1050, C-FDN-A6-1000, C-SS-PH3-1110, C-FDN-PH3-1000 SS, C-FDN-PH3-1010, C-FDN-A12A-1010 FS-1d | 100% |
| C-FDN-A7-1030 |  | Main Drain and Piping Install (Red Lines) | 3d | 2025-03-03 A | 2025-03-05 A | P-PRO-820, C-FDN-A7-1010 | 100% |
| C-FDN-A7-1040 |  | Inlet Pool Piping(Blue Lines) | 7d | 2025-03-04 A | 2025-03-10 A | P-PRO-820, C-FDN-A7-1030 | 100% |
| C-FDN-A7-1050 |  | Backfill and fillcrete | 1d | 2025-03-27 A | 2025-03-27 A | C-FDN-A7-1040, C-FDN-A7-1010, C-FDN-A7-1030 | 100% |
| C-FDN-A7-1060 |  | 300mm subgrade rock | 2d | 2025-03-28 A | 2025-04-04 A | C-FDN-A7-1050 | 100% |
| C-FDN-A7-1070 |  | Form Slab Edge | 2d | 2025-04-02 A | 2025-04-04 A | C-FDN-A7-1060 | 100% |
| C-FDN-A7-1080 |  | Rebar | 5d | 2025-04-07 A | 2025-04-11 A | P-PRO-141, C-FDN-A7-1060, C-FDN-A7-1070 | 100% |
| C-FDN-A7-1090 |  | Form Bulk Heads, Water Stop | 2d | 2025-04-11 A | 2025-04-14 A | C-FDN-A7-1080 | 100% |
| C-FDN-A7-1100 |  | Pour 1 - Area 7 Top Section | 1d | 2025-04-16 A | 2025-04-16 A | P-PRO-138, C-FDN-A7-1080, C-FDN-A7-1090 | 100% |
| C-FDN-A7-1110 |  | Pour 2 - Area 7 Bottom Section | 1d | 2025-04-22 A | 2025-04-22 A | C-FDN-A7-1100 FS+1d | 100% |
| C-FDN-A7-1130 |  | Pour 3 - Area 7 Middle Section | 1d | 2025-05-06 A | 2025-05-06 A | X-WS-1000 | 100% |
|  | 1 | **Deep End Slab** |  |  |  |  |  |
|  | 2 | **Shallow End Slab** |  |  |  |  |  |
|  | 3 | **Area-8A/8B Lap Pool Walls** |  | 2025-04-21 | 2025-05-30 |  |  |
| C-FDN-A8-1000 |  | Outside Forms | 3d | 2025-04-21 A | 2025-05-06 A | C-FDN-A7-1100 | 100% |
| C-FDN-A8-1010 |  | Rebar | 5d | 2025-04-24 A | 2025-05-09 A | C-FDN-A8-1000 SS+3d, P-PRO-1444 | 100% |
| C-FDN-A8-1020 |  | Inside Forms, Embeds and Bulkheads | 7d | 2025-05-01 A | 2025-05-09 A | C-FDN-A8-1010 SS+7d | 100% |
| C-FDN-A8-1030 |  | Pour 1 | 1d | 2025-05-08 A | 2025-05-08 A | C-FDN-A8-1020 SS+3d | 100% |
| C-FDN-A8-1040 |  | Pour 1 Cure | 3d | 2025-05-08 A | 2025-05-12 A | C-FDN-A8-1030 FS-1d | 100% |
| C-FDN-A8-1050 |  | Concrete Pours | 7d | 2025-05-12 A | 2025-05-16 A | C-FDN-A8-1020, C-FDN-A8-1080 FF | 100% |
| C-FDN-A8-1060 |  | Strip and Close | 1d | 2025-05-13 A | 2025-05-13 A | C-FDN-A8-1030 FS-1d, C-FDN-A8-1040 | 100% |
| C-FDN-A8-1070 |  | Pour 2 -8B | 1d | 2025-05-14 A | 2025-05-14 A | C-FDN-A8-1020, C-FDN-A8-1060, MIL-C-560 FF-3d | 100% |
| C-FDN-A8-1080 |  | Pour 2 Cure | 3d | 2025-05-14 A | 2025-05-16 A | C-FDN-A8-1030 FS-1d, C-FDN-A8-1070 FS-1d | 100% |
| C-FDN-A8-1150 |  | Pour 3- Rebar | 5d | 2025-05-19 A | 2025-05-26 A | C-FDN-A8-1080 | 100% |
| C-FDN-A8-1110 |  | Pour 3- Pour | 5d | 2025-05-27 A | 2025-05-27 A | C-FDN-A8-1150 | 100% |
| C-FDN-A8-1140 |  | Pour 3- Cure | 5d | 2025-05-28 A | 2025-05-30 A | C-FDN-A8-1110 | 100% |
|  | 1 | **Deep End** |  |  |  |  |  |
|  | 2 | **Shallow End** |  |  |  |  |  |

| ID | WBS | Task | Duration | Start | Finish | Predecessors | Complete |
| --- | --- | --- | --- | --- | --- | --- | --- |
|  | 2 | **UNDERGROUND PIPING & EARTHWORKS** |  | 2025-06-02 | 2025-07-24 |  |  |
| C-FDN-A7-SN-1020 |  | Weeping Tile Around Lap Pool | 3d | 2025-06-02 A | 2025-06-03 A | C-FDN-A8-1140 FS+1d | 100% |
| C-FDN-SN-UG-1000 |  | Backfill Around Lap Pool - U/S Sanitary on East and South Sides | 3d | 2025-06-04 A | 2025-06-17 A | C-FDN-A7-SN-1020 | 100% |
| C-FDN-SN-UG-1010 |  | Core Hole in South Basement Wall | 1d | 2025-06-04 A | 2025-06-19 A | C-FDN-SN-UG-1000 SS | 100% |
| C-FDN-SN-UG-1040 |  | Sheet Pile Removal | 3d | 2025-06-09 A | 2025-06-11 A | C-FDN-SN-UG-1000 | 100% |
| C-FDN-SN-UG-1020 |  | Lane Rope Storage Pit Placement | 2d | 2025-06-18 A | 2025-06-27 A | C-FDN-SN-UG-1000, C-FDN-SN-UG-1010 SS | 100% |
| C-FDN-SN-UG-1070 |  | Lap Pool Gutter Piping | 4d | 2025-06-18 A | 2025-06-23 A | C-FDN-SN-UG-1060, C-FDN-SN-UG-1040 | 100% |
| C-FDN-SN-UG-1060 |  | Backfill to U/S of Gutter on East and U/S Adult WP Main Drain/Gutter on South | 2d | 2025-06-19 A | 2025-06-20 A | C-FDN-SN-UG-1030 SS, C-FDN-SN-UG-1010 | 100% |
| C-FDN-SN-UG-1030 |  | Sanitary Line from Basement - South and East Lines | 2d | 2025-06-21 A | 2025-07-10 A | X-BW-1000 | 100% |
| C-FDN-SN-UG-1080 |  | Adult WP Piping From Basement | 4d | 2025-06-23 A | 2025-07-07 A | C-FDN-SN-UG-1070 SS, C-FDN-SN-UG-1060 SS, X-P.PIP-1000 FS+2d, C-FDN-SN-UG-1020 | 100% |
| C-FDN-SN-UG-1140 |  | Fillcrete - Encase Lap Pool Gutter & Lane Rope Storage Pit Base | 1d | 2025-06-25 A | 2025-06-25 A | C-FDN-SN-UG-1070 | 100% |
| C-FDN-SN-UG-1100 |  | Backfill to U/S of Outdoor WP Piping | 2d | 2025-07-04 A | 2025-07-04 A | C-FDN-SN-UG-1020 | 100% |
| C-FDN-SN-UG-1090 |  | Fillcrete - Adult WP Piping | 1d | 2025-07-10 A | 2025-07-10 A | C-FDN-SN-UG-1080, C-FDN-SN-UG-1070 | 100% |
|  | 1 | **Outdoor WP Piping** |  | 2025-07-08 | 2025-07-24 |  |  |
| C-FDN-SN-UG-1110 |  | Outdoor WP Piping | 4d | 2025-07-08 A | 2025-07-09 A | C-FDN-SN-UG-1100, C-FDN-SN-UG-1150 FF-3d | 100% |
| C-FDN-SN-UG-1120 |  | Fillcrete - Encase Outdoor WP Piping | 1d | 2025-07-10 A | 2025-07-10 A | C-FDN-SN-UG-1110, C-FDN-SN-UG-1160 | 100% |
| C-FDN-SN-UG-1150 |  | Prep for Outdoor WP Piping | 0d | 2025-07-14 A | 2025-07-14 A | X-P.PIP-1010 | 100% |
| C-FDN-SN-UG-1160 |  | Insulation for Outdoor WP Piping | 5d | 2025-07-24 A | 2025-07-24 A | C-FDN-SN-UG-1110 | 100% |
|  | 7 | **Lap Pool Trench (Top of Pool Walls)** |  | 2025-10-16 | 2025-11-24 |  |  |
| C-FDN-SN-LPT-1000 |  | Forming | 5d | 2025-10-16 A | 2025-10-23 A | C-FDN-A8-1140, C-SOG-S1C/D-1060, C-SOG-S1C/D-1070, C-FDN-SN-S1E/S1F/S7/S2B-1100, C-FDN-NN-1660 | 100% |
| C-FDN-SN-LPT-1030 |  | Close | 3d | 2025-10-21 A | 2025-10-23 A | C-FDN-SN-LPT-1000 | 100% |
| C-FDN-SN-LPT-1040 |  | Pour | 1d | 2025-10-24 A | 2025-10-24 A | C-FDN-SN-LPT-1030 | 100% |
| C-FDN-SN-LPT-1050 |  | Patching & Grinding | 5d | 2025-10-31 A | 2025-11-24 A | C-FDN-SN-LPT-1040 FF+3d | 100% |
|  | 5 | **Area-16 - Adult Hot Tub Slab** |  | 2025-06-26 | 2025-07-24 |  |  |
| C-FDN-SN-A16-1000 |  | Main Drain Sump Setting | 2d | 2025-06-26 A | 2025-06-27 A | C-FDN-SN-UG-1060 | 100% |
| C-FDN-SN-A16-1020 |  | Main Drain Piping | 2d | 2025-07-02 A | 2025-07-03 A | C-FDN-SN-A16-1000 | 100% |
| C-FDN-SN-A16-1010 |  | Main Drain Sump Base Rebar | 1d | 2025-07-04 A | 2025-07-04 A | C-FDN-SN-A16-1000, C-FDN-SN-A16-1090 | 100% |
| C-FDN-SN-A16-1090 |  | Fillcrete - Encase | 5d | 2025-07-04 A | 2025-07-04 A | C-FDN-SN-A16-1020 | 100% |
| C-FDN-SN-A16-1030 |  | Fillcrete - Encase Main Drain Piping | 1d | 2025-07-10 A | 2025-07-10 A | C-FDN-SN-A16-1020, X-A16-1000 FS+1d | 100% |
| C-FDN-SN-A16-1040 |  | Raft Slab - Forming | 2d | 2025-07-15 A | 2025-07-16 A | C-FDN-SN-A16-1030 | 100% |
| C-FDN-SN-A16-1080 |  | Delay Event- Rebar Detailing & elevation conflict (LMS) | 5d | 2025-07-16 A | 2025-07-18 A |  | 100% |
| C-FDN-SN-A16-1050 |  | Raft Slab - Rebar | 2d | 2025-07-18 A | 2025-07-22 A | C-FDN-SN-A16-1040, P-PRO-146, C-FDN-SN-A16-1080 | 100% |
| C-FDN-SN-A16-1060 |  | Raft Slab - Rebar Inspection | 1d | 2025-07-23 A | 2025-07-23 A | C-FDN-SN-A16-1050 | 100% |
| C-FDN-SN-A16-1070 |  | Raft Slab - Pour | 1d | 2025-07-24 A | 2025-07-24 A | C-FDN-SN-A16-1060 | 100% |
|  | 13 | **Area-17 - Adult Hot Tub Walls & Bench** |  | 2025-07-16 | 2025-09-11 |  |  |
| C-FDN-A7-SN-1330 |  | Wall & Bench- Raft Slab | 5d | 2025-07-24 A | 2025-07-24 A |  | 100% |
| C-FDN-A7-SN-1400 |  | Backfill Around Adult WP and Complete to U/S of SOG Prep | 2d | 2025-09-09 A | 2025-09-11 A | C-FDN-A7-SN-1310 FF, C-FDN-A7-SN-1300 | 100% |
|  | 1 | **Benches** |  | 2025-07-16 | 2025-09-05 |  |  |
| C-FDN-A7-SN-1230 |  | Wall & Bench (Includes Trench) - Outside Forming | 2d | 2025-07-16 A | 2025-07-17 A | C-FDN-SN-A16-1070 | 100% |
| C-FDN-A7-SN-1240 |  | Wall & Bench (Includes Trench) - Rebar (Inside Half) | 2d | 2025-07-18 A | 2025-07-22 A | C-FDN-A7-SN-1230 | 100% |
| C-FDN-A7-SN-1250 |  | Bench (Includes Trench) - Pipe Penetrations | 7d | 2025-07-28 A | 2025-08-07 A | C-FDN-A7-SN-1330 | 100% |
| C-FDN-A7-SN-1260 |  | Bench (Includes Trench)- Rebar (Modifications) | 2d | 2025-08-07 A | 2025-08-07 A | C-FDN-A7-SN-1250 | 100% |
| C-FDN-A7-SN-1270 |  | Bench (Includes Trench) - Rebar Inspection | 1d | 2025-08-08 A | 2025-08-08 A | C-FDN-A7-SN-1260 FF | 100% |
| C-FDN-A7-SN-1280 |  | Bench (Includes Trench)- Bonding Study | 3d | 2025-08-11 A | 2025-08-11 A | C-FDN-A7-SN-1270 | 100% |
| C-FDN-A7-SN-1290 |  | Bench (Includes Trench) - Formwork Close | 3d | 2025-08-12 A | 2025-08-13 A | C-FDN-A7-SN-1280 | 100% |
| C-FDN-A7-SN-1300 |  | Bench (Includes Trench) - Pour | 2d | 2025-08-14 A | 2025-08-14 A | C-FDN-A7-SN-1290 | 100% |
| C-FDN-A7-SN-1310 |  | Bench (Includes Trench) - Formwork Strip | 1d | 2025-09-05 A | 2025-09-05 A | C-FDN-A7-SN-1300 | 100% |
|  | 2 | **Walls** |  | 2025-07-16 | 2025-09-10 |  |  |
| C-FDN-A7-SN-1670 |  | Wall (Includes Trench) - Outside Forming | 2d | 2025-07-16 A | 2025-07-17 A |  | 100% |
| C-FDN-A7-SN-1680 |  | Wall (Includes Trench) - Rebar (Inside Half) | 2d | 2025-07-18 A | 2025-07-22 A | C-FDN-A7-SN-1670 | 100% |
| C-FDN-A7-SN-1690 |  | Wall (Includes Trench) - Pipe Penetrations | 7d | 2025-07-30 A | 2025-08-07 A |  | 100% |
| C-FDN-A7-SN-1780 |  | RFI 161- Dimension for the Skimmers | 5d | 2025-08-08 A | 2025-08-11 A | C-FDN-A7-SN-1690 | 100% |
| C-FDN-A7-SN-1700 |  | Wall (Includes Trench)- Rebar (Outside Half) | 1d | 2025-08-12 A | 2025-08-12 A | C-FDN-A7-SN-1690, C-FDN-A7-SN-1780 FF+2d | 100% |
| C-FDN-A7-SN-1710 |  | Wall (Includes Trench) - Rebar Inspection | 1d | 2025-08-13 A | 2025-08-13 A | C-FDN-A7-SN-1700 FF | 100% |
| C-FDN-A7-SN-1720 |  | Wall (Includes Trench)- Bonding Study | 3d | 2025-08-14 A | 2025-08-14 A | C-FDN-A7-SN-1710 | 100% |
| C-FDN-A7-SN-1730 |  | Wall (Includes Trench) - Formwork Close | 1d | 2025-08-25 A | 2025-08-25 A | C-FDN-A7-SN-1720 | 100% |
| C-FDN-A7-SN-1740 |  | Wall (Includes Trench) - Pour | 2d | 2025-09-05 A | 2025-09-05 A | C-FDN-A7-SN-1730, C-FDN-A7-SN-1300 | 100% |
| C-FDN-A7-SN-1750 |  | Wall (Includes Trench) - Formwork Strip | 2d | 2025-09-09 A | 2025-09-10 A | C-FDN-A7-SN-1740 | 100% |
|  | 16 | **Area-17 - Adult Hot Tub Stair** |  | 2025-09-24 | 2025-11-04 |  |  |
| C-FDN-A7-SN-1320 |  | Stair - Forming | 2d | 2025-09-24 A | 2025-10-28 A | C-FDN-A7-SN-1310, C-FDN-A7-SN-1750, C-FDN-SN-S1E/S1F/S7/S2B-1100 FF+4d | 100% |
| C-FDN-A7-SN-1340 |  | Stair - Rebar | 2d | 2025-10-27 A | 2025-10-28 A | C-FDN-A7-SN-1320 FF | 100% |
| C-FDN-A7-SN-1360 |  | Stair - Bonding for Railings | 2d | 2025-10-27 A | 2025-10-28 A | C-FDN-A7-SN-1350 FF | 100% |
| C-FDN-A7-SN-1350 |  | Stair - Rebar Inspection | 1d | 2025-10-30 A | 2025-10-30 A | C-FDN-A7-SN-1340 FF | 100% |
| C-FDN-A7-SN-1370 |  | Stair - Formwork Close | 1d | 2025-10-31 A | 2025-10-31 A | C-FDN-A7-SN-1360, C-FDN-SN-S1E/S1F/S7/S2B-1100 | 100% |
| C-FDN-A7-SN-1380 |  | Stair - Pour | 1d | 2025-11-01 A | 2025-11-01 A | C-FDN-A7-SN-1370 FF, C-FDN-SN-S1E/S1F/S7/S2B-1100 FF | 100% |
| C-FDN-A7-SN-1640 |  | Cure | 2d | 2025-11-02 A | 2025-11-03 A | C-FDN-A7-SN-1380 | 100% |
| C-FDN-A7-SN-1390 |  | Stair - Formwork Strip | 1d | 2025-11-04 A | 2025-11-04 A | C-FDN-A7-SN-1640 FF | 100% |
|  | 4 | **S1 White - Slab on Grade S1E/S1F/S2B/S7** |  | 2025-08-26 | 2025-10-18 |  |  |
| C-FDN-SN-S1E/S1F/S7/S2B-1110 |  | Sanitary piping | 3d | 2025-08-26 A | 2025-09-09 A | C-FDN-A7-SN-1400 FF+1d | 100% |
| C-FDN-SN-S1E/S1F/S7/S2B-1030 |  | Radon Piping | 3d | 2025-09-09 A | 2025-09-09 A | C-FDN-A7-SN-1400, C-FDN-SN-UG-1030 | 100% |

| ID | WBS | Task | Duration | Start | Finish | Predecessors | Complete | Total float |
| --- | --- | --- | --- | --- | --- | --- | --- | --- |
| C-FDN-SN-S1E/S1F/S7/S2B-1040 |  | Radon Pits | 1d | 2025-09-09 A | 2025-09-09 A | C-FDN-SN-S1E/S1F/S7/S2B-1030 SS | 100% |  |
| C-FDN-SN-S1E/S1F/S7/S2B-1020 |  | Granular Slab Prep | 2d | 2025-09-11 A | 2025-09-12 A | C-FDN-SN-S1E/S1F/S7/S2B-1040 FF, C-FDN-SN-S1E/S1F/S7/S2B-1030 FF, C-FDN-A7-SN-1400 SS, C-FDN-SN-UG-1030, C-FDN-SN-S1E/S1F/S7/S2B-1110 | 100% |  |
| C-FDN-SN-S1E/S1F/S7/S2B-1050 |  | Vapour Barrier | 3d | 2025-09-13 A | 2025-09-15 A | C-FDN-SN-S1E/S1F/S7/S2B-1020 FS-3d | 100% |  |
| C-FDN-SN-S1E/S1F/S7/S2B-1000 |  | Inslab Electrical | 1d | 2025-09-16 A | 2025-09-16 A | C-FDN-SN-S1E/S1F/S7/S2B-1060 SS | 100% |  |
| C-FDN-SN-S1E/S1F/S7/S2B-1060 |  | Rebar - SOG and Trenches | 7d | 2025-09-17 A | 2025-09-23 A | C-FDN-SN-S1E/S1F/S7/S2B-1050 | 100% |  |
| C-FDN-SN-S1E/S1F/S7/S2B-1090 |  | Edgeform and Trench Blockouts | 8d | 2025-09-18 A | 2025-09-25 A | C-FDN-SN-S1E/S1F/S7/S2B-1070 | 100% |  |
| C-FDN-SN-S1E/S1F/S7/S2B-1070 |  | Rebar Inspection | 1d | 2025-09-24 A | 2025-09-24 A | C-FDN-SN-S1E/S1F/S7/S2B-1060 FF, C-FDN-SN-S1E/S1F/S7/S2B-1000 | 100% |  |
| C-FDN-SN-S1E/S1F/S7/S2B-1080 |  | Bonding | 2d | 2025-09-25 A | 2025-09-25 A | C-FDN-SN-S1E/S1F/S7/S2B-1070 | 100% |  |
| C-FDN-SN-S1E/S1F/S7/S2B-1100 |  | Pour and Finish | 7d | 2025-09-26 A | 2025-10-18 A | C-FDN-SN-S1E/S1F/S7/S2B-1080, C-FDN-SN-S1E/S1F/S7/S2B-1090 | 100% |  |
|  | 8 | **S3B - 200 Thick Heated Slab on Grade** |  | 2025-10-10 | 2025-11-07 |  |  |  |
| C-SW-1000 |  | Rough Grade Completion | 1d | 2025-10-10 A | 2025-10-14 A | C-FDN-A10B-1090 FF, C-FDN-A18-1170, C-FDN-A18-1160 FF | 100% |  |
| C-SW-1010 |  | Subgrade Granular | 1d | 2025-10-16 A | 2025-10-16 A | C-SW-1000 FF | 100% |  |
| C-SW-1020 |  | Insulation | 2d | 2025-10-18 A | 2025-10-20 A | C-SW-1010 | 100% |  |
| C-SW-1050 |  | Rebar | 2d | 2025-10-27 A | 2025-10-28 A | C-SW-1020 | 100% |  |
| C-SW-1110 |  | Rebar Inspection | 1d | 2025-11-03 A | 2025-11-03 A | C-SW-1050 FF | 100% |  |
| C-SW-1080 |  | Inslab Heating | 3d | 2025-11-04 A | 2025-11-06 A | C-SW-1050, P-PRO-637 | 100% |  |
| C-SW-1090 |  | Pour and Finish | 1d | 2025-11-07 A | 2025-11-07 A | C-SW-1110, C-SW-1080 | 100% |  |
|  | 6 | **East Natatorium Benches** |  | 2026-03-26 | 2026-04-11 |  |  |  |
| C-FDN-A7-SN-1570 |  | Forming | 2d | 2026-03-26 | 2026-03-27 | C-FDN-SN-S1E/S1F/S7/S2B-1100, T-INT-MF-Z5-2630, T-INT-MF-Z5-2230, T-INT-MF-Z5-2090 |  | 20d |
| C-FDN-A7-SN-1580 |  | Rebar | 3d | 2026-03-30 | 2026-04-01 | C-FDN-A7-SN-1570 |  | 15d |
| C-FDN-A7-SN-1590 |  | Inspection | 1d | 2026-04-02 | 2026-04-02 | C-FDN-A7-SN-1580 |  | 15d |
| C-FDN-A7-SN-1600 |  | Close | 2d | 2026-04-03 | 2026-04-06 | C-FDN-A7-SN-1590 |  | 18d |
| C-FDN-A7-SN-1610 |  | Pour | 1d | 2026-04-07 | 2026-04-07 | C-FDN-A7-SN-1600 |  | 14d |
| C-FDN-A7-SN-1660 |  | Cure | 3d | 2026-04-08 | 2026-04-10 | C-FDN-A7-SN-1610 |  | 18d |
| C-FDN-A7-SN-1620 |  | Strip | 1d | 2026-04-11 | 2026-04-11 | C-FDN-A7-SN-1660 |  | 18d |
|  | 4 | **NORTH NATATORIUM GL P1-P5.5** |  | 2024-08-13 | 2025-11-24 |  |  |  |
|  | 1 | **Area-12 B S4 - Surge Tank Raft Slabs x 2** |  | 2024-08-13 | 2025-02-19 |  |  |  |
| C-FDN-A12A-1000 |  | 12B West Surge Tank Raft Slab | 5d | 2024-08-13 A | 2024-09-17 A | P-TEA-4 | 100% |  |
| C-FDN-A12A-1010 |  | Detailed Excavation - Step Footing,Surge Tanks and Remaining Footings | 3d | 2025-02-10 A | 2025-02-13 A | C-ENV-SID-EW-N-1000, C-ENV-SID-EW-E-1000 | 100% |  |
| C-FDN-A12A-1020 |  | Stand Forms | 3d | 2025-02-13 A | 2025-02-14 A | C-FDN-A11-1050, C-FDN-A12A-1010 FS+1d, C-FDN-A12A-1010 FF, C-FDN-A11-1050 FF, C-FDN-A12A-1010 SS | 100% |  |
| C-FDN-A12A-1030 |  | Pool Piping Wall Sleeving | 1d | 2025-02-17 A | 2025-02-17 A | C-FDN-A12A-1020 FF | 100% |  |
| C-FDN-A12A-1040 |  | Rebar | 1d | 2025-02-18 A | 2025-02-18 A | C-FDN-A12A-1020, P-PRO-145, C-FDN-A12A-1030 | 100% |  |
| C-FDN-A12A-1050 |  | Pour | 1d | 2025-02-19 A | 2025-02-19 A | C-FDN-A12A-1040 | 100% |  |
|  | 3 | **Area- 12 B Leisure Pool Footings** |  | 2024-08-13 | 2025-03-08 |  |  |  |
| C-FDN-A12B-1000 |  | 12 B Footings 1st Half | 5d | 2024-08-13 A | 2024-08-27 A | P-TEA-4 | 100% |  |
| C-FDN-A12B-1010 |  | Mud Slab | 1d | 2025-02-27 A | 2025-02-27 A | C-FDN-A12A-1010 FS+1d | 100% |  |
| C-FDN-A12B-1020 |  | Stand Forms | 3d | 2025-02-28 A | 2025-03-05 A | C-FDN-A11-1050, C-FDN-A11-1050 FF, C-FDN-A12B-1010 | 100% |  |
| C-FDN-A12B-1030 |  | Rebar and Inspection | 3d | 2025-03-05 A | 2025-03-07 A | C-FDN-A12B-1020 | 100% |  |
| C-FDN-A12B-1040 |  | Pour | 1d | 2025-03-08 A | 2025-03-08 A | C-FDN-A12B-1030 | 100% |  |
|  | 2 | **Area-13 A Surge Tank Walls x 2** |  | 2024-09-23 | 2025-03-03 |  |  |  |
| C-FDN-A13A-1000 |  | 13 A West Wall | 5d | 2024-09-23 A | 2025-02-20 A | C-FDN-A12A-1000, C-SS-PH2-1100 FF+5d, C-FDN-PH1-1010 | 100% |  |
| C-FDN-A13A-1010 |  | Stand Forms | 4d | 2025-02-19 A | 2025-02-21 A | C-FDN-A12A-1050 FS+2d, C-FDN-A12A-1050 FF, C-FDN-A13A-1000 | 100% |  |
| C-FDN-A13A-1020 |  | Pool Piping Wall Sleeving | 2d | 2025-02-21 A | 2025-02-25 A | C-FDN-A13A-1010 FF | 100% |  |
| C-FDN-A13A-1030 |  | Rebar | 2d | 2025-02-25 A | 2025-02-27 A | C-FDN-A13A-1010, C-FDN-A13A-1020 | 100% |  |
| C-FDN-A13A-1040 |  | Close | 2d | 2025-02-27 A | 2025-02-28 A | C-FDN-A13A-1030 | 100% |  |
| C-FDN-A13A-1050 |  | Pour | 2d | 2025-03-03 A | 2025-03-03 A | C-FDN-A13A-1040 | 100% |  |
|  | 4 | **Areas 13A/B/C/D Leisure Pool Walls** |  | 2025-02-26 | 2025-05-05 |  |  |  |
| C-FDN-A13(ABCD)-1000 |  | Leisure pool wall North half | 5d | 2025-02-26 A | 2025-03-05 A | C-FDN-A13A-1000 FF, C-FDN-A5-1050, C-FDN-A12B-1040 FF, C-FDN-A12B-1020 | 100% |  |
| C-FDN-A13(ABCD)-1010 |  | Stand Forms - South Half | 4d | 2025-03-07 A | 2025-03-12 A | C-FDN-A12B-1040, C-FDN-A12B-1040 FF, C-FDN-A13(ABCD)-1000 | 100% |  |
| C-FDN-A13(ABCD)-1020 |  | Rebar - South Half | 3d | 2025-03-12 A | 2025-03-17 A | C-FDN-A13(ABCD)-1010 SS+6d | 100% |  |
| C-FDN-A13(ABCD)-1030 |  | Pool Mechanical Sleeving - South Half | 1d | 2025-03-12 A | 2025-03-12 A | C-FDN-A13(ABCD)-1010 FF | 100% |  |
| C-FDN-A13(ABCD)-1040 |  | Inspection - South Half | 1d | 2025-03-17 A | 2025-03-17 A | C-FDN-A13(ABCD)-1020 | 100% |  |
| C-FDN-A13(ABCD)-1050 |  | Bonding Study | 3d | 2025-03-17 A | 2025-03-17 A | C-FDN-A13(ABCD)-1040 | 100% |  |
| C-FDN-A13(ABCD)-1060 |  | Close - South Half | 2d | 2025-03-18 A | 2025-03-20 A | C-FDN-A13(ABCD)-1020, C-FDN-A13(ABCD)-1030, C-FDN-A13(ABCD)-1040, C-FDN-A13(ABCD)-1050 | 100% |  |
| C-FDN-A13(ABCD)-1070 |  | Pour 1 - South Half | 1d | 2025-03-20 A | 2025-03-20 A | C-FDN-A13(ABCD)-1060 FF | 100% |  |
| C-FDN-A13(ABCD)-1080 |  | Strip Bulkhead and close remaining forms - South Half | 5d | 2025-03-21 A | 2025-03-21 A | C-FDN-A13(ABCD)-1070 | 100% |  |
| C-FDN-A13(ABCD)-1090 |  | Pour 2 - South Half | 1d | 2025-03-24 A | 2025-03-24 A | C-FDN-A13(ABCD)-1060, C-FDN-A13(ABCD)-1080 FF | 100% |  |
| C-FDN-A14-1050 |  | Curing Time and Strip Form | 3d | 2025-05-05 A | 2025-05-05 A | X-LP-1020 | 100% |  |
|  | 6 | **Area-14 Leisure Pool Raft Slab - 450 Thick** |  | 2025-03-27 | 2025-06-17 |  |  |  |
| C-FDN-A14-1000 |  | Trenching mechanical | 2d | 2025-03-27 A | 2025-03-28 A | C-FDN-A13(ABCD)-1070 | 100% |  |
| C-FDN-A14-1010 |  | Pool Mechanical Piping and Main Drain (P4/ PC-PE) | 7d | 2025-04-04 A | 2025-04-11 A | P-PRO-820, C-FDN-A14-1000 | 100% |  |
| C-FDN-A14-1020 |  | Trenching weeping tile | 2d | 2025-04-14 A | 2025-04-16 A | C-FDN-A13(ABCD)-1070, C-FDN-A13(ABCD)-1080 | 100% |  |
| C-FDN-A14-1040 |  | Trench back fill | 1d | 2025-04-28 A | 2025-04-28 A | C-FDN-A14-1010, IPP-QAQC-195, X-LP-1000 | 100% |  |
| C-FDN-A14-1060 |  | 300mm Washed Rock Install | 2d | 2025-05-15 A | 2025-05-25 A | C-FDN-A14-1040, C-FDN-A12B-1040, C-FDN-A13(ABCD)-1070, C-FDN-A14-1000, C-FDN-A14-1020, C-FDN-A13(ABCD)-1080, C-FDN-A13(ABCD)-1090, X-LP-1020, C-FDN-A14-1050 | 100% |  |
| C-FDN-A14-1070 |  | Rebar | 3d | 2025-05-26 A | 2025-05-28 A | C-FDN-A14-1060 | 100% |  |
| C-FDN-A14-1080 |  | Bonding and Dialog Inspection | 2d | 2025-05-30 A | 2025-06-02 A | C-FDN-A14-1070 | 100% |  |
| C-FDN-A14-1090 |  | Pour and Finish | 5d | 2025-06-04 A | 2025-06-17 A | C-FDN-A14-1070, C-FDN-A14-1080 | 100% |  |
|  | 5 | **Area-15 Lazy River- WaterSlide C2 Thickening** |  | 2025-06-20 | 2025-07-19 |  |  |  |
| C-FDN-A15-1010 |  | Rebar and Inspection | 2d | 2025-06-20 A | 2025-06-24 A | C-FDN-A14-1090 | 100% |  |
| C-FDN-A15-1000 |  | Formwork | 5d | 2025-07-02 A | 2025-07-05 A | C-FDN-A13(ABCD)-1070, C-FDN-A13(ABCD)-1080, C-FDN-A13(ABCD)-1090, C-FDN-A14-1090 FS+2d, C-FDN-A15-1010 | 100% |  |

| ID | WBS | Task | Duration | Start | Finish | Predecessors | Complete |
| --- | --- | --- | --- | --- | --- | --- | --- |
| C-FDN-A15-1060 |  | WaterSlide Anchor Install | 5d | 2025-07-04 A | 2025-07-04 A | C-FDN-A15-1000 | 100% |
| C-FDN-A15-1070 |  | Bonding | 5d | 2025-07-04 A | 2025-07-04 A | C-FDN-A15-1060 | 100% |
| C-FDN-A15-1030 |  | Pour | 1d | 2025-07-10 A | 2025-07-10 A | C-FDN-A15-1000 FS+1d, C-FDN-A15-1060, X-A15-1000, X-A15-1010 FS+1d | 100% |
| C-FDN-A15-1050 |  | Cure | 3d | 2025-07-11 A | 2025-07-15 A | C-FDN-A15-1030 | 100% |
| C-FDN-A15-1040 |  | Strip | 2d | 2025-07-16 A | 2025-07-19 A | C-FDN-A15-1050 | 100% |
|  | 7 | **UNDERGROUND PIPING & EARTHWORKS** |  | 2025-05-22 | 2025-11-24 |  |  |
| C-FDN-NN-1050 |  | Leisure Pool Surge Tank Bushing Install | 5d | 2025-05-22 A | 2025-05-22 A |  | 100% |
| C-FDN-NN-1060 |  | Waterslide Drain Piping - Surge Tank to Last 45 | 1d | 2025-05-23 A | 2025-05-28 A |  | 100% |
| C-FDN-NN-1090 |  | Leisure Pool Gutter Piping - Surge Tank to Leisure Pool East | 2d | 2025-05-23 A | 2025-05-28 A | C-FDN-NN-1060, C-FDN-NN-1050 | 100% |
| C-FDN-NN-1010 |  | Core Missing Holes into North Basement Wall | 2d | 2025-06-03 A | 2025-06-05 A |  | 100% |
| C-FDN-NN-1070 |  | Fillcrete- Encase Water Slide Drain Piping | 1d | 2025-06-04 A | 2025-06-12 A | C-FDN-NN-1090 | 100% |
| C-FDN-NN-1020 |  | Complete Pool Piping Through North Basement Wall | 2d | 2025-06-05 A | 2025-06-06 A | C-FDN-NN-1010 | 100% |
| C-FDN-NN-1030 |  | Backfill NW Corner of Basement | 4d | 2025-06-09 A | 2025-06-19 A | C-FDN-NN-1020 | 100% |
| C-FDN-NN-1100 |  | Waterslide Inlet Piping - Leisure Pool to Waterslide | 2d | 2025-06-10 A | 2025-06-11 A | X-PIP-1000 | 100% |
| C-FDN-NN-1040 |  | Sanitary Line from S1A to Mechanical Room | 4d | 2025-06-17 A | 2025-06-19 A | C-FDN-NN-1020, C-FDN-NN-1030 | 100% |
| C-FDN-NN-1110 |  | Backfill Gutter and Inlet Trenches to U/S of Sanitary Piping | 2d | 2025-06-18 A | 2025-06-19 A | C-FDN-NN-1100 | 100% |
| C-FDN-NN-1680 |  | Formwork Close | 2d | 2025-10-12 A | 2025-10-17 A | C-FDN-NN-1660 | 100% |
| C-FDN-NN-1660 |  | Inside Gutter Formwork | 2d | 2025-10-16 A | 2025-10-17 A |  | 100% |
| C-FDN-NN-1690 |  | Pour | 1d | 2025-10-18 A | 2025-10-18 A | C-FDN-NN-1680 | 100% |
| C-FDN-NN-1700 |  | Grinding and Patching | 5d | 2025-10-19 A | 2025-11-24 A | C-FDN-NN-1660, C-FDN-NN-1680, C-FDN-NN-1690 | 100% |
|  | 5 | **Pool Piping** |  | 2025-06-28 | 2025-07-22 |  |  |
| C-FDN-NN-1500 |  | Trench for Pool Piping from Family Hot Tub to Basement | 2d | 2025-06-28 A | 2025-07-16 A |  | 100% |
| C-FDN-NN-1510 |  | Pool Piping from Family Tub to Basement | 4d | 2025-06-29 A | 2025-07-15 A | C-FDN-NN-1500 | 100% |
| C-FDN-NN-1520 |  | Fillcrete - Encase Pool Piping from Family Hot Tub to Basement | 1d | 2025-07-02 A | 2025-07-16 A | C-FDN-NN-1510 | 100% |
| C-FDN-NN-1530 |  | Backfill to U/S Main Sanitary Line Between Lap and Leisure Pools | 1d | 2025-07-17 A | 2025-07-17 A | C-FDN-NN-1520 | 100% |
| C-FDN-NN-1540 |  | Main Sanitary Line Between Lap and Leisure Pools | 3d | 2025-07-18 A | 2025-07-21 A | C-FDN-NN-1530 | 100% |
| C-FDN-NN-1550 |  | Sanitary Line Trench Backfill to U/S of SOG Prep | 1d | 2025-07-22 A | 2025-07-22 A | C-FDN-NN-1540, C-FDN-NN-1040 | 100% |
|  | 1 | **WATERSLIDE SUMP** |  | 2025-06-20 | 2025-07-15 |  |  |
| C-FDN-NN-1120 |  | Excavate for Waterslide Sump | 2d | 2025-06-20 A | 2025-06-22 A | C-FDN-NN-1030 SS+2d, X-PIP-1000 | 100% |
| C-FDN-NN-1560 |  | Mud Slab | 1d | 2025-06-23 A | 2025-06-23 A | C-FDN-NN-1120 | 100% |
|  | 1 | **Raft Slab** |  | 2025-06-23 | 2025-06-27 |  |  |
| C-FDN-NN-1130 |  | Waterslide Sump Raft Slab - Forming | 1d | 2025-06-23 A | 2025-06-23 A | C-FDN-NN-1120, C-FDN-NN-1560 | 100% |
| C-FDN-NN-1140 |  | Waterslide Sump Raft Slab - Rebar | 2d | 2025-06-25 A | 2025-06-25 A | C-FDN-NN-1130 | 100% |
| C-FDN-NN-1160 |  | Waterslide Sump Raft Slab - Pour and Finish | 1d | 2025-06-27 A | 2025-06-27 A | C-FDN-NN-1140 | 100% |
|  | 2 | **Walls** |  | 2025-07-02 | 2025-07-15 |  |  |
| C-FDN-NN-1170 |  | Waterslide Sump Walls - Forming | 1d | 2025-07-02 A | 2025-07-03 A | C-FDN-NN-1160 | 100% |
| C-FDN-NN-1180 |  | Waterslide Sump Walls - Rebar | 1d | 2025-07-03 A | 2025-07-04 A | C-FDN-NN-1170 | 100% |
| C-FDN-NN-1190 |  | Waterslide Sump Walls - Inspection | 1d | 2025-07-07 A | 2025-07-07 A | C-FDN-NN-1180 | 100% |
| C-FDN-NN-1200 |  | Waterslide Sump Walls - Formwork Close | 1d | 2025-07-08 A | 2025-07-08 A | C-FDN-NN-1190 | 100% |
| C-FDN-NN-1210 |  | Waterslide Sump Walls - Pour | 1d | 2025-07-09 A | 2025-07-09 A | C-FDN-NN-1200 | 100% |
| C-FDN-NN-1640 |  | Cure | 3d | 2025-07-10 A | 2025-07-10 A | C-FDN-NN-1210 | 100% |
| C-FDN-NN-1220 |  | Backfill Around Waterslide Sump | 1d | 2025-07-15 A | 2025-07-15 A | C-FDN-NN-1640, C-FDN-NN-1110 | 100% |
|  | 2 | **FAMILY WHIRLPOOL** |  | 2025-06-21 | 2025-11-10 |  |  |
|  | 2 | **Main Drain** |  | 2025-06-21 | 2025-06-27 |  |  |
| C-FDN-NN-1230 |  | Excavate for Family WP (if required) | 2d | 2025-06-21 A | 2025-06-21 A | C-FDN-NN-1120 | 100% |
| C-FDN-NN-1240 |  | Main Drain Sump Setting | 1d | 2025-06-22 A | 2025-06-23 A | C-FDN-NN-1230 | 100% |
| C-FDN-NN-1250 |  | Main Drain Sump Base Form and Pour | 1d | 2025-06-23 A | 2025-06-23 A | C-FDN-NN-1240 | 100% |
| C-FDN-NN-1260 |  | Main Drain Piping | 3d | 2025-06-25 A | 2025-06-27 A | C-FDN-NN-1250 SS, C-FDN-NN-1240 FF | 100% |
|  | 3 | **Raft Slab** |  | 2025-07-07 | 2025-07-31 |  |  |
| C-FDN-NN-1570 |  | Inlet Piping | 5d | 2025-07-07 A | 2025-07-08 A |  | 100% |
| C-FDN-NN-1280 |  | Raft Slab - Forming | 1d | 2025-07-07 A | 2025-07-18 A | C-FDN-NN-1260, X-FW-1000, C-FDN-NN-1580 SS | 100% |
| C-FDN-NN-1580 |  | Raft Slab Prep | 5d | 2025-07-09 A | 2025-07-09 A | C-FDN-NN-1570 | 100% |
| C-FDN-NN-1290 |  | Raft Slab - Rebar | 2d | 2025-07-19 A | 2025-07-29 A | C-FDN-NN-1280, X-FW-1010, X-FW-1020 | 100% |
| C-FDN-NN-1300 |  | Raft Slab - Rebar Inspection | 1d | 2025-07-30 A | 2025-07-30 A | C-FDN-NN-1290 | 100% |
| C-FDN-NN-1310 |  | Raft Slab - Pour | 1d | 2025-07-31 A | 2025-07-31 A | C-FDN-NN-1300 | 100% |
|  | 4 | **Wall & Bench** |  | 2025-08-05 | 2025-10-18 |  |  |
| C-FDN-NN-1320 |  | Wall & Bench - Inside Forming | 2d | 2025-08-05 A | 2025-08-06 A | C-FDN-NN-1310 | 100% |
| C-FDN-NN-1340 |  | Wall & Bench - Pipe Penetrations | 4d | 2025-08-05 A | 2025-08-12 A | C-FDN-NN-1330 | 100% |
| C-FDN-NN-1330 |  | Wall & Bench - Rebar (Inside Half) | 2d | 2025-08-13 A | 2025-08-13 A | C-FDN-NN-1320 | 100% |
| C-FDN-NN-1350 |  | Wall & Bench - Rebar (Outside Half) | 2d | 2025-08-13 A | 2025-08-13 A | C-FDN-NN-1340 | 100% |
| C-FDN-NN-1360 |  | Wall & Bench - Rebar Inspection | 1d | 2025-08-13 A | 2025-08-13 A | C-FDN-NN-1350 | 100% |
| C-FDN-NN-1380 |  | Wall & Bench - Formwork Close | 2d | 2025-08-14 A | 2025-08-28 A | C-FDN-NN-1360 SS, X-A10-1030 FF | 100% |
| C-FDN-NN-1370 |  | Wall & Bench - Bonding Study | 1d | 2025-09-12 A | 2025-09-12 A | C-FDN-NN-1360 | 100% |
| C-FDN-NN-1390 |  | Wall & Bench - Pour | 1d | 2025-09-25 A | 2025-10-08 A | C-FDN-NN-1380, C-FDN-NN-1370 | 100% |
| C-FDN-NN-1490 |  | Curing | 3d | 2025-10-09 A | 2025-10-14 A | C-FDN-NN-1390 | 100% |
| C-FDN-NN-1400 |  | Wall & Bench - Formwork Strip | 2d | 2025-10-15 A | 2025-10-18 A | C-FDN-NN-1390, C-FDN-NN-1490 | 100% |
|  | 6 | **Stair** |  | 2025-10-28 | 2025-11-10 |  |  |
| C-FDN-NN-1410 |  | Stair & Top of Wall - Forming | 2d | 2025-10-28 A | 2025-10-29 A | C-FDN-NN-1400 | 100% |
| C-FDN-NN-1430 |  | Stair & Top of Wall - Rebar | 2d | 2025-10-30 A | 2025-10-31 A | C-FDN-NN-1410 | 100% |
| C-FDN-NN-1440 |  | Stair & Top of Wall - Rebar Inspection | 1d | 2025-11-03 A | 2025-11-03 A | C-FDN-NN-1430 | 100% |

| ID | WBS | Task | Duration | Start | Finish | Predecessors | Complete |
| --- | --- | --- | --- | --- | --- | --- | --- |
| C-FDN-NN-1450 |  | Stair & Top of Wall - Bonding for Railings | 1d | 2025-11-06 A | 2025-11-06 A | C-FDN-NN-1440 FF | 100% |
| C-FDN-NN-1460 |  | Stair & Top of Wall - Formwork Close | 2d | 2025-11-07 A | 2025-11-07 A | C-FDN-NN-1450 | 100% |
| C-FDN-NN-1470 |  | Stair & Top of Wall - Pour | 1d | 2025-11-08 A | 2025-11-08 A | C-FDN-NN-1460 | 100% |
| C-FDN-NN-1650 |  | Cure | 3d | 2025-11-09 A | 2025-11-09 A | C-FDN-NN-1470 | 100% |
| C-FDN-NN-1480 |  | Stair & Top of Wall - Formwork Strip | 1d | 2025-11-10 A | 2025-11-10 A | C-FDN-NN-1650 | 100% |
|  | 1 | **SLAB ON GRADE- SOG S6/S2A** |  | 2025-07-15 | 2025-09-19 |  |  |
| C-FDN-NN-S6/S2A-1010 |  | Granular Slab Prep | 5d | 2025-07-15 A | 2025-07-19 A | C-FDN-NN-1220 FF | 100% |
| C-FDN-NN-S6/S2A-1020 |  | Vapour Barrier | 3d | 2025-07-20 A | 2025-07-21 A | C-FDN-NN-S6/S2A-1010 | 100% |
| C-FDN-NN-S6/S2A-1040 |  | Inslab Electrical | 1d | 2025-07-23 A | 2025-07-23 A | C-FDN-NN-S6/S2A-1020 | 100% |
| C-FDN-NN-S6/S2A-1030 |  | Rebar | 4d | 2025-07-28 A | 2025-08-07 A | C-FDN-NN-S6/S2A-1020 | 100% |
| C-FDN-NN-S6/S2A-1070 |  | Edgeform and Trench Drain Blockouts | 4d | 2025-08-09 A | 2025-09-11 A | C-FDN-NN-S6/S2A-1030 | 100% |
| C-FDN-NN-S6/S2A-1090 |  | Rebar Elevation Correction | 2d | 2025-08-11 A | 2025-08-12 A | C-FDN-NN-S6/S2A-1070 SS | 100% |
| C-FDN-NN-S6/S2A-1050 |  | Rebar Inspection | 1d | 2025-08-13 A | 2025-08-13 A | C-FDN-NN-S6/S2A-1030, C-FDN-NN-S6/S2A-1040 | 100% |
| C-FDN-NN-S6/S2A-1100 |  | Wedge Anchor and Anchor Bolts Install | 5d | 2025-08-13 A | 2025-08-13 A | C-FDN-NN-S6/S2A-1090 FF | 100% |
| C-FDN-NN-S6/S2A-1110 |  | Bonding | 5d | 2025-08-14 A | 2025-08-14 A | C-FDN-NN-S6/S2A-1090, C-FDN-NN-S6/S2A-1100 | 100% |
| C-FDN-NN-S6/S2A-1080 |  | Pour | 1d | 2025-09-12 A | 2025-09-12 A | C-FDN-NN-S6/S2A-1070, C-FDN-NN-S6/S2A-1110, C-FDN-NN-S6/S2A-1050 | 100% |
| C-FDN-NN-S6/S2A-1060 |  | Bonding Study above grade | 1d | 2025-09-19 A | 2025-09-19 A | C-FDN-NN-S6/S2A-1050, C-FDN-NN-S6/S2A-1080 FS+4d | 100% |
|  | 11 | **Area-9 South Gradebeam** |  | 2024-11-03 | 2025-01-28 |  |  |
| C-FDN-A9-1000 |  | Detailed Excavation | 1d | 2024-11-03 A | 2024-11-03 A | C-FDN-A20-1030 | 100% |
| C-FDN-A9-1010 |  | Scaffolding | 2d | 2024-11-06 A | 2024-11-19 A | C-FDN-A9-1000 | 100% |
| C-FDN-A9-1020 |  | Outside Forms | 2d | 2024-11-09 A | 2024-11-20 A | C-FDN-A9-1000 SS, C-FDN-A9-1010 SS, C-FDN-A9-1010 FF | 100% |
| C-FDN-A9-1030 |  | Rebar | 2d | 2024-11-14 A | 2024-11-21 A | C-FDN-A9-1020 SS, C-FDN-A9-1020 FF, C-FDN-A6-1060 | 100% |
| C-FDN-A9-1040 |  | Inspection | 1d | 2024-11-22 A | 2024-11-22 A | C-FDN-A9-1030 | 100% |
| C-FDN-A9-1050 |  | Inside Forms and Embeds | 1d | 2024-11-25 A | 2024-11-25 A | C-FDN-A9-1040 | 100% |
| C-FDN-A9-1060 |  | Concrete Pour | 1d | 2024-11-25 A | 2024-11-25 A | C-FDN-A9-1050 FF | 100% |
| C-FDN-A9-1070 |  | Strip | 1d | 2024-11-27 A | 2024-11-27 A | C-FDN-A9-1060 FS+1d | 100% |
| C-FDN-A9-1080 |  | Waterproofing | 2d | 2025-01-27 A | 2025-01-28 A | C-FDN-A9-1070, C-FDN-A9-1060 FS+10d, C-SS-PH3-1110, C-FDN-PH3-1000 SS, C-FDN-PH3-1010 | 100% |
|  | 14 | **Area-10A South Gradebeam** |  | 2024-11-01 | 2025-09-09 |  |  |
| C-FDN-A10A-1000 |  | Detailed Excavation | 1d | 2024-11-01 A | 2024-11-04 A | C-FDN-A9-1000 | 100% |
| C-FDN-A10A-1010 |  | Outside Forms | 2d | 2024-11-06 A | 2024-11-11 A | C-FDN-A10A-1000, C-FDN-A9-1020 | 100% |
| C-FDN-A10A-1020 |  | Rebar | 2d | 2024-11-11 A | 2024-11-14 A | C-FDN-A10A-1010 | 100% |
| C-FDN-A10A-1030 |  | Inspection | 1d | 2024-11-14 A | 2024-11-14 A | C-FDN-A10A-1020 | 100% |
| C-FDN-A10A-1040 |  | Inside Forms and Embeds | 1d | 2024-11-15 A | 2024-11-15 A | C-FDN-A10A-1030 | 100% |
| C-FDN-A10A-1050 |  | Concrete Pour | 1d | 2024-11-15 A | 2024-11-15 A | C-FDN-A10A-1040 FF | 100% |
| C-FDN-A10A-1060 |  | Strip | 1d | 2024-11-19 A | 2024-11-19 A | C-FDN-A10A-1050 FF | 100% |
| C-FDN-A10A-1070 |  | Waterproofing | 2d | 2025-09-08 A | 2025-09-09 A | C-FDN-A10A-1060, C-FDN-A10A-1050 FS+10d | 100% |
|  | 12 | **Area-10B South Gradebeam** |  | 2024-12-04 | 2025-10-10 |  |  |
| C-FDN-A10B-1000 |  | Detailed Excavation | 1d | 2024-12-04 A | 2024-12-04 A | C-FDN-A9-1000 FF, C-FDN-A20-1030, C-FDN-A7A-1040 | 100% |
| C-FDN-A10B-1010 |  | Outside Forms | 1d | 2024-12-05 A | 2024-12-05 A | C-FDN-A10B-1000 SS+1d | 100% |
| C-FDN-A10B-1020 |  | Rebar | 3d | 2024-12-06 A | 2024-12-10 A | C-FDN-A10B-1010 | 100% |
| C-FDN-A10B-1030 |  | Inspection | 1d | 2024-12-11 A | 2024-12-11 A | C-FDN-A10B-1020 | 100% |
| C-FDN-A10B-1040 |  | Inside Forms and Embeds | 1d | 2024-12-12 A | 2024-12-12 A | C-FDN-A10B-1030 | 100% |
| C-FDN-A10B-1050 |  | Concrete Pour | 1d | 2024-12-12 A | 2024-12-12 A | C-FDN-A10B-1040 FF | 100% |
| C-FDN-A10B-1060 |  | Strip | 2d | 2024-12-17 A | 2024-12-18 A | C-FDN-A10B-1050 FS+2d | 100% |
| C-FDN-A10B-1130 |  | Formwork | 5d | 2025-06-21 A | 2025-06-22 A | X-A10-1010 | 100% |
| C-FDN-A10B-1140 |  | Rebar | 5d | 2025-06-23 A | 2025-06-26 A | C-FDN-A10B-1130, X-RS-1000 | 100% |
| C-FDN-A10B-1080 |  | Pour | 1d | 2025-07-03 A | 2025-07-03 A | C-FDN-A10B-1050, C-FDN-A10B-1140, X-A10-1020 | 100% |
| C-FDN-A10B-1110 |  | Cure | 1d | 2025-07-04 A | 2025-07-07 A | C-FDN-A10B-1080 | 100% |
| C-FDN-A10B-1100 |  | Strip | 1d | 2025-07-08 A | 2025-07-08 A | C-FDN-A10B-1110 FF | 100% |
| C-FDN-A10B-1070 |  | Waterproofing | 1d | 2025-07-09 A | 2025-07-09 A | C-FDN-A10B-1060, C-FDN-A9-1070, P-PRO-149, C-FDN-A9-1080, C-FDN-A10B-1050 FS+10d, C-FDN-A5-1090, C-FDN-A10B-1100 | 100% |
| C-FDN-A10B-1090 |  | Backfilling Southgrade beam | 5d | 2025-10-06 A | 2025-10-10 A | C-FDN-A10B-1060, C-FDN-A9-1070, C-FDN-A10B-1070, C-FDN-A7A-1040, C-FDN-A5-1080, C-FDN-A5-1090, C-FDN-ACB-1160 FF | 100% |
|  | 6 | **Area-11 ELEVATOR PIT** |  | 2024-08-16 | 2025-04-14 |  |  |
| C-FDN-A11-1000 |  | Stock Pile Removal | 2d | 2024-08-16 A | 2024-08-19 A | C-FDN-A11-1010 | 100% |
| C-FDN-A11-1010 |  | Pile 43 Remediation | 1d | 2024-08-20 A | 2024-08-23 A | P-TEA-4 | 100% |
| C-FDN-A11-1020 |  | Detailed Excavation | 2d | 2024-08-26 A | 2024-08-27 A | C-FDN-A11-1000, C-FDN-A11-1010 FF | 100% |
| C-FDN-A11-1030 |  | Formwork | 4d | 2024-08-28 A | 2024-09-03 A | C-FDN-A11-1020 | 100% |
| C-FDN-A11-1040 |  | Rebar | 4d | 2024-09-04 A | 2024-09-09 A | C-FDN-A11-1030 | 100% |
| C-FDN-A11-1050 |  | Pour | 1d | 2024-09-17 A | 2024-09-17 A | C-FDN-A11-1040 | 100% |
| C-FDN-A11-1060 |  | Waterproofing | 10d | 2024-10-08 A | 2024-10-16 A | C-FDN-A11-1050, P-PRO-149 | 100% |
| C-FDN-A11-1070 |  | Ground Thaw, Sump-Pit & Piping and Test | 5d | 2025-02-13 A | 2025-02-20 A | C-FDN-A11-1090 SS | 100% |
| C-FDN-A11-1080 |  | Backfilling | 2d | 2025-02-21 A | 2025-02-24 A | C-FDN-A11-1060, C-FDN-A11-1090, C-FDN-A11-1070 | 100% |
| C-FDN-A11-1090 |  | Install of Elevator Sump-Pit | 3d | 2025-04-10 A | 2025-04-14 A | C-FDN-A11-1060, C-FDN-A20-1130, C-SS-PH2-1060, C-SS-PH2-1100, C-FDN-PH1-1010 SS | 100% |
|  | 9 | **Area-18 - Out Door Hot Slab & Walls** |  | 2024-11-01 | 2025-12-01 |  |  |
| C-FDN-A18-1000 |  | Piling | 1d | 2024-11-01 A | 2024-11-01 A | C-FDN-1020 FF, C-FDN-A20-1040 FF, C-FDN-A20-1040 | 100% |
|  | 1 | **Main Drain** |  | 2025-07-15 | 2025-07-24 |  |  |
| C-FDN-A18-1320 |  | Main Drain Sump Base Form and Pour | 1d | 2025-07-15 A | 2025-07-15 A | C-FDN-SN-UG-1120 | 100% |
| C-FDN-A18-1330 |  | Main Drain Sump Setting | 2d | 2025-07-16 A | 2025-07-16 A | C-FDN-SN-UG-1100, C-FDN-A18-1320 | 100% |
| C-FDN-A18-1310 |  | Main Drain Piping | 5d | 2025-07-17 A | 2025-07-22 A | C-FDN-A18-1330 | 100% |
| C-FDN-A18-1300 |  | Fillcrete - Encase Main Drain Piping | 1d | 2025-07-23 A | 2025-07-24 A | C-FDN-A18-1310, C-FDN-A18-1350 | 100% |
| C-FDN-A18-1350 |  | Insulation | 5d | 2025-07-23 A | 2025-07-24 A | C-FDN-A18-1310 | 100% |

| ID | WBS | Task | Duration | Start | Finish | Predecessors | Complete |
| --- | --- | --- | --- | --- | --- | --- | --- |
|  | 2 | **Raft Slab** |  | 2025-07-28 | 2025-09-11 |  |  |
| C-FDN-A18-1290 |  | Slab - Forming and Modifications | 2d | 2025-07-28 A | 2025-09-10 A | C-FDN-A18-1300, C-FDN-A18-1360 FF+2d | 100% |
| C-FDN-A18-1280 |  | Slab - Rebar | 2d | 2025-08-06 A | 2025-08-10 A | C-FDN-A18-1290 SS | 100% |
| C-FDN-A18-1360 |  | Procurement of Water Stop Material (Arctic grade) | 5d | 2025-08-11 A | 2025-09-10 A |  | 100% |
| C-FDN-A18-1270 |  | Slab - Rebar Inspection | 1d | 2025-08-13 A | 2025-08-13 A | C-FDN-A18-1280 | 100% |
| C-FDN-A18-1260 |  | Slab - Pour | 1d | 2025-09-11 A | 2025-09-11 A | C-FDN-A18-1270, C-FDN-A18-1290 | 100% |
|  | 3 | **Bench & Wall** |  | 2025-09-10 | 2025-10-10 |  |  |
| C-FDN-A18-1250 |  | Wall & Bench (Includes Trench) - Inside Forming | 2d | 2025-09-10 A | 2025-09-11 A | C-FDN-A18-1260 | 100% |
| C-FDN-A18-1240 |  | Wall & Bench (Includes Trench) - Rebar (Inside Half) | 2d | 2025-09-12 A | 2025-09-13 A | C-FDN-A18-1250 | 100% |
| C-FDN-A18-1230 |  | Wall & Bench (Includes Trench) - Pipe Penetrations | 5d | 2025-09-14 A | 2025-09-18 A | C-FDN-A18-1240 | 100% |
| C-FDN-A18-1220 |  | Wall & Bench (Includes Trench)- Rebar (Outside Half) | 2d | 2025-09-19 A | 2025-09-20 A | C-FDN-A18-1230 | 100% |
| C-FDN-A18-1210 |  | Wall & Bench (Includes Trench) - Rebar Inspection | 1d | 2025-09-21 A | 2025-09-21 A | C-FDN-A18-1220 | 100% |
| C-FDN-A18-1200 |  | Wall & Bench (Includes Trench)- Bonding Study | 2d | 2025-09-22 A | 2025-09-23 A | C-FDN-A18-1210 | 100% |
| C-FDN-A18-1190 |  | Wall & Bench (Includes Trench) - Formwork Close | 2d | 2025-09-24 A | 2025-09-25 A | C-FDN-A18-1200 | 100% |
| C-FDN-A18-1180 |  | Wall & Bench (Includes Trench) - Pour | 3d | 2025-10-06 A | 2025-10-06 A | C-FDN-A18-1190 | 100% |
| C-FDN-A18-1160 |  | Backfill Around Outdoor WP and Complete to U/S of SOG Prep | 1d | 2025-10-08 A | 2025-10-10 A | C-FDN-A18-1170 | 100% |
| C-FDN-A18-1170 |  | Wall & Bench (Includes Trench) - Formwork Strip | 1d | 2025-10-08 A | 2025-10-08 A | C-FDN-A18-1180 | 100% |
|  | 4 | **Stair** |  | 2025-11-10 | 2025-12-01 |  |  |
| C-FDN-A18-1150 |  | Stair - Forming | 1d | 2025-11-10 A | 2025-11-13 A | C-FDN-A18-1170, C-SW-1090 | 100% |
| C-FDN-A18-1130 |  | Stair - Rebar | 1d | 2025-11-14 A | 2025-11-14 A | C-FDN-A18-1150 | 100% |
| C-FDN-A18-1120 |  | Stair - Rebar Inspection | 1d | 2025-11-17 A | 2025-11-17 A | C-FDN-A18-1130 FF | 100% |
| C-FDN-A18-1090 |  | Stair - Pour | 0d | 2025-11-18 A | 2025-11-18 A | C-FDN-A18-1110, C-FDN-A18-1120 | 100% |
| C-FDN-A18-1110 |  | Stair - Bonding for Railings | 1d | 2025-11-21 A | 2025-11-21 A | C-FDN-A18-1120 FF-5d, C-FDN-NN-1450 FF | 100% |
| C-FDN-A18-1080 |  | Stair - Formwork Strip | 1d | 2025-11-24 A | 2025-11-24 A | C-FDN-A18-1090 | 100% |
| C-FDN-A18-1340 |  | Stair- Cure | 4d | 2025-11-25 A | 2025-12-01 A | C-FDN-A18-1080 | 100% |
|  | 7 | **CONCRETE SLABS** |  | 2025-02-10 | 2025-10-09 |  |  |
|  | 1 | **S1 Grey - Slab on Grade S1A** |  | 2025-02-10 | 2025-05-02 |  |  |
| C-SOG-1000 |  | Ground Thaw | 1d | 2025-02-10 A | 2025-02-10 A | C-FDN-PH1-1000, C-FDN-PH3-1010 | 100% |
| C-SOG-1010 |  | Weeping tile and Storm line Work | 5d | 2025-02-11 A | 2025-03-25 A | C-SOG-1000 | 100% |
| C-SOG-1020 |  | Mechanical Drainage Installation & Floor Drain Installation | 5d | 2025-03-26 A | 2025-04-04 A | C-SS-PH1-1070, C-SOG-1010 | 100% |
| C-SOG-1030 |  | Backfilling | 1d | 2025-04-09 A | 2025-04-09 A | C-SS-PH1-1070, C-SOG-1020, C-FDN-PH1-1010 | 100% |
| C-SOG-1040 |  | Subgrade Granular | 2d | 2025-04-11 A | 2025-04-14 A | C-FDN-A11-1050, C-SOG-1030, C-FDN-A11-1090, C-FDN-A11-1080 | 100% |
| C-SOG-1050 |  | Vapour Barrier and Edgeform | 2d | 2025-04-25 A | 2025-04-28 A | C-SOG-1040 FF, C-FDN-A11-1050 | 100% |
| C-SOG-1060 |  | Rebar | 4d | 2025-04-28 A | 2025-04-30 A | C-SOG-1050, P-PRO-147 SS | 100% |
| C-SOG-1070 |  | Inspection | 1d | 2025-04-30 A | 2025-04-30 A | C-SOG-1060 | 100% |
| C-SOG-1080 |  | Pour and Finish | 2d | 2025-04-30 A | 2025-04-30 A | C-SOG-1070, C-SOG-1090 | 100% |
| C-SOG-1090 |  | Install Electrical | 2d | 2025-04-30 A | 2025-04-30 A | C-SOG-1060 | 100% |
| C-SOG-1100 |  | Sawcuts | 2d | 2025-05-01 A | 2025-05-02 A | C-SOG-1080 | 100% |
|  | 4 | **Slab on Grade S2A/S6 and 250 Thick Slab on Grade** |  |  |  |  |  |
|  | 5 | **S1 White - Slab on Grade S1C/S1D** |  | 2025-07-28 | 2025-10-09 |  |  |
| C-SOG-S1C/D-1000 |  | Subgrade Granular | 5d | 2025-07-28 A | 2025-08-13 A | C-FDN-NN-1550 | 100% |
| C-SOG-S1C/D-1010 |  | Vapour Barrier | 3d | 2025-08-13 A | 2025-08-15 A | C-SOG-S1C/D-1000 | 100% |
| C-SOG-S1C/D-1020 |  | Rebar | 4d | 2025-08-18 A | 2025-09-25 A | C-SOG-S1C/D-1010 | 100% |
| C-SOG-S1C/D-1060 |  | Pour and Finish | 1d | 2025-09-19 A | 2025-10-09 A | C-SOG-S1C/D-1040, C-SOG-S1C/D-1050 FF | 100% |
| C-SOG-S1C/D-1040 |  | Inspection | 1d | 2025-09-25 A | 2025-09-25 A | C-SOG-S1C/D-1020 | 100% |
| C-SOG-S1C/D-1050 |  | EdgeForm- Trench Drain Blockouts | 3d | 2025-10-01 A | 2025-10-08 A | C-SOG-S1C/D-1040 | 100% |
| C-SOG-S1C/D-1070 |  | Sawcuts | 1d | 2025-10-09 A | 2025-10-09 A | C-SOG-S1C/D-1060, C-SOG-S1C/D-1050 | 100% |
|  | 6 | **S1 Grey - Slab on Grade S1B** |  | 2025-08-10 | 2025-09-03 |  |  |
| C-SOG-S1B-1000 |  | Subgrade Granular | 2d | 2025-08-10 A | 2025-08-12 A | C-SOG-S1C/D-1000 | 100% |
| C-SOG-S1B-1010 |  | Vapour Barrier and Edgeform | 2d | 2025-08-13 A | 2025-08-15 A | C-SOG-S1B-1000 FF | 100% |
| C-SOG-S1C/D-1030 |  | Install Electrical | 2d | 2025-08-18 A | 2025-08-19 A | C-SOG-S1B-1010 | 100% |
| C-SOG-S1B-1020 |  | Rebar | 3d | 2025-08-20 A | 2025-08-22 A | C-SOG-S1B-1010, C-SOG-1080, C-SS-PH3-1110, C-SOG-1100, C-FDN-PH3-1000 SS, C-FDN-PH3-1010, C-SOG-1020, C-SOG-S1C/D-1030 | 100% |
| C-SOG-S1B-1030 |  | Inspection | 1d | 2025-08-25 A | 2025-08-25 A | C-SOG-S1B-1020 | 100% |
| C-SOG-S1B-1040 |  | Pour and Finish | 2d | 2025-09-02 A | 2025-09-02 A | C-SOG-S1B-1030 | 100% |
| C-SOG-S1B-1050 |  | Sawcuts | 1d | 2025-09-03 A | 2025-09-03 A | C-SOG-S1B-1040 | 100% |
|  | 15 | **Ground Thaw** |  | 2024-12-19 | 2025-02-28 |  |  |
|  | 1 | **PH1 & 2** |  | 2024-12-19 | 2025-02-14 |  |  |
| C-FDN-PH1-1000 |  | Tarp Enclosure | 5d | 2024-12-19 A | 2024-12-24 A | C-SS-PH2-1100, C-SS-PH1-1070 | 100% |
| C-FDN-PH1-1010 |  | Ground Thaw | 10d | 2025-01-13 A | 2025-02-14 A | C-FDN-PH1-1000 | 100% |
|  | 2 | **PH3** |  | 2025-01-15 | 2025-02-28 |  |  |
| C-FDN-PH3-1000 |  | Ground Thaw | 10d | 2025-01-15 A | 2025-02-28 A |  | 100% |
| C-FDN-PH3-1010 |  | Tarp Enclosure | 5d | 2025-01-17 A | 2025-01-23 A | C-SS-PH3-1110 SS+2d | 100% |
|  | 5 | **Architectural Concrete Bases** |  | 2025-06-03 | 2025-10-10 |  |  |
| C-FDN-ACB-1000 |  | North Elevation - Anchor Rods | 1d | 2025-06-03 A | 2025-06-03 A | C-FDN-A20-1140 | 100% |
| C-FDN-ACB-1010 |  | North Elevation - Rebar Mat | 1d | 2025-06-04 A | 2025-06-04 A | C-FDN-ACB-1000 | 100% |
| C-FDN-ACB-1020 |  | North Elevation - Formwork Close | 1d | 2025-06-04 A | 2025-06-04 A | C-FDN-ACB-1010 | 100% |
| C-FDN-ACB-1030 |  | North Elevation - Pour and Finish | 2d | 2025-07-02 A | 2025-07-03 A | C-FDN-ACB-1020 FS+1d, C-FDN-ACB-1180 | 100% |
| C-FDN-ACB-1050 |  | North Elevation - Backfill and Rough Subgrade | 2d | 2025-07-03 A | 2025-07-03 A | C-FDN-ACB-1040 | 100% |
| C-FDN-ACB-1040 |  | North Elevation - Formwork Strip | 1d | 2025-07-04 A | 2025-07-04 A | C-FDN-ACB-1030 | 100% |
| C-FDN-ACB-1060 |  | East Elevation - Anchor Rods | 2d | 2025-08-14 A | 2025-08-15 A | C-FDN-ACB-1050 | 100% |

| ID | WBS | Task | Duration | Start | Finish | Predecessors | Complete | Total float |
| --- | --- | --- | --- | --- | --- | --- | --- | --- |
| C-FDN-ACB-1070 |  | East Elevation - Rebar Mat | 2d | 2025-08-18 A | 2025-08-19 A | C-FDN-ACB-1060 | 100% |  |
| C-FDN-ACB-1110 |  | South Elevation - Anchor Rods | 1d | 2025-09-03 A | 2025-09-04 A | C-FDN-A10A-1070 | 100% |  |
| C-FDN-ACB-1080 |  | East Elevation - Formwork Close | 2d | 2025-09-08 A | 2025-09-10 A | C-FDN-ACB-1070 | 100% |  |
| C-FDN-ACB-1090 |  | East Elevation - Pour and Finish | 1d | 2025-09-11 A | 2025-09-12 A | C-FDN-ACB-1080 | 100% |  |
| C-FDN-ACB-1100 |  | East Elevation - Formwork Strip | 2d | 2025-09-13 A | 2025-09-15 A | C-FDN-ACB-1090 | 100% |  |
| C-FDN-ACB-1120 |  | South Elevation - Rebar Mat | 1d | 2025-09-17 A | 2025-09-17 A | C-FDN-ACB-1110 | 100% |  |
| C-FDN-ACB-1130 |  | South Elevation - Formwork Close | 1d | 2025-09-18 A | 2025-09-18 A | C-FDN-ACB-1120 | 100% |  |
| C-FDN-ACB-1140 |  | South Elevation - Pour and Finish | 1d | 2025-09-19 A | 2025-09-19 A | C-FDN-ACB-1130 | 100% |  |
| C-FDN-ACB-1150 |  | South Elevation - Formwork Strip | 1d | 2025-09-22 A | 2025-09-22 A | C-FDN-ACB-1140 | 100% |  |
| C-FDN-ACB-1160 |  | East and South Elevation - Backfill and Rough Subgrade | 3d | 2025-09-26 A | 2025-10-10 A | C-FDN-ACB-1150, C-FDN-SN-UG-1120 FF, C-FDN-ACB-1100 | 100% |  |
|  | 8 | **Area-20 FRONT ENTRANCE WORK (FOUNDATIONS)** |  | 2024-10-16 | 2025-10-08 |  |  |  |
| C-FDN-A20-1000 |  | Glazing Modifications | 2d | 2024-10-16 A | 2024-10-17 A |  | 100% |  |
| C-FDN-A20-1010 |  | Demolition | 3d | 2024-10-17 A | 2024-10-22 A | C-FDN-A20-1020 | 100% |  |
| C-FDN-A20-1020 |  | Main Entrance Closure | 0d | 2024-10-17 A | 2024-10-17 A | WX-1030, WX-1040, C-FDN-A20-1000 FF | 100% |  |
| C-FDN-A20-1030 |  | Slab Removal | 1d | 2024-10-22 A | 2024-10-23 A | C-FDN-A20-1020 SS, C-FDN-A20-1010 | 100% |  |
| C-FDN-A20-1040 |  | Piling | 2d | 2024-10-24 A | 2024-10-31 A | C-FDN-A20-1030 FS+1d, X-PIL-1000 | 100% |  |
| C-FDN-A20-1050 |  | Excavation for Pile Cap | 5d | 2024-11-01 A | 2024-11-02 A | C-FDN-A20-1040 | 100% |  |
| C-FDN-A20-1060 |  | Pile Cap Fomrwork | 5d | 2024-11-02 A | 2024-11-03 A | C-FDN-A20-1050 | 100% |  |
| C-FDN-A20-1070 |  | Pile Cap Repair | 5d | 2024-11-03 A | 2024-11-04 A | C-FDN-A20-1060 | 100% |  |
| C-FDN-A20-1080 |  | Pile Cap Closing Formwork | 5d | 2024-11-05 A | 2024-11-05 A | C-FDN-A20-1070 | 100% |  |
| C-FDN-A20-1090 |  | Pile Cap Pouring | 5d | 2024-11-06 A | 2024-11-06 A | C-FDN-A20-1070, C-FDN-A20-1080 | 100% |  |
| C-FDN-A20-1100 |  | Gradebeam Formwork Outside | 2d | 2024-11-07 A | 2024-11-08 A | C-FDN-A20-1040, C-FDN-A20-1090 | 100% |  |
| C-FDN-A20-1110 |  | Rebar | 2d | 2024-11-08 A | 2024-11-13 A | C-FDN-A20-1100 FF+1d | 100% |  |
| C-FDN-A20-1120 |  | Gradebeam Formwork Closure | 1d | 2024-11-13 A | 2024-11-14 A | C-FDN-A20-1110 FF | 100% |  |
| C-FDN-A20-1130 |  | Gradebeam Pour | 1d | 2024-11-14 A | 2024-11-14 A | C-FDN-A20-1110, C-FDN-A20-1120 | 100% |  |
| C-FDN-A20-1150 |  | Electrical Trenches and Conduit | 5d | 2025-05-06 A | 2025-05-07 A | C-FDN-A20-1130 | 100% |  |
| C-FDN-A20-1140 |  | Entrance Canopy Piles cap | 7d | 2025-05-20 A | 2025-05-27 A | C-ENV-SID-CL-N-1000 FF | 100% |  |
| C-FDN-A20-1160 |  | Backfill and Rough Subgrade | 1d | 2025-07-20 A | 2025-07-20 A | C-FDN-A20-1140, C-FDN-A20-1150 | 100% |  |
| C-FDN-A20-1170 |  | Entrance Canopy Steel | 16d | 2025-07-21 A | 2025-07-26 A | C-FDN-A20-1160, C-ENV-SID-CL-N-1010, C-FDN-ACB-1050 | 100% |  |
| C-FDN-A20-1220 |  | Canopy Decking | 3d | 2025-08-11 A | 2025-09-03 A | C-FDN-A20-1170 | 100% |  |
| C-FDN-A20-1230 |  | Rebar Modification to Apron Slab | 1d | 2025-08-14 A | 2025-08-14 A | C-FDN-A20-1160, C-FDN-A20-1110 | 100% |  |
| C-FDN-A20-1240 |  | Pour Apron Slab | 1d | 2025-08-28 A | 2025-08-28 A | C-FDN-A20-1230 | 100% |  |
| C-FDN-A20-1180 |  | Slab Prep | 3d | 2025-09-20 A | 2025-09-23 A | C-FDN-A20-1130 FS+2d, P-PRO-147 SS, C-SS-PH1-1070, C-SOG-1040 SS, C-FDN-PH1-1010, C-FDN-A20-1170, C-ENV-SID-CL-N-1020 SF, C-FDN-A20-1240 | 100% |  |
| C-FDN-A20-1250 |  | Insulation | 0d | 2025-09-24 A | 2025-10-02 A |  | 100% |  |
| C-FDN-A20-1190 |  | Rebar & Inspection | 3d | 2025-09-27 A | 2025-10-02 A | C-FDN-A20-1180, C-FDN-A20-1250 FS-2d | 100% |  |
| C-FDN-A20-1210 |  | Install Heating | 6d | 2025-10-01 A | 2025-10-06 A | C-FDN-A20-1180, C-SS-PH2-1100, C-FDN-A20-1190 | 100% |  |
| C-FDN-A20-1200 |  | Slab Pour | 1d | 2025-10-06 A | 2025-10-08 A | C-FDN-A20-1210, C-FDN-A20-1180, C-SS-PH2-1100 | 100% |  |
|  | 2 | **SUPERSTRUCTURE (CORE AND SHELL)** |  | 2024-11-12 | 2026-02-20 |  |  |  |
|  | 1 | **STEEL STRUCTURE** |  | 2024-11-12 | 2025-01-21 |  |  |  |
|  | 1 | **Phase 1 - PA-PD / P1-P5** |  | 2024-11-12 | 2024-12-12 |  |  |  |
| C-SS-PH1-1000 |  | Off-Loading & Shakeout | 2d | 2024-11-12 A | 2024-11-18 A | P-PRO-30 FF+2d, P-PRO-42 | 100% |  |
| C-SS-PH1-1030 |  | Standing Steel | 4d | 2024-11-19 A | 2024-11-25 A | P-PRO-42, P-PRO-30, C-FDN-A20-1130, C-SS-PH1-1000, C-SS-PH2-1020, X-CR-1000 FF+3d | 100% |  |
| C-SS-PH1-1050 |  | Bolting Torquing | 8d | 2024-12-02 A | 2024-12-07 A | P-PRO-30, C-SS-PH1-1030, C-SS-PH2-1040 | 100% |  |
| C-SS-PH1-1070 |  | Decking | 4d | 2024-12-09 A | 2024-12-12 A | C-SS-PH1-1050 | 100% |  |
|  | 3 | **Phase 2 - PD-PG / P1-P5** |  | 2024-11-18 | 2024-12-21 |  |  |  |
| C-SS-PH2-1020 |  | Off-Loading & Shakeout | 1d | 2024-11-18 A | 2024-11-18 A | P-PRO-1454, C-SS-PH1-1000 FF | 100% |  |
| C-SS-PH2-1040 |  | Standing Steel | 3d | 2024-11-26 A | 2024-12-06 A | P-PRO-30, P-PRO-42, C-SS-PH1-1030, P-PRO-30 FF, P-PRO-1454, C-SS-PH2-1020, C-SS-PH2-1020 FF, P-PRO-1514 | 100% |  |
| C-SS-PH2-1060 |  | Bolting Torquing | 1.88d | 2024-12-08 A | 2024-12-09 A | C-SS-PH2-1040, C-SS-PH1-1050, C-SS-PH1-1050 FF | 100% |  |
| C-SS-PH2-1100 |  | Decking | 2d | 2024-12-20 A | 2024-12-21 A | C-SS-PH2-1060, C-SS-PH1-1070 | 100% |  |
|  | 2 | **Phase 3 - PA-PG / P5-P9** |  | 2024-11-12 | 2025-01-21 |  |  |  |
| C-SS-PH3-1010 |  | Off-Loading & Shakeout | 2d | 2024-11-12 A | 2024-11-18 A | P-PRO-1464 | 100% |  |
| C-SS-PH3-1080 |  | Standing Steel | 7d | 2024-12-09 A | 2024-12-18 A | C-SS-PH2-1040, P-PRO-42, C-SS-PH2-1040 FF, P-PRO-30, C-FDN-A9-1060, C-FDN-A9-1070, P-PRO-1464, C-FDN-A9-1070 FF, C-FDN-A10A-1060, C-FDN-A7A-1040 FS+1d, C-SS-PH3-1010, P-PRO-1524, C-SS-PH2-1060 | 100% |  |
| C-SS-PH3-1090 |  | Bolting Torquing | 11d | 2024-12-18 A | 2025-01-08 A | C-SS-PH3-1080, C-SS-PH2-1060 | 100% |  |
| C-SS-PH3-1110 |  | Decking | 7d | 2025-01-08 A | 2025-01-21 A | C-SS-PH3-1090 SS+1d | 100% |  |
|  | 2 | **BUILDING ENVELOPE** |  | 2025-01-14 | 2026-02-20 |  |  |  |
| C-ENV-GL-1000 |  | Exterior Glazing Finishing | 10d | 2026-01-26 | 2026-02-06 | C-ENV-SID-CL-S-1040 |  | 94d |
|  | 1 | **Roofing** |  | 2025-01-14 | 2025-08-27 |  |  |  |
|  | 1 | **North Side** |  | 2025-01-14 | 2025-08-27 |  |  |  |
| C-ENV-RF-N-1000 |  | Parapets (North Side) | 10d | 2025-01-14 A | 2025-01-27 A | C-SS-PH1-1070 SS, C-SS-PH2-1100 SS, C-ENV-SID-EW-N-1000 SS, MIL-C-480 | 100% |  |
| C-ENV-RF-N-1010 |  | Install Vestibule coverboard and vapour barrier | 1d | 2025-02-28 A | 2025-02-28 A | C-ENV-RF-N-1000, C-ENV-RF-E&S-1020, MIL-C-480 | 100% |  |
| C-ENV-RF-N-1020 |  | Install Vestibule roofing assembly- 1st Fix | 5d | 2025-05-12 A | 2025-06-17 A | C-ENV-RF-N-1010, C-ENV-RF-E&S-1000 | 100% |  |
| C-ENV-RF-N-1030 |  | Mockup | 5d | 2025-06-18 A | 2025-06-18 A |  | 100% |  |
| C-ENV-RF-N-1040 |  | Exterior Wall Mock Up Inspection | 3d | 2025-06-24 A | 2025-06-24 A | C-ENV-RF-N-1030, X-ENV-1160 | 100% |  |
| C-ENV-RF-N-1050 |  | N- Exterior Wall Mock Up Approval | 5d | 2025-06-24 A | 2025-06-24 A | C-ENV-RF-N-1040 | 100% |  |
| C-ENV-RF-N-1060 |  | N- Install Vestibule roofing assembly- 2nd Fix | 0d | 2025-06-26 A | 2025-08-27 A | C-ENV-RF-N-1050 | 100% |  |
|  | 2 | **Part of East Side** |  | 2025-01-16 | 2025-02-28 |  |  |  |
| C-ENV-RF-E-1000 |  | Parapets Part of East Side) 1st Part | 10d | 2025-01-16 A | 2025-01-24 A | C-ENV-RF-N-1000, C-SS-PH2-1100, C-ENV-SID-EW-E-1000 SS, MIL-C-480 | 100% |  |
| C-ENV-RF-E-1010 |  | Parapets Part of East Side) 2nd Part | 4d | 2025-01-22 A | 2025-01-27 A | C-ENV-RF-N-1000, C-ENV-SID-EW-E-1010 FF, C-ENV-RF-E-1000, MIL-C-480 | 100% |  |
| C-ENV-RF-E-1020 |  | Mechanical Curbs, Roof Drain and Vent Installation | 2d | 2025-02-14 A | 2025-02-18 A | MIL-C-480 | 100% |  |
| C-ENV-RF-E-1030 |  | Install North coverboard and vapour barrier | 3d | 2025-02-20 A | 2025-02-21 A | P-PRO-153, C-SS-PH2-1100, C-SS-PH3-1110, C-ENV-RF-E-1020, C-FDN-PH3-1010, MIL-C-480 | 100% |  |

| ID | WBS | Task | Duration | Start | Finish | Predecessors | Complete | Total float |
| --- | --- | --- | --- | --- | --- | --- | --- | --- |
| C-ENV-RF-E-1040 |  | Install North roofing assembly | 10d | 2025-02-24 A | 2025-02-28 A | C-SS-PH3-1110, P-PRO-153, C-SS-PH2-1100, C-ENV-RF-E-1030, C-FDN-PH3-1000 SS | 100% |  |
|  | 3 | **Rest of East Side and South Side** |  | 2025-03-03 | 2025-03-28 |  |  |  |
| C-ENV-RF-E&S-1000 |  | Install South coverboard and vapour barrier | 4d | 2025-03-03 A | 2025-03-10 A | C-ENV-RF-E-1030, C-ENV-RF-E-1040, MIL-C-480 | 100% |  |
| C-ENV-RF-E&S-1010 |  | Install South roofing assembly | 9d | 2025-03-11 A | 2025-03-21 A | C-ENV-RF-E&S-1000, C-ENV-RF-E-1040 | 100% |  |
| C-ENV-RF-E&S-1020 |  | Install West coverboard and vapour barrier | 1d | 2025-03-27 A | 2025-03-27 A | C-ENV-RF-E-1040 | 100% |  |
| C-ENV-RF-E&S-1030 |  | Install West roofing assembly | 2d | 2025-03-27 A | 2025-03-28 A | C-ENV-RF-E&S-1020, C-ENV-RF-E&S-1010 | 100% |  |
|  | 2 | **North Side** |  | 2025-01-28 | 2026-02-20 |  |  |  |
|  | 3 | **Exterior Wall** |  | 2025-01-28 | 2025-02-27 |  |  |  |
| C-ENV-SID-EW-N-1000 |  | Exterior Wall Framing,Bording | 10d | 2025-01-28 A | 2025-02-27 A | C-SS-PH1-1070, P-PRO-157, C-SS-PH2-1100 | 100% |  |
|  | Glazing | **Glazing** |  | 2025-04-15 | 2025-07-16 |  |  |  |
| C-ENV-SID-GL-N-1010 |  | N- Curtain Wall Framing | 7d | 2025-04-15 A | 2025-06-30 A | P-PRO-196, C-ENV-SID-EW-N-1000, IPP-SAFE-179 | 100% |  |
| C-ENV-SID-GL-N-1040 |  | N- Curtain Wall Glass | 6d | 2025-07-07 A | 2025-07-16 A | P-PRO-156, C-ENV-SID-GL-N-1010 | 100% |  |
|  | 1 | **Clading** |  | 2025-04-23 | 2026-02-20 |  |  |  |
| C-ENV-SID-CL-N-1000 |  | AVB Membrane | 4d | 2025-04-23 A | 2025-05-30 A | C-ENV-SID-EW-N-1000, C-ENV-RF-N-1000 | 100% |  |
| C-ENV-SID-CL-N-1010 |  | N- Z-girts and insulation | 8d | 2025-05-31 A | 2025-07-04 A | C-ENV-SID-CL-N-1000 | 100% |  |
| C-ENV-SID-CL-N-1030 |  | N- Cladding - Below from Canopy | 5d | 2025-08-06 A | 2025-08-10 A | P-PRO-154 | 100% |  |
| C-ENV-SID-CL-N-1020 |  | N- Cladding - Above Canopy | 4d | 2025-09-23 A | 2025-09-26 A | C-ENV-SID-CL-N-1010, P-PRO-154, P-PRO-155, C-ENV-RF-N-1060, C-FDN-A20-1220, C-ENV-SID-CL-N-1030 | 100% |  |
| C-ENV-SID-CL-N-1040 |  | Wood Soffit | 9d | 2026-02-09 | 2026-02-20 | C-ENV-SID-CL-S-1040, C-ENV-GL-1000 |  | 94d |
|  | 3 | **East Side** |  | 2025-01-28 | 2025-11-10 |  |  |  |
|  | 3 | **Exterior Wall** |  | 2025-01-28 | 2025-03-13 |  |  |  |
| C-ENV-SID-EW-E-1000 |  | Exterior Wall Framing,Boarding 1st Part | 14d | 2025-01-28 A | 2025-02-27 A | C-SS-PH2-1100, C-ENV-SID-EW-N-1000 | 100% |  |
| C-ENV-SID-EW-E-1010 |  | Exterior Wall Framing,Bording 2nd Part | 10d | 2025-02-28 A | 2025-03-13 A | C-ENV-SID-EW-N-1000, C-SS-PH3-1110, C-ENV-SID-EW-E-1000 | 100% |  |
|  | Glazing | **Glazing** |  | 2025-06-23 | 2025-07-16 |  |  |  |
| C-ENV-SID-GL-E-1010 |  | Curtain Wall Framing | 7d | 2025-06-23 A | 2025-06-25 A | C-ENV-SID-GL-N-1010, C-ENV-SID-EW-E-1010 | 100% |  |
| C-ENV-SID-GL-E-1020 |  | E- Curtain Wall Glass | 5d | 2025-07-07 A | 2025-07-16 A | P-PRO-1484, C-ENV-SID-GL-N-1040 FF+1d | 100% |  |
|  | 1 | **Clading** |  | 2025-06-10 | 2025-11-10 |  |  |  |
| C-ENV-SID-CL-E-1000 |  | AVB Membrane- Except the Access area | 12d | 2025-06-10 A | 2025-06-17 A | C-ENV-SID-EW-E-1010, C-ENV-SID-CL-N-1000 | 100% |  |
| C-ENV-SID-CL-E-1010 |  | E- Z-girts and insulation- Except the Access area | 8d | 2025-06-17 A | 2025-06-30 A | C-ENV-SID-CL-E-1000 | 100% |  |
| C-ENV-SID-CL-E-1020 |  | E- Cladding- Except the Access Area / Circular Window | 19d | 2025-08-04 A | 2025-09-05 A | P-PRO-154, C-ENV-SID-CL-N-1030 | 100% |  |
| C-ENV-SID-CL-E-1030 |  | Procurement of Circular Window Frame | 5d | 2025-08-14 A | 2025-09-15 A |  | 100% |  |
|  | 1 | **Access Area** |  | 2025-09-03 | 2025-11-10 |  |  |  |
| C-ENV-SID-CL-AC-1100 |  | E- Z-girts and insulation - Access Area for Family Hot Tub | 2d | 2025-09-03 A | 2025-10-07 A | C-ENV-SID-CL-N-1010, C-ENV-SID-CL-AC-1000 | 100% |  |
| C-ENV-SID-CL-AC-1000 |  | E- AVB Membrane- Access Area for Family Hot Tub | 2d | 2025-09-22 A | 2025-09-23 A | C-FDN-NN-1390 SF | 100% |  |
| C-ENV-SID-CL-AC-1110 |  | E- Cladding- Access Area for Family Hot Tub | 2d | 2025-10-08 A | 2025-10-31 A | C-ENV-SID-CL-AC-1100, C-ENV-SID-CL-E-1020 | 100% |  |
| C-ENV-SID-CL-AC-1120 |  | Remaining Glass Installation | 6d | 2025-11-10 A | 2025-11-10 A | C-ENV-SID-CL-AC-1110 | 100% |  |
|  | 4 | **South Side** |  | 2025-01-28 | 2026-01-23 |  |  |  |
|  | 3 | **Exterior Wall** |  | 2025-01-28 | 2025-04-25 |  |  |  |
| C-ENV-SID-EW-S-1000 |  | Exterior Wall Framing, Boarding | 10d | 2025-01-28 A | 2025-04-25 A | C-SS-PH3-1110, C-FDN-PH3-1000 SS, C-FDN-PH3-1010, C-ENV-SID-EW-E-1000 FS-1d | 100% |  |
|  | Glazing | **Glazing** |  | 2025-07-09 | 2025-07-19 |  |  |  |
| C-ENV-SID-GL-S-1010 |  | S- Curtain Wall Framing | 7d | 2025-07-09 A | 2025-07-17 A | C-ENV-SID-GL-E-1010, C-ENV-SID-EW-S-1000 | 100% |  |
| C-ENV-SID-GL-S-1020 |  | S- Curtain Wall Glass | 5d | 2025-07-18 A | 2025-07-19 A | C-ENV-SID-GL-S-1010, P-PRO-1504, C-ENV-SID-GL-E-1020 | 100% |  |
|  | 1 | **Clading** |  | 2025-07-21 | 2026-01-23 |  |  |  |
| C-ENV-SID-CL-S-1000 |  | S- AVB Membrane | 6d | 2025-07-21 A | 2025-09-04 A | C-ENV-SID-EW-S-1000, C-ENV-SID-CL-E-1000 | 100% |  |
| C-ENV-SID-CL-S-1010 |  | S- Z-girts and insulation | 2d | 2025-09-05 A | 2025-10-10 A | C-ENV-SID-CL-S-1000 | 100% |  |
| C-ENV-SID-CL-S-1020 |  | S- Cladding | 11d | 2025-09-26 A | 2025-11-11 A | C-ENV-SID-CL-S-1010, P-PRO-154, C-ENV-SID-CL-E-1020 SS, C-FDN-ACB-1140 FF-5d, C-ENV-SID-CL-AC-1110 FF+5d | 100% |  |
| C-ENV-SID-CL-S-1030 |  | Remaining Glass Installation | 2d | 2025-10-16 A | 2025-10-17 A | C-ENV-SID-CL-S-1010 | 100% |  |
| C-ENV-SID-CL-S-1060 |  | Install Aluminum Frame and Sidelight AQ 146A | 3d | 2025-11-12 A | 2026-01-08 A | C-ENV-SID-CL-S-1020 | 100% |  |
| C-ENV-SID-CL-S-1070 |  | Install Scaffold, Heat and Hoard | 3d | 2025-12-04 A | 2025-12-05 A | C-ENV-SID-CL-S-1060 | 100% |  |
| C-ENV-SID-CL-S-1040 |  | Stone Veneer | 12d | 2025-12-08 A | 2026-01-23 | C-ENV-SID-CL-S-1020, C-SW-1090, C-ENV-SID-CL-S-1070 |  | 28d |
| C-ENV-SID-CL-S-1050 |  | IMP Installation | 3d | 2025-12-15 A | 2026-01-16 A | C-ENV-SID-CL-S-1020, T-INT-SF-MR-2020 SS+2d, C-ENV-S-CL-1000 | 100% |  |
|  | 3 | **INTERIOR** |  | 2024-12-21 | 2026-06-19 |  |  |  |
|  | 1 | **BASEMENT** |  | 2025-07-28 | 2026-05-25 |  |  |  |
|  | 3 | **Basement & Pool Equipments** |  | 2025-07-28 | 2026-05-25 |  |  |  |
| T-INT-MF-BA-9000 |  | Basement Completion | 0d | 2026-05-25 | 2026-05-25 | T-INT-BA-2100 FF, T-INT-BA-2010 FF, T-INT-BA-2000 FF, T-INT-BA-2020 FF, T-INT-BA-2030 FF, T-INT-BA-2040 FF, T-INT-BA-2050 FF, T-INT-BA-2120 FF, T-INT-BA-2130 FF, T-INT-BA-2140 FF, T-INT-BA-2150 FF, T-INT-BA-2160 FF, T-INT-BA-2170 FF, T-INT-BA-2180 FF, T-INT-BA-2190 FF, T-INT-BA-2070 FF, T-INT-BA-2060 FF, T-INT-BA-2080 FF, T-INT-BA-2090 FF |  | 56d |
|  | 2 | **Structure** |  | 2025-07-28 | 2025-10-24 |  |  |  |
| T-INT-BA-2000 |  | Concrete Slab Infill and Patching | 5d | 2025-07-28 A | 2025-10-10 A | C-FDN-A6-1010 | 100% |  |
| T-INT-BA-2100 |  | Floor Sink Installation | 2d | 2025-08-07 A | 2025-08-08 A | C-FDN-A6-1010, C-FDN-A6-1090, P-PRO-1534 SS, T-INT-BA-2000 SS | 100% |  |
| T-INT-BA-2010 |  | Mechanical Ductwork | 5d | 2025-08-14 A | 2025-08-20 A | T-INT-BA-2000 SS, T-INT-BA-2100 | 100% |  |
| T-INT-BA-2020 |  | Basement Painting | 3d | 2025-10-14 A | 2025-10-17 A | T-INT-BA-2010, T-INT-BA-2000 | 100% |  |
| T-INT-BA-2030 |  | Housekeeping Pads - 1st Lift | 1d | 2025-10-24 A | 2025-10-24 A | T-INT-BA-2020 | 100% |  |
|  | 1 | **Pool Equipment & Fitout** |  | 2025-10-27 | 2026-05-25 |  |  |  |
| T-INT-BA-2040 |  | Pool Equipment Placement | 1d | 2025-10-27 A | 2025-10-27 A | T-INT-BA-2030, P-PRO-363, P-PRO-353, P-PRO-343, P-PRO-323, P-PRO-403, P-PRO-333, P-PRO-383 SS | 100% |  |
| T-INT-BA-2050 |  | Plumbing Mechanical room suction side | 62d | 2025-10-28 A | 2025-12-05 A | T-INT-BA-2040 | 100% |  |
| T-INT-BA-2120 |  | Mount equipment on rack and walls | 13d | 2025-12-08 A | 2025-12-22 A | T-INT-BA-2050 | 100% |  |
| T-INT-BA-2130 |  | Plumbing Circulation loop from wall to filter back to wall | 20d | 2026-01-05 A | 2026-01-30 | T-INT-BA-2120 |  | 33d |
| T-INT-BA-2140 |  | Water Filtration Loops | 15d | 2026-02-02 | 2026-02-23 | T-INT-BA-2130 |  | 33d |
| T-INT-BA-2150 |  | U.V Bypass loops | 10d | 2026-02-24 | 2026-03-09 | T-INT-BA-2140 |  | 33d |
| T-INT-BA-2160 |  | Chemical Bypass Loops | 13d | 2026-03-10 | 2026-03-26 | T-INT-BA-2150 |  | 33d |
| T-INT-BA-2170 |  | Heat Exchanger Bypass Loops | 15d | 2026-03-27 | 2026-04-17 | T-INT-BA-2160 |  | 33d |
| T-INT-BA-2180 |  | Finishing Trim | 10d | 2026-04-20 | 2026-05-01 | T-INT-BA-2170 |  | 33d |

| ID | WBS | Task | Duration | Start | Finish | Predecessors | Complete | Total float |
| --- | --- | --- | --- | --- | --- | --- | --- | --- |
| T-INT-BA-2190 |  | Pool E System | 15d | 2026-05-04 | 2026-05-25 | T-INT-BA-2180 |  | 33d |
|  | 3 | **Connections & Fixtures** |  | 2026-02-24 | 2026-04-07 |  |  |  |
| T-INT-BA-2060 |  | Electrical Connections and Rough In's | 25d | 2026-02-24 | 2026-03-30 | T-INT-BA-2140 |  | 39d |
| T-INT-BA-2070 |  | Mechanical Fixtures | 5d | 2026-02-24 | 2026-03-03 | T-INT-BA-2060 SS |  | 47d |
| T-INT-BA-2080 |  | Electrical Fixtures | 5d | 2026-03-31 | 2026-04-07 | T-INT-BA-2070, T-INT-BA-2060 |  | 39d |
|  | 4 | **Startup & Testing** |  | 2026-04-20 | 2026-04-20 |  |  |  |
| T-INT-BA-2090 |  | Pool Equipment Start Up and Testing | 1d | 2026-04-20 | 2026-04-20 | T-INT-MF-Z1-ER-1150, T-INT-BA-2060, T-INT-BA-2170 |  | 33d |
|  | 2 | **MAIN FLOOR** |  | 2025-09-02 | 2026-06-19 |  |  |  |
|  | 1 | **ZONE #1 - MECHANICAL ROOM, ELECTRICAL ROOM, EXIT CORRIDOR** |  | 2025-09-02 | 2026-04-28 |  |  |  |
| T-INT-MF-Z1-9000 |  | Zone 01 Completion | 0d | 2026-04-28 | 2026-04-28 | T-INT-MF-Z1-1350 FF, T-INT-MF-Z1-1310 FF, T-INT-MF-Z1-1360 FF, T-INT-MF-Z1-1280 FF, T-INT-MF-Z1-1330 FF, T-INT-MF-Z1-1370 FF, T-INT-MF-Z1-1300 FF, T-INT-MF-Z1-1080 FF, T-INT-MF-Z1-1130 FF, T-INT-MF-Z1-1262 FF, T-INT-MF-Z1-1100 FF, T-INT-MF-Z1-1190 FF, T-INT-MF-Z1-1110 FF, T-INT-MF-Z1-1220 FF, T-INT-MF-Z1-1170 FF, T-INT-MF-Z1-1180 FF, T-INT-MF-Z1-1250 FF, T-INT-MF-Z1-1270 FF, T-INT-MF-Z1-ER-1020 FF, T-INT-MF-Z1-ER-1050 FF, T-INT-MF-Z1-ER-1070 FF, T-INT-MF-Z1-ER-1100 FF, T-INT-MF-Z1-ER-1090 FF, T-INT-MF-Z1-ER-1080 FF, T-INT-MF-Z1-ER-1030 FF, T-INT-MF-Z1-ER-1120 FF, T-INT-MF-Z1-ER-1160 FF, T-INT-MF-Z1-ER-1130 FF, T-INT-MF-Z1-ER-1110 FF, T-INT-MF-Z1-ER-1140 FF, T-INT-MF-Z1-ER-1150 FF, T-INT-MF-Z1-1000 FF, T-INT-MF-Z1-MR-1060 FF, T-INT-MF-Z1-1230 FF, T-INT-MF-Z1-1010 FF, T-INT-MF-Z1-1050 FF, T-INT-MF-Z1-MR-1090 FF, T-INT-MF-Z1-1240 FF, T-INT-MF-Z1-1200 FF, T-INT-MF-Z1-1140 FF, T-INT-MF-Z1-1150 FF, T-INT-MF-Z1-1120 FF, T-INT-MF-Z1-1060 FF, T-INT-MF-Z1-1070 FF, T-INT-MF-Z1-MR-1080 FF, T-INT-MF-Z1-MR-1040 FF, T-INT-MF-Z1-1090 FF, T-INT-MF-Z1-1260 FF, T-INT-MF-Z1-MR-1180 FF, T-INT-MF-Z1-MR-1150 FF |  | 74d |
|  | 3 | **Corridor Fitouts (AQ-C006)** |  | 2025-12-08 | 2026-01-16 |  |  |  |
| T-INT-MF-Z1-1350 |  | Drywall mud tape and finish remaining walls - 2 | 5d | 2025-12-08 A | 2025-12-12 A | T-INT-MF-Z1-1100 SS | 100% |  |
| T-INT-MF-Z1-1300 |  | Electrical Fixtures- Ceilings | 3d | 2025-12-12 A | 2026-01-09 A | T-INT-MF-Z1-1330 | 100% |  |
| T-INT-MF-Z1-1280 |  | Plumbing Pipe Runs from Bold Centre to Mech Room | 5d | 2025-12-15 A | 2026-01-15 A |  | 100% |  |
| T-INT-MF-Z1-1330 |  | Electrical Runs | 5d | 2025-12-15 A | 2026-01-15 A | T-INT-MF-Z1-ER-1120 SS | 100% |  |
| T-INT-MF-Z1-1370 |  | Sprinkler Ceilings | 5d | 2025-12-15 A | 2026-01-14 A | T-INT-MF-Z1-1280 SS | 100% |  |
| T-INT-MF-Z1-1310 |  | Paint - Finish Coat | 5d | 2025-12-16 A | 2026-01-13 A | T-INT-MF-Z1-1350 | 100% |  |
| T-INT-MF-Z1-1360 |  | Open Exit Corridor for Egress | 1d | 2026-01-16 A | 2026-01-16 A | T-INT-MF-Z1-1310 | 100% |  |
|  | 6 | **Corridor Fitouts (AQ-C002 & AQ-C005)** |  | 2025-09-02 | 2026-04-20 |  |  |  |
| T-INT-MF-Z1-1080 |  | Install Stair | 5d | 2025-09-02 A | 2025-09-08 A | C-SOG-S1B-1040 | 100% |  |
| T-INT-MF-Z1-1100 |  | Pipe runs - branches to poke through into rooms | 10d | 2025-11-19 A | 2026-01-09 A | T-INT-MF-Z1-1010, IPP-QAQC-202 SS, T-INT-MF-Z1-1050 | 100% |  |
| T-INT-MF-Z1-1130 |  | Pre-board inspection - 1 | 1d | 2025-12-02 A | 2025-12-02 A | T-INT-MF-Z1-1200 | 100% |  |
| T-INT-MF-Z1-1262 |  | Drywall mud tape and finish remaining walls - 2 | 5d | 2025-12-03 A | 2025-12-08 A | T-INT-MF-Z1-1130 | 100% |  |
| T-INT-MF-Z1-1110 |  | Electrical Runs | 5d | 2025-12-08 A | 2026-03-13 | T-INT-MF-Z1-1100 FF, T-INT-MF-Z1-ER-1110 FF |  | 54d |
| T-INT-MF-Z1-1190 |  | Painting - Prime, Plus One | 5d | 2026-01-05 A | 2026-01-09 A | T-INT-MF-Z1-1080, T-INT-MF-Z1-1262, T-INT-MF-Z1-1310 | 100% |  |
| T-INT-MF-Z1-1220 |  | T-Bar Ceiling Grid | 5d | 2026-03-16 | 2026-03-20 | T-INT-MF-Z1-1190, T-INT-MF-Z1-1110, T-INT-MF-Z1-1100 |  | 54d |
| T-INT-MF-Z1-1170 |  | Mechanical Fixtures- Ceilings | 10d | 2026-03-23 | 2026-04-06 | T-INT-MF-Z1-1100, T-INT-MF-Z1-1010, T-INT-MF-Z1-1220 |  | 54d |
| T-INT-MF-Z1-1180 |  | Electrical Fixtures- Ceilings | 10d | 2026-03-23 | 2026-04-06 | T-INT-MF-Z1-1110, T-INT-MF-Z1-1010, T-INT-MF-Z1-1220 |  | 54d |
| T-INT-MF-Z1-1250 |  | Ceiling Tiles | 5d | 2026-04-07 | 2026-04-13 | T-INT-MF-Z1-1180, T-INT-MF-Z1-1170 |  | 54d |
| T-INT-MF-Z1-1270 |  | Resilient Flooring | 5d | 2026-04-14 | 2026-04-20 | T-INT-MF-Z1-1250 |  | 54d |
|  | 1 | **Electrical Room (AQ152) Equipments & Fitouts** |  | 2025-10-27 | 2026-03-11 |  |  |  |
| T-INT-MF-Z1-ER-1020 |  | F/R/P Housekeeping Pads/Fire Rated Plywood | 2d | 2025-10-27 A | 2025-10-27 A | C-SOG-S1B-1050, T-INT-MF-Z1-1010 | 100% |  |
| T-INT-MF-Z1-ER-1050 |  | Room is Ready to Receive Equipment | 0d | 2025-10-28 A | 2025-10-28 A | T-INT-MF-Z1-ER-1020 FF | 100% |  |
| T-INT-MF-Z1-ER-1070 |  | Place CDP (6D5,6D6,2D4) | 5d | 2025-11-17 A | 2025-11-21 A | T-INT-MF-Z1-ER-1050, P-PRO-757 | 100% |  |
| T-INT-MF-Z1-ER-1090 |  | Place Power Panel | 10d | 2025-11-24 A | 2026-01-08 A | T-INT-MF-Z1-ER-1070 SS+7d, IPP-SAFE-182 | 100% |  |
| T-INT-MF-Z1-ER-1100 |  | Cable Pulling to the Electrical Room | 5d | 2025-11-24 A | 2025-12-04 A |  | 100% |  |
| T-INT-MF-Z1-ER-1080 |  | Place Transformer | 2d | 2026-01-08 A | 2026-01-09 A | P-PRO-787, T-INT-MF-Z1-ER-1050, T-INT-MF-Z1-ER-1070, T-INT-MF-Z1-ER-1090 SS+24d | 100% |  |
| T-INT-MF-Z1-ER-1030 |  | Door Install | 1d | 2026-01-12 A | 2026-01-19 | T-INT-MF-Z1-1190 |  | 73d |
| T-INT-MF-Z1-ER-1120 |  | Distribution Conduits (CDP to Panels) | 5d | 2026-01-12 A | 2026-01-16 A | P-PRO-597, T-INT-MF-Z1-ER-1070 FF, T-INT-MF-Z1-ER-1080 | 100% |  |
| T-INT-MF-Z1-ER-1110 |  | Pull Branch Power For The Entire Building | 32d | 2026-01-19 | 2026-03-04 | T-INT-MF-Z1-ER-1100, T-INT-MF-Z1-ER-1080, T-INT-MF-Z1-ER-1120 SS |  | 42d |
| T-INT-MF-Z1-ER-1160 |  | CDP Feeds to L2 | 3d | 2026-01-19 | 2026-01-21 | T-INT-MF-Z1-ER-1100, T-INT-MF-Z1-ER-1120 |  | 61d |
| T-INT-MF-Z1-ER-1130 |  | Transformer is Ready for Energization | 0d | 2026-03-04 | 2026-03-04 | T-INT-MF-Z1-ER-1080, T-INT-MF-Z1-ER-1120, T-INT-MF-Z1-ER-1160 FF, T-INT-MF-Z1-ER-1110 FF, T-INT-MF-Z1-ER-1100 FF |  | 42d |
| T-INT-MF-Z1-ER-1140 |  | Inspection | 5d | 2026-03-05 | 2026-03-11 | T-INT-MF-Z1-ER-1130, T-INT-MF-Z1-ER-1030 |  | 42d |
| T-INT-MF-Z1-ER-1150 |  | Energization | 5d | 2026-03-05 | 2026-03-11 | T-INT-MF-Z1-ER-1140 SS, T-INT-MF-Z1-ER-1050 FF, T-INT-MF-Z1-ER-1070, T-INT-MF-Z1-ER-1080, IPP-SAFE-184 |  | 42d |
|  | 2 | **Mechanical Room (AQ153) Fitouts** |  | 2025-09-15 | 2026-04-28 |  |  |  |
| T-INT-MF-Z1-1000 |  | Fireproofing UnderSide of 2nd Floor Structure Steel Decking | 5d | 2025-09-15 A | 2025-09-29 A | P-SD-337, P-PRO-100, C-SS-PH3-1110, C-SOG-S1B-1050, C-FDN-PH3-1000 SS, C-FDN-PH3-1010, MIL-C-710, T-INT-MF-Z1-1010 SF | 100% |  |
| T-INT-MF-Z1-1010 |  | Steel Stud Framing - Full Height | 5d | 2025-09-26 A | 2025-11-03 A | C-SS-PH3-1110, P-PRO-167, C-SOG-S1B-1050, C-FDN-PH3-1000 SS, C-FDN-PH3-1010, MIL-C-630, IPP-SAFE-183 | 100% |  |
| T-INT-MF-Z1-1230 |  | Housekeeping pads | 1d | 2025-10-27 A | 2025-10-27 A | T-INT-BA-2030 | 100% |  |
| T-INT-MF-Z1-MR-1060 |  | Room is Ready to Receive Equipment | 0d | 2025-10-27 A | 2025-10-27 A | T-INT-MF-Z1-1230 FF | 100% |  |
| T-INT-MF-Z1-MR-1090 |  | Place of Boilers | 10d | 2025-11-03 A | 2025-11-07 A | P-PRO-567 | 100% |  |
| T-INT-MF-Z1-1050 |  | Drywall, Mud, Tape Inner Room & Corridor Top | 5d | 2025-11-04 A | 2025-11-07 A | IPP-QAQC-209 FF-1d, T-INT-MF-Z1-1010 | 100% |  |
| T-INT-MF-Z1-1200 |  | M/E Wall Rough In's | 5d | 2025-11-04 A | 2025-11-10 A | T-INT-MF-Z1-1010 | 100% |  |
| T-INT-MF-Z1-1240 |  | Place Boilers | 4d | 2025-11-06 A | 2025-11-07 A | T-INT-MF-Z1-1230 FS+1d | 100% |  |
| T-INT-MF-Z1-MR-1080 |  | Mechanical Room Fitout Including Piping | 60d | 2025-11-10 A | 2026-03-12 | T-INT-MF-Z1-MR-1060, P-PRO-697 FF, T-INT-MF-Z1-1050 |  | 40d |
| T-INT-MF-Z1-1140 |  | Fire Caulking | 1d | 2025-11-11 A | 2025-11-11 A | T-INT-MF-Z1-1050 FF, T-INT-MF-Z1-1010 FF, MIL-C-710 FF, IPP-QAQC-202 SF, T-INT-MF-Z1-1200 FF | 100% |  |
| T-INT-MF-Z1-1150 |  | Removal of Hoardings | 5d | 2025-12-16 A | 2026-01-22 | C-ENV-SID-CL-S-1050 FF+3d |  | 24d |
| T-INT-MF-Z1-9010 |  | Pipe Runs Material Delivery | 30d | 2025-12-22 A | 2026-02-12 |  |  | 9d |
| T-INT-MF-Z1-1120 |  | Pipe runs from Mechanical room to Level 2 | 11d | 2026-02-13 | 2026-03-02 | T-INT-MF-Z1-1150, T-INT-MF-Z1-9010 |  | 9d |
| T-INT-MF-Z1-1060 |  | Painting Drywall | 4d | 2026-03-03 | 2026-03-06 | P-PRO-169, T-INT-MF-Z1-1010, T-INT-MF-Z1-1000, T-INT-MF-Z1-1050, MIL-C-710, IPP-QAQC-202 SS, T-INT-MF-Z1-1120 |  | 45d |
| T-INT-MF-Z1-MR-1150 |  | Mechanical Piping Insulation | 40d | 2026-03-03 | 2026-04-28 | T-INT-MF-Z1-MR-1080 FF, T-INT-MF-Z1-1120 |  | 9d |
| T-INT-MF-Z1-1260 |  | Electrical Connections | 15d | 2026-03-05 | 2026-03-25 | T-INT-MF-Z1-1240, T-INT-MF-Z1-ER-1080, T-INT-MF-Z1-ER-1110, T-INT-MF-Z1-MR-1080 FF |  | 47d |
| T-INT-MF-Z1-1070 |  | Mechanical Fixtures- Ceilings | 10d | 2026-03-09 | 2026-03-20 | P-PRO-677, T-INT-MF-Z1-1200, T-INT-MF-Z1-MR-1080 FF, T-INT-MF-Z1-1060 |  | 58d |
| T-INT-MF-Z1-1090 |  | Electrical Fixtures- Ceilings | 10d | 2026-03-12 | 2026-03-25 | P-PRO-747, P-PRO-777, T-INT-MF-Z1-1260 FF, T-INT-MF-Z1-1240, T-INT-MF-Z1-1060 |  | 47d |
| T-INT-MF-Z1-MR-1040 |  | Door Install | 1d | 2026-03-13 | 2026-03-13 | T-INT-MF-Z1-MR-1090, T-INT-MF-Z1-MR-1080 |  | 40d |
| T-INT-MF-Z1-MR-1180 |  | Room Is Ready | 0d | 2026-04-28 | 2026-04-28 | T-INT-MF-Z1-MR-1080 FF, T-INT-MF-Z1-MR-1150 FF, T-INT-MF-Z1-MR-1040 FF, P-PRO-697 FF, C-SOG-S1B-1050 FF, T-INT-MF-Z1-1060 FF |  | 9d |
|  | 4 | **Deficiency** |  |  |  |  |  |  |
|  | 2 | **ZONE #2 - STAFF AREAS** |  | 2025-09-15 | 2026-05-01 |  |  |  |
| T-INT-MF-Z2-1000 |  | Fireproofing UnderSide of 2nd Floor Structure Steel Decking | 5d | 2025-09-15 A | 2025-09-19 A | P-PRO-100, C-SS-PH2-1100, C-SS-PH1-1070, T-INT-SF-2000, C-FDN-PH1-1010, C-FDN-NN-S6/S2A-1080 | 100% |  |
| T-INT-MF-Z2-1010 |  | Steel Stud Framing - Full Height | 7d | 2025-09-29 A | 2025-10-07 A | C-SOG-1100, T-INT-SF-2000, C-SOG-S1C/D-1060 | 100% |  |
| T-INT-MF-Z2-1020 |  | Wall Rough Ins (Electrical) | 7d | 2025-10-08 A | 2025-10-27 A | T-INT-MF-Z2-1010 | 100% |  |

| ID | WBS | Task | Duration | Start | Finish | Predecessors | Complete | Total float | Constraint |
| --- | --- | --- | --- | --- | --- | --- | --- | --- | --- |
| T-INT-MF-Z2-1040 |  | Wall Rough Ins (Mechanical) | 20d | 2025-10-08 A | 2025-10-27 A | T-INT-MF-Z2-1010 | 100% |  |  |
| T-INT-MF-Z2-1030 |  | Door Frames | 5d | 2025-10-30 A | 2025-11-07 A | T-INT-MF-Z2-1010, P-PRO-166 | 100% |  |  |
| T-INT-MF-Z2-1050 |  | Board Plenum Space (Tops) | 5d | 2025-11-03 A | 2025-11-07 A | T-INT-MF-Z2-1020, T-INT-MF-Z2-1040 | 100% |  |  |
| T-INT-MF-Z2-1060 |  | M/E wall inspection | 1d | 2025-11-24 A | 2025-11-24 A | T-INT-MF-Z2-1040, T-INT-MF-Z2-1020, T-INT-MF-Z2-1030, IPP-QAQC-219 | 100% |  |  |
| T-INT-MF-Z2-1170 |  | Drywall Board, Mud & Tape - Walls | 5d | 2025-11-25 A | 2025-12-03 A | T-INT-MF-Z2-1060, T-INT-MF-Z2-1050, T-INT-MF-Z2-1050 FF | 100% |  |  |
| T-INT-MF-Z2-1070 |  | Prime and Paint | 5d | 2025-12-16 A | 2026-01-16 A | T-INT-MF-Z2-1170, T-INT-MF-Z2-1040, T-INT-MF-Z2-1020, T-INT-MF-Z2-1030, IPP-QAQC-219, T-INT-MF-Z1-1190 | 100% |  |  |
| T-INT-MF-Z2-1210 |  | Pipe Runs- Incoming From Zone 1 | 10d | 2025-12-16 A | 2026-01-09 A | T-INT-MF-Z2-1010, T-INT-MF-Z2-1000, T-INT-MF-Z2-1020, T-INT-MF-Z2-1040, T-INT-MF-Z2-1030, IPP-QAQC-219, T-INT-MF-Z1-1100 | 100% |  |  |
| T-INT-MF-Z2-1080 |  | Door Install | 5d | 2026-01-05 A | 2026-01-09 A | T-INT-MF-Z2-1070 | 100% |  |  |
| T-INT-MF-Z2-1100 |  | Ceiling T-Bar and Perimeter/ Devices Tiles | 10d | 2026-01-26 | 2026-02-06 | T-INT-MF-Z2-1070, T-INT-MF-Z2-1210, T-INT-MF-Z2-1080 |  | 15d | start on or after 2026-01-26 |
| T-INT-MF-Z2-1110 |  | Tiling | 15d | 2026-02-09 | 2026-03-02 | P-PRO-168, T-INT-MF-Z2-1070, T-INT-MF-Z2-1100 |  | 15d |  |
| T-INT-MF-Z2-1230 |  | Interior Storefront (BL 3, 5 8, 9, 10) | 3d | 2026-03-03 | 2026-03-05 | T-INT-MF-Z2-1110 |  | 64d |  |
| T-INT-MF-Z2-1090 |  | Millwork | 5d | 2026-03-20 | 2026-03-26 | T-INT-MF-Z2-1070, P-PRO-165, T-INT-MF-Z2-1110 FS+13d |  | 15d |  |
| T-INT-MF-Z2-1130 |  | Electrical Fixtures | 10d | 2026-03-27 | 2026-04-10 | T-INT-MF-Z2-1090, T-INT-MF-Z2-1110, P-PRO-747, P-PRO-767, P-PRO-777 |  | 36d |  |
| T-INT-MF-Z2-1220 |  | Millwork Countertops | 1d | 2026-04-10 | 2026-04-10 | T-INT-MF-Z2-1090, T-INT-MF-Z3-1270 |  | 26d |  |
| T-INT-MF-Z2-1120 |  | Mechanical Fixtures | 5d | 2026-04-13 | 2026-04-17 | T-INT-MF-Z2-1090, T-INT-MF-Z2-1110, P-PRO-677, P-PRO-627, P-PRO-657, T-INT-MF-Z2-1230, T-INT-MF-Z2-1220 |  | 39d |  |
| T-INT-MF-Z2-1140 |  | Finish Paint | 5d | 2026-04-20 | 2026-04-24 | T-INT-MF-Z2-1120, T-INT-MF-Z2-1130, T-INT-MF-Z2-1110, T-INT-MF-Z2-1080 |  | 45d |  |
| T-INT-MF-Z2-1150 |  | Install of Remaining Ceiling Tiles | 5d | 2026-04-27 | 2026-05-01 | T-INT-MF-Z2-1100, T-INT-MF-Z2-1140 |  | 45d |  |
| T-INT-MF-Z2-9000 |  | Zone 2 Completion | 0d | 2026-05-01 | 2026-05-01 | T-INT-MF-Z2-1000 FF, T-INT-MF-Z2-1010 FF, T-INT-MF-Z2-1040 FF, T-INT-MF-Z2-1020 FF, T-INT-MF-Z2-1030 FF, T-INT-MF-Z2-1050 FF, T-INT-MF-Z2-1060 FF, T-INT-MF-Z2-1170 FF, T-INT-MF-Z2-1070 FF, T-INT-MF-Z2-1210 FF, T-INT-MF-Z2-1080 FF, T-INT-MF-Z2-1100 FF, T-INT-MF-Z2-1110 FF, T-INT-MF-Z2-1230 FF, T-INT-MF-Z2-1090 FF, T-INT-MF-Z2-1120 FF, T-INT-MF-Z2-1130 FF, T-INT-MF-Z2-1220 FF, T-INT-MF-Z2-1140 FF, T-INT-MF-Z2-1150 FF |  | 71d |  |
|  | 3 | **ZONE #3 - CHANGE ROOMS** |  | 2025-09-15 | 2026-06-04 |  |  |  |  |
| T-INT-MF-Z3-1010 |  | Fireproofing UnderSide of 2nd Floor Structure Steel Decking | 15d | 2025-09-15 A | 2025-09-29 A | P-PRO-100, T-INT-MF-Z2-1000, T-INT-MF-Z1-1000 FF | 100% |  |  |
| T-INT-MF-Z3-1020 |  | Mechanical Carrier Installation | 5d | 2025-10-01 A | 2025-11-12 A | C-SOG-S1C/D-1070, C-FDN-A7A-1040, C-FDN-A5-1080, C-FDN-A5-1090 | 100% |  |  |
| T-INT-MF-Z3-1030 |  | Masonry - Concrete Block Walls | 20d | 2025-10-01 A | 2025-11-12 A | P-PRO-158, C-FDN-A7A-1040, C-FDN-A5-1080, C-FDN-A5-1090, T-INT-MF-Z3-1010 FS+1d | 100% |  |  |
| T-INT-MF-Z3-1040 |  | Electrical Wall Rough-In | 15d | 2025-10-10 A | 2025-11-21 A | T-INT-MF-Z3-1020 SS | 100% |  |  |
| T-INT-MF-Z3-1060 |  | Mechanical Ceiling Rough In's | 10d | 2025-11-05 A | 2026-02-06 | T-INT-MF-Z3-1030 SS+7d, T-INT-MF-Z3-1040, P-TEA-21 SS, T-INT-MF-Z3-1030, T-INT-MF-Z3-1050 FF | 100% | 6d |  |
| T-INT-MF-Z3-1070 |  | Electrical Ceiling Rough In's (Includes Branch power Pathways) | 15d | 2025-11-21 A | 2026-02-06 | T-INT-MF-Z3-1030, T-INT-MF-Z3-1050 FF | 100% | 6d |  |
| T-INT-MF-Z3-1280 |  | Trench Drains | 10d | 2026-01-15 A | 2026-02-06 | T-INT-MF-Z3-1050 FF |  | 33d |  |
| T-INT-MF-Z3-1050 |  | Tiling - Topping Slab | 0d | 2026-02-06 | 2026-02-06 | T-INT-MF-Z3-1010, T-INT-MF-Z3-1040, T-INT-MF-Z3-1020, T-INT-MF-Z3-1030, T-INT-MF-Z5-1090 |  | 6d |  |
| T-INT-MF-Z3-1080 |  | Ceiling and Bulkhead Framing | 7d | 2026-02-06 | 2026-02-17 | T-INT-MF-Z3-1030, T-INT-MF-Z3-1070, T-INT-MF-Z3-1060 |  | 6d |  |
| T-INT-MF-Z3-1250 |  | Sprinkler Heads | 5d | 2026-02-18 | 2026-02-24 | T-INT-MF-Z3-1080 |  | 6d |  |
| T-INT-MF-Z3-1090 |  | Ceiling Inspection | 1d | 2026-02-25 | 2026-02-25 | T-INT-MF-Z3-1080, T-INT-MF-Z3-1250 |  | 6d |  |
| T-INT-MF-Z3-1100 |  | Ceiling Drywall Install | 3d | 2026-02-26 | 2026-03-02 | T-INT-MF-Z3-1060, T-INT-MF-Z3-1070, MIL-C-440, T-INT-MF-Z3-1080, IPP-QAQC-229, T-INT-MF-Z3-1090, T-INT-MF-Z3-1050, T-INT-MF-Z3-1280 SS |  | 6d |  |
| T-INT-MF-Z3-1110 |  | Ceiling Mud, Tape and Sand | 2d | 2026-03-03 | 2026-03-04 | T-INT-MF-Z3-1100 |  | 6d |  |
| T-INT-MF-Z3-1120 |  | Paint - Prime Plus One | 10d | 2026-03-05 | 2026-03-18 | T-INT-MF-Z3-1110, IPP-QAQC-239, T-INT-MF-Z3-1030, T-INT-MF-Z3-1010 |  | 6d |  |
| T-INT-MF-Z3-1150 |  | Tiling - Floor | 15d | 2026-03-19 | 2026-04-09 | T-INT-MF-Z3-1120, T-INT-MF-Z3-1050 |  | 6d |  |
| T-INT-MF-Z3-1200 |  | Lockers | 10d | 2026-03-19 | 2026-04-01 | P-PRO-253, T-INT-MF-Z3-1120 |  | 26d |  |
| T-INT-MF-Z3-1270 |  | Millwork/Lockers | 5d | 2026-04-02 | 2026-04-09 | T-INT-MF-Z3-1200, T-INT-MF-Z2-1090 |  | 26d |  |
| T-INT-MF-Z3-1130 |  | Millwork - Vanities | 7d | 2026-04-10 | 2026-04-20 | T-INT-MF-Z3-1150, T-INT-MF-Z2-1090 |  | 6d |  |
| T-INT-MF-Z3-1170 |  | Electrical Fixtures | 15d | 2026-04-21 | 2026-05-11 | P-PRO-747, P-PRO-777, T-INT-MF-Z3-1130 |  | 15d |  |
| T-INT-MF-Z3-1240 |  | Millwork Countertops | 2d | 2026-04-21 | 2026-04-22 | T-INT-MF-Z3-1130, T-INT-MF-Z2-1220 |  | 20d |  |
| T-INT-MF-Z3-1140 |  | Wall Tiling | 15d | 2026-04-23 | 2026-05-13 | T-INT-MF-Z3-1150, T-INT-MF-Z3-1240 |  | 22d |  |
| T-INT-MF-Z3-1160 |  | Mechanical Fixtures | 15d | 2026-04-23 | 2026-05-13 | P-PRO-677, P-PRO-627, P-PRO-657, T-INT-MF-Z3-1130, T-INT-MF-Z3-1240 |  | 21d |  |
| T-INT-MF-Z3-1180 |  | Washroom Accessories | 5d | 2026-05-14 | 2026-05-21 | P-PRO-243, T-INT-MF-Z3-1140 |  | 32d |  |
| T-INT-MF-Z3-1190 |  | Toilet Partitions | 15d | 2026-05-14 | 2026-06-04 | P-PRO-233, T-INT-MF-Z3-1140 |  | 22d |  |
| T-INT-MF-Z3-1220 |  | Final Paint | 5d | 2026-05-29 | 2026-06-04 | T-INT-MF-Z3-1190 FF, T-INT-MF-Z3-1200, T-INT-MF-Z3-1240, P-PRO-183 |  | 22d |  |
| T-INT-MF-Z3-1260 |  | Zone 03 Completion | 0d | 2026-06-04 | 2026-06-04 | T-INT-MF-Z3-1010 FF, T-INT-MF-Z3-1030 FF, T-INT-MF-Z3-1020 FF, T-INT-MF-Z3-1040 FF, T-INT-MF-Z3-1060 FF, T-INT-MF-Z3-1070 FF, T-INT-MF-Z3-1080 FF, T-INT-MF-Z3-1250 FF, T-INT-MF-Z3-1090 FF, T-INT-MF-Z3-1100 FF, T-INT-MF-Z3-1110 FF, T-INT-MF-Z3-1050 FF, T-INT-MF-Z3-1120 FF, T-INT-MF-Z3-1200 FF, T-INT-MF-Z3-1150 FF, T-INT-MF-Z3-1130 FF, T-INT-MF-Z3-1160 FF, T-INT-MF-Z3-1170 FF, T-INT-MF-Z3-1240 FF, T-INT-MF-Z3-1140 FF, T-INT-MF-Z3-1180 FF, T-INT-MF-Z3-1190 FF, T-INT-MF-Z3-1220 FF |  | 48d |  |
|  | 4 | **ZONE #4 - POOL MECHANICAL, STORAGE, CHEMICAL, ROOMS** |  | 2025-11-14 | 2026-05-21 |  |  |  |  |
| T-INT-MF-Z4-9000 |  | Zone 04 Completion | 0d | 2026-05-21 | 2026-05-21 | T-INT-MF-Z4-1080, T-INT-MF-Z4-1010, T-INT-MF-Z4-1000, T-INT-MF-Z4-1110, T-INT-MF-Z4-1020, T-INT-MF-Z4-1040, T-INT-MF-Z4-1070, T-INT-MF-Z4-1140, T-INT-MF-Z4-1150, T-INT-MF-Z4-1160, T-INT-MF-Z4-1170, T-INT-MF-Z4-1230, T-INT-MF-Z4-1090, T-INT-MF-Z4-1130, T-INT-MF-Z4-1190, T-INT-MF-Z4-1120, T-INT-MF-Z4-1180, T-INT-MF-Z4-1200, T-INT-MF-Z4-1210 |  | 58d |  |
|  | 3 | **Prep & Rough-Ins** |  | 2025-11-14 | 2026-03-03 |  |  |  |  |
| T-INT-MF-Z4-1080 |  | F/R/P Housekeeping Pads | 0d | 2025-11-14 A | 2025-11-14 A | T-INT-SF-MR-2130 SS | 100% |  |  |
| T-INT-MF-Z4-1010 |  | Curbs | 5d | 2025-11-17 A | 2025-11-21 A | T-INT-MF-Z4-1080 | 100% |  |  |
| T-INT-MF-Z4-1000 |  | Block Wall | 12d | 2025-11-24 A | 2026-01-30 | C-SS-PH3-1110, C-FDN-PH3-1000 SS, C-FDN-PH3-1010, C-FDN-A7A-1040, C-FDN-A5-1080, C-FDN-A5-1090, T-INT-MF-Z4-1010, T-INT-MF-Z3-1030, T-INT-MF-Z4-9010 FF, C-Z5-NN-FRA-1020 FF |  | 8d |  |
| T-INT-MF-Z4-1020 |  | Electrical Rough In's- Ceiling & Wall | 17d | 2025-11-24 A | 2026-02-09 | T-INT-MF-Z4-1000 SS, T-INT-MF-Z4-1000 FF+5d, T-INT-MF-Z4-9010 FF |  | 12d |  |
| T-INT-MF-Z4-9010 |  | Door Frame Install | 1d | 2026-01-19 | 2026-01-19 |  |  | 17d |  |
| T-INT-MF-Z4-1040 |  | Mechanical Rough In's- Ceiling & Wall | 10d | 2026-02-02 | 2026-02-13 | T-INT-MF-Z4-1000, P-TEA-21 SS, T-INT-MF-Z1-1100 |  | 8d |  |
| T-INT-MF-Z4-1110 |  | Drywall, mud, tape | 5d | 2026-02-02 | 2026-02-06 | T-INT-MF-Z4-1000 |  | 14d |  |
| T-INT-MF-Z4-1070 |  | Prime and Paint- Prime Plus one | 10d | 2026-02-18 | 2026-03-03 | T-INT-MF-Z4-1040, T-INT-MF-Z4-1020, IPP-QAQC-249, T-INT-MF-Z4-1110 |  | 8d |  |
|  | 1 | **Install Pool Equipment** |  | 2026-02-25 | 2026-05-06 |  |  |  |  |
| T-INT-MF-Z4-1140 |  | pH Feeders | 50d | 2026-02-25 | 2026-05-06 | P-PRO-293, T-INT-MF-Z4-1070 SS+5d |  | 8d |  |
| T-INT-MF-Z4-1150 |  | Storage | 50d | 2026-02-25 | 2026-05-06 | P-PRO-303, T-INT-MF-Z4-1070 SS+5d |  | 8d |  |
| T-INT-MF-Z4-1160 |  | Pumps and Boosters | 50d | 2026-02-25 | 2026-05-06 | P-PRO-333, T-INT-MF-Z4-1070 SS+5d |  | 8d |  |
| T-INT-MF-Z4-1170 |  | Flow Meters | 50d | 2026-02-25 | 2026-05-06 | P-PRO-353, T-INT-MF-Z4-1070 SS+5d |  | 8d |  |
| T-INT-MF-Z4-1230 |  | Completion of Pool Equipment Installation | 1d | 2026-05-06 | 2026-05-06 | T-INT-MF-Z4-1140 FF, T-INT-MF-Z4-1150 FF, T-INT-MF-Z4-1160 FF, T-INT-MF-Z4-1170 FF |  | 8d |  |
|  | 2 | **Install Mechanical Equipment & Fitouts** |  | 2026-02-02 | 2026-04-14 |  |  |  |  |
| T-INT-MF-Z4-1090 |  | Place of Mechanical Equipments & Fitouts | 50d | 2026-02-02 | 2026-04-14 | P-PRO-517, T-INT-MF-Z4-1000 |  | 19d |  |
|  | 4 | **Finishing** |  | 2025-12-01 | 2026-05-21 |  |  |  |  |
| T-INT-MF-Z4-1130 |  | Install Stair Railing | 5d | 2025-12-01 A | 2025-12-05 A | T-INT-MF-Z4-1010 | 100% |  |  |
| T-INT-MF-Z4-1120 |  | Mechanical Fixtures | 5d | 2026-04-15 | 2026-04-21 | P-PRO-677, P-PRO-627, P-PRO-657, T-INT-MF-Z4-1090, P-PRO-313 |  | 19d |  |
| T-INT-MF-Z4-1190 |  | Door Install | 1d | 2026-04-15 | 2026-04-15 | T-INT-MF-Z4-1090, T-INT-MF-Z4-1090 FF |  | 37d |  |
| T-INT-MF-Z4-1200 |  | Electrical Connections | 5d | 2026-05-07 | 2026-05-13 | T-INT-MF-Z4-1120, T-INT-MF-Z4-1090, T-INT-MF-Z4-1230 |  | 8d |  |
| T-INT-MF-Z4-1180 |  | Electrical Fixtures | 5d | 2026-05-14 | 2026-05-21 | T-INT-MF-Z4-1130, P-PRO-747, P-PRO-777, T-INT-MF-Z4-1090, T-INT-MF-Z4-1200 |  | 8d |  |

| ID | WBS | Task | Duration | Start | Finish | Predecessors | Complete | Total float |
| --- | --- | --- | --- | --- | --- | --- | --- | --- |
| T-INT-MF-Z4-1210 |  | Final Paint | 5d | 2026-05-14 | 2026-05-21 | T-INT-MF-Z4-1200, T-INT-MF-Z4-1190 |  | 17d |
|  | 5 | **Deficiency** |  |  |  |  |  |  |
|  | 5 | **ZONE #5 - NATATORIUM, STEAM AND SAUNA, VIEWING** |  | 2025-11-21 | 2026-06-09 |  |  |  |
|  | 8 | **North Natatorium** |  | 2025-11-21 | 2026-05-04 |  |  |  |
| T-INT-MF-Z5-9000 |  | Zone 05 Completion- North Natatorium | 0d | 2026-05-04 | 2026-05-04 | T-INT-MF-Z5-1280 FF, T-INT-MF-Z5-1300 FF, T-INT-MF-Z5-2760 FF, T-INT-MF-Z5-1040 FF, T-INT-MF-Z5-1140 FF, T-INT-MF-Z5-1220 FF, T-INT-MF-Z5-1030 FF, T-INT-MF-Z5-1320 FF, T-INT-MF-Z5-2750 FF, T-INT-MF-Z5-2740 FF, T-INT-MF-Z5-1290 FF, T-INT-MF-Z5-1010 FF, T-INT-MF-Z5-1130 FF, T-INT-MF-Z5-1270 FF, T-INT-MF-Z5-2780 FF, T-INT-MF-Z5-1340 FF, T-INT-MF-Z5-1050 FF, T-INT-MF-Z5-2770 FF, T-INT-MF-Z5-1310 FF, T-INT-MF-Z5-2900 FF, T-INT-MF-Z5-1120 FF, T-INT-MF-Z5-2790 FF, T-INT-MF-Z5-1020 FF, T-INT-MF-Z5-1100 FF, T-INT-MF-Z5-1080 FF, T-INT-MF-Z5-1090 FF, T-INT-MF-Z5-1150 FF, T-INT-MF-Z5-2310 FF, T-INT-MF-Z5-1210 FF, T-INT-MF-Z5-2920 FF, T-INT-MF-Z5-2870 FF, T-INT-MF-Z5-2860 FF, T-INT-MF-Z5-1180 FF, T-INT-MF-Z5-1230 FF, T-INT-MF-Z5-1110 FF |  | 70d |
|  | 1 | **Prep & Rough-In's** |  | 2025-11-21 | 2026-03-09 |  |  |  |
| T-INT-MF-Z5-1280 |  | Remove Tarps N Wall | 0d | 2025-11-21 A | 2025-11-21 A | T-INT-MF-Z2-1050 | 100% |  |
| T-INT-MF-Z5-1300 |  | Leisure Pool- Setup DanceFloor Scaffold | 3d | 2025-11-24 A | 2025-12-01 A | C-FDN-NN-S6/S2A-1080, C-SOG-S1C/D-1060, C-FDN-A14-1090, C-FDN-A15-1040, C-FDN-PH1-1010, C-FDN-PH3-1000, C-FDN-PH3-1010, MIL-C-670, C-FDN-NN-1690, C-FDN-NN-1700, C-FDN-SN-S1E/S1F/S7/S2B-1100 FF, C-FDN-A8-1070 FF, C-FDN-PH3-1010 FF, MIL-C-650 FF | 100% |  |
| T-INT-MF-Z5-1220 |  | HVAC Wall Rough-Ins | 5d | 2025-11-26 A | 2026-01-07 A | T-INT-MF-Z5-1280, C-Z5-NN-HVAC-1000 FF | 100% |  |
| T-INT-MF-Z5-2760 |  | Permanent Gas Connection | 0d | 2025-12-03 A | 2025-12-03 A |  | 100% |  |
| T-INT-MF-Z5-1040 |  | Leak Test Pool B | 15d | 2025-12-04 A | 2025-12-16 A | C-FDN-A7-1130, C-FDN-A8-1080, X-LP-1020, C-FDN-A15-1030, C-SOG-S1C/D-1060, C-FDN-SN-LPT-1040, C-FDN-A15-1040, C-FDN-NN-S6/S2A-1080, C-FDN-A14-1090, C-FDN-A7-SN-1390 SS+10d, T-INT-MF-Z5-1300, C-FDN-SN-S1E/S1F/S7/S2B-1100, C-FDN-A8-1070, C-FDN-PH3-1010, MIL-C-650, IPP-QAQC-299 | 100% |  |
| T-INT-MF-Z5-1140 |  | Hanger Installation | 5d | 2025-12-04 A | 2025-12-17 A | T-INT-MF-Z5-1300 | 100% |  |
| T-INT-MF-Z5-1030 |  | Ceiling Electrical | 5d | 2025-12-08 A | 2025-12-19 A | T-INT-MF-Z5-1300 | 100% |  |
| T-INT-MF-Z5-1320 |  | Electrical Wall Rough-Ins | 10d | 2025-12-09 A | 2026-01-14 A | T-INT-MF-Z5-1280, C-ENV-SID-CL-AC-1110, T-INT-MF-Z5-2750 SS, T-INT-MF-Z5-2750, C-Z5-NN-ELEC-1010 SS | 100% |  |
| T-INT-MF-Z5-2740 |  | Leak Test Pool C | 6d | 2025-12-16 A | 2026-01-06 A | C-FDN-A7-1130, C-FDN-A8-1080, X-LP-1020, C-FDN-A15-1030, C-SOG-S1C/D-1060, C-FDN-SN-LPT-1040, C-FDN-A15-1040, C-FDN-NN-S6/S2A-1080, C-FDN-A14-1090, C-FDN-A7-SN-1390 SS+10d, T-INT-MF-Z5-1300, C-FDN-SN-S1E/S1F/S7/S2B-1100, C-FDN-A8-1070, C-FDN-PH3-1010, MIL-C-650, C-FDN-NN-1480 | 100% |  |
| T-INT-MF-Z5-1010 |  | Acoustic Spray | 8d | 2025-12-19 A | 2026-01-09 A | P-PRO-213, T-INT-MF-Z5-1300, T-INT-MF-Z5-1140, T-INT-MF-Z5-1030 SS+8d | 100% |  |
| T-INT-MF-Z5-2750 |  | Wall & Bulkhead Framing | 4d | 2025-12-22 A | 2026-01-14 A | T-INT-MF-Z2-1050, T-INT-MF-Z5-1280, T-INT-MF-Z5-1220 FF | 100% |  |
| T-INT-MF-Z5-1290 |  | Cement Board Install | 5d | 2026-01-06 A | 2026-01-23 | T-INT-MF-Z5-1220 SS+3d, T-INT-MF-Z5-1320, IPP-QAQC-259 FF, C-MOB-210, C-Z5-NN-ELEC-1010 FF |  | 8d |
| T-INT-MF-Z5-1340 |  | Sprinkler Ceiling | 5d | 2026-01-19 | 2026-01-23 | T-INT-MF-Z5-1010 |  | 2d |
| T-INT-MF-Z5-1050 |  | Ceiling Painting | 4d | 2026-01-26 | 2026-01-29 | T-INT-MF-Z5-1340 |  | 2d |
| T-INT-MF-Z5-1130 |  | Wall Cladding (Z Bars & J Trim) | 5d | 2026-01-26 | 2026-01-30 | T-INT-MF-Z5-1290 |  | 8d |
| T-INT-MF-Z5-9020 |  | Ceiling Clean | 2d | 2026-01-30 | 2026-02-02 | T-INT-MF-Z5-1050 |  | 2d |
| T-INT-MF-Z5-1270 |  | Wall Spray Foam | 5d | 2026-02-02 | 2026-02-06 | T-INT-MF-Z5-1130 |  | 33d |
| T-INT-MF-Z5-2780 |  | High Performance Wall Coating- North | 5d | 2026-02-02 | 2026-02-06 | T-INT-MF-Z5-1130 |  | 8d |
| T-INT-MF-Z5-1310 |  | Leisure Pool- Dismantle Dancefloor Scaffolding | 5d | 2026-02-03 | 2026-02-09 | T-INT-MF-Z5-1300, T-INT-MF-Z5-1050, T-INT-MF-Z5-9020 |  | 2d |
| T-INT-MF-Z5-1020 |  | Ceiling Mechanical (Includes Perimeter HVAC) | 20d | 2026-02-09 | 2026-03-09 | T-INT-MF-Z5-2780 |  | 15d |
| T-INT-MF-Z5-2770 |  | High Performance Wall Coating- West | 8d | 2026-02-09 | 2026-02-19 | T-INT-MF-Z5-2780 |  | 8d |
| T-INT-MF-Z5-2900 |  | Pool Slab Remediation | 3d | 2026-02-10 | 2026-02-12 | T-INT-MF-Z5-1310 |  | 2d |
| T-INT-MF-Z5-1120 |  | High Performance Wall Coating- East | 9d | 2026-02-20 | 2026-03-04 | T-INT-MF-Z5-2770 |  | 8d |
| T-INT-MF-Z5-2790 |  | Wall Cladding | 10d | 2026-02-20 | 2026-03-05 | T-INT-MF-Z5-1270, T-INT-MF-Z5-2780, T-INT-MF-Z5-2770 |  | 25d |
|  | 2 | **Fixtures** |  | 2026-02-27 | 2026-03-25 |  |  |  |
| T-INT-MF-Z5-1100 |  | Waterslide Stair and Railing Steel | 5d | 2026-02-27 | 2026-03-05 | C-FDN-NN-S6/S2A-1080, T-INT-MF-Z5-2780, T-INT-MF-Z5-2790 SS+5d, T-INT-MF-Z5-1020 SS+7d |  | 25d |
| T-INT-MF-Z5-1080 |  | Electrical Wiring Pulling & Fixtures | 15d | 2026-03-05 | 2026-03-25 | T-INT-MF-Z5-1120 |  | 47d |
|  | 3 | **Tiling** |  | 2026-01-19 | 2026-05-04 |  |  |  |
| T-INT-MF-Z5-1090 |  | Tiling - North Natatorium Topping | 14d | 2026-01-19 | 2026-02-05 | T-INT-MF-Z5-1040, T-INT-MF-Z5-1010 |  | 6d |
| T-INT-MF-Z5-1150 |  | Tiling - Family Hot Tub (Pool C) | 15d | 2026-02-06 | 2026-02-27 | T-INT-MF-Z5-1090, IPP-QAQC-190 SS+8d, T-INT-MF-Z5-2740 |  | 62d |
| T-INT-MF-Z5-2310 |  | Tiling - Leisure Pool (Pool B) | 30d | 2026-02-13 | 2026-03-27 | T-INT-MF-Z5-2360, IPP-QAQC-190 SS+10d, C-FDN-NN-S6/S2A-1080, C-SOG-S1C/D-1060, C-FDN-A14-1090, C-FDN-A15-1040, C-FDN-PH1-1010, C-FDN-PH3-1000, C-FDN-PH3-1010, MIL-C-670, T-INT-MF-Z5-1090, T-INT-MF-Z5-1310, T-INT-MF-Z5-2900, T-INT-MF-Z5-1040 |  | 2d |
| T-INT-MF-Z5-1210 |  | Tiling - North Floor | 15d | 2026-03-30 | 2026-04-20 | T-INT-MF-Z5-1100, T-INT-MF-Z5-1090, IPP-QAQC-190, T-INT-MF-Z5-2740, T-INT-MF-Z5-2310, T-INT-MF-Z5-2790 |  | 9d |
| T-INT-MF-Z5-2920 |  | Tiling - North Wall | 10d | 2026-04-21 | 2026-05-04 | T-INT-MF-Z5-2390 SS+15d, T-INT-MF-Z5-1210 |  | 14d |
| T-INT-MF-Z5-2940 |  | Tile Cleaning | 3d | 2026-04-21 | 2026-04-23 | T-INT-MF-Z5-2920 SS |  | 24d |
|  | 6 | **Crew 2** |  |  |  |  |  |  |
|  | 2 | **(New WBS)** |  |  |  |  |  |  |
|  | 6 | **Curing** |  | 2026-02-28 | 2026-04-03 |  |  |  |
| T-INT-MF-Z5-2870 |  | Curing-Family Hot Tub | 7d | 2026-02-28 | 2026-03-06 | T-INT-MF-Z5-1150 |  | 160d |
| T-INT-MF-Z5-2860 |  | Curing- Leisure Pool | 7d | 2026-03-28 | 2026-04-03 | T-INT-MF-Z5-2310 |  | 55d |
|  | 4 | **Finishing** |  | 2026-03-05 | 2026-03-27 |  |  |  |
| T-INT-MF-Z5-1180 |  | Interior Glazing works (Viewing Area, Change Rooms) | 6d | 2026-03-05 | 2026-03-12 | P-PRO-183, T-INT-MF-Z5-1120 |  | 80d |
| T-INT-MF-Z5-1230 |  | Waterslide and Platform Installation | 11d | 2026-03-06 | 2026-03-20 | P-PRO-152, T-INT-MF-Z5-1100 |  | 74d |
| T-INT-MF-Z5-1110 |  | Pool Fixtures- Water Features and Deck Goods. | 6d | 2026-03-20 | 2026-03-27 | P-PRO-173, T-INT-MF-Z5-1040 FF, T-INT-MF-Z5-1090 FF, IPP-QAQC-190 FF, T-INT-MF-Z5-2740 FF, T-INT-MF-Z5-2310 FF |  | 69d |
|  | 5 | **Deficiency** |  |  |  |  |  |  |
|  | 1 | **South Natatorium** |  | 2025-12-01 | 2026-06-09 |  |  |  |
| T-INT-MF-Z5-9010 |  | Zone 05 Completion- SouthNatatorium | 0d | 2026-06-09 | 2026-06-09 | T-INT-MF-Z5-2670 FF, T-INT-MF-Z5-2240 FF, T-INT-MF-Z5-2700 FF, T-INT-MF-Z5-2710 FF, T-INT-MF-Z5-2220 FF, T-INT-MF-Z5-2460 FF, T-INT-MF-Z5-2360 FF, T-INT-MF-Z5-2850 FF, T-INT-MF-Z5-2720 FF, T-INT-MF-Z5-2630 FF, T-INT-MF-Z5-2730 FF, T-INT-MF-Z5-2820 FF, T-INT-MF-Z5-2260 FF, T-INT-MF-Z5-2450 FF, T-INT-MF-Z5-2690 FF, T-INT-MF-Z5-2910 FF, T-INT-MF-Z5-2370 FF, T-INT-MF-Z5-2230 FF, T-INT-MF-Z5-2800 FF, T-INT-MF-Z5-2810 FF, T-INT-MF-Z5-2830 FF, T-INT-MF-Z5-2280 FF, T-INT-MF-Z5-2330 FF, T-INT-MF-Z5-2410 FF, T-INT-MF-Z5-2390 FF, T-INT-MF-Z5-2400 FF, T-INT-MF-Z5-2180 FF, T-INT-MF-Z5-2930 FF, T-INT-MF-Z5-1200 FF, T-INT-MF-Z5-2430 FF, T-INT-MF-Z5-2880 FF, T-INT-MF-Z5-2890 FF, T-INT-MF-Z5-2380 FF, T-INT-MF-Z5-2210 FF, T-INT-MF-Z5-2010 FF, T-INT-MF-Z5-2020 FF, T-INT-MF-Z5-2090 FF, T-INT-MF-Z5-2030 FF, T-INT-MF-Z5-2040 FF, T-INT-MF-Z5-2050 FF, T-INT-MF-Z5-2070 FF, T-INT-MF-Z5-2080 FF, T-INT-MF-Z5-2100 FF, T-INT-MF-Z5-2110 FF, T-INT-MF-Z5-2120 FF, T-INT-MF-Z5-2130 FF, T-INT-MF-Z5-2170 FF, T-INT-MF-Z5-2150 FF, T-INT-MF-Z5-2160 FF |  | 45d |
|  | 1 | **Prep & Rough-In's** |  | 2025-12-01 | 2026-04-21 |  |  |  |
| T-INT-MF-Z5-2670 |  | Lap Pool- Setup DanceFloor Scaffold | 5d | 2025-12-01 A | 2025-12-16 A | C-FDN-SN-S1E/S1F/S7/S2B-1100, C-FDN-SN-LPT-1040, C-FDN-A8-1070, C-FDN-PH3-1010, MIL-C-650 FS+5d, C-FDN-SN-LPT-1050, C-ENV-LP-1000 | 100% |  |
| T-INT-MF-Z5-2710 |  | HVAC Wall Rough-Ins | 10d | 2025-12-17 A | 2026-01-12 A | T-INT-MF-Z5-1220 | 100% |  |
| T-INT-MF-Z5-2850 |  | Leak Test Pool D | 15d | 2025-12-18 A | 2026-02-06 | T-INT-MF-Z5-2740 |  | 11d |
| T-INT-MF-Z5-2240 |  | Ceiling Electrical | 5d | 2026-01-05 A | 2026-01-23 | C-FDN-NN-S6/S2A-1080, C-SOG-S1C/D-1060, C-FDN-A14-1090, C-FDN-A15-1040, C-FDN-PH1-1010, C-FDN-PH3-1000, C-FDN-PH3-1010, MIL-C-670, T-INT-MF-Z5-2670 |  | 31d |
| T-INT-MF-Z5-2700 |  | Hanger Installation | 5d | 2026-01-05 A | 2026-01-09 A | C-FDN-NN-S6/S2A-1080, C-SOG-S1C/D-1060, C-FDN-A14-1090, C-FDN-A15-1040, C-FDN-PH1-1010, C-FDN-PH3-1000, C-FDN-PH3-1010, MIL-C-670, T-INT-MF-Z5-2670 | 100% |  |
| T-INT-MF-Z5-2360 |  | Leak Test Pool A | 15d | 2026-01-09 A | 2026-01-30 | C-FDN-A7-1130, C-FDN-A8-1080, X-LP-1020, C-FDN-A15-1030, C-SOG-S1C/D-1060, C-FDN-SN-LPT-1040, C-FDN-A15-1040, C-FDN-NN-S6/S2A-1080, C-FDN-A14-1090, C-FDN-A7-SN-1390 SS+10d, T-INT-MF-Z5-2670, C-FDN-PH1-1010, C-FDN-PH3-1000, C-FDN-PH3-1010, MIL-C-670, T-INT-MF-Z5-2700 | 100% | 11d |
| T-INT-MF-Z5-2220 |  | Acoustic Spray | 7d | 2026-01-12 A | 2026-01-20 | P-PRO-213, T-INT-MF-Z5-2700, C-FDN-NN-S6/S2A-1080, C-SOG-S1C/D-1060, C-FDN-A14-1090, C-FDN-A15-1040, C-FDN-PH1-1010, C-FDN-PH3-1000, C-FDN-PH3-1010, MIL-C-670, T-INT-MF-Z5-2670, T-INT-MF-Z5-2240 SS, T-INT-MF-Z5-1010 |  | 31d |
| T-INT-MF-Z5-2460 |  | Wall & Bulkhead Framing | 5d | 2026-01-19 | 2026-01-23 | C-FDN-NN-S6/S2A-1080, C-SOG-S1C/D-1060, C-FDN-A14-1090, C-FDN-A15-1040, C-FDN-PH1-1010, C-FDN-PH3-1000, C-FDN-PH3-1010, MIL-C-670, T-INT-MF-Z5-1280, T-INT-MF-Z5-2710, C-ENV-SID-CL-S-1060 |  | 19d |
| T-INT-MF-Z5-2720 |  | Electrical Wall Rough-Ins | 10d | 2026-01-26 | 2026-02-06 | T-INT-MF-Z5-2460, C-ENV-SID-CL-AC-1110, T-INT-MF-Z5-1320 |  | 24d |
| T-INT-MF-Z5-2730 |  | Sprinkler Ceiling | 5d | 2026-01-26 | 2026-01-30 | T-INT-MF-Z5-2220, T-INT-MF-Z5-1340 |  | 28d |
| T-INT-MF-Z5-2260 |  | Ceiling Painting | 5d | 2026-02-02 | 2026-02-06 | T-INT-MF-Z5-2730, T-INT-MF-Z5-1050 |  | 28d |
| T-INT-MF-Z5-2630 |  | Cement Board Install | 5d | 2026-02-03 | 2026-02-09 | T-INT-MF-Z5-2710, T-INT-MF-Z5-2720 SS+6d, T-INT-MF-Z5-1290, IPP-QAQC-269 |  | 24d |
| T-INT-MF-Z5-9030 |  | Ceiling Clean | 2d | 2026-02-09 | 2026-02-10 | T-INT-MF-Z5-2260 |  | 28d |
| T-INT-MF-Z5-2820 |  | Wall Cladding (Z Bars & J Trim) | 5d | 2026-02-10 | 2026-02-17 | T-INT-MF-Z5-2630, T-INT-MF-Z5-1130 |  | 29d |
| T-INT-MF-Z5-2690 |  | Lap Pool- Dismantle Dancefloor Scaffolding | 3d | 2026-02-11 | 2026-02-13 | T-INT-MF-Z5-2670, T-INT-MF-Z5-2360, T-INT-MF-Z5-2260, T-INT-MF-Z5-9030 |  | 28d |
| T-INT-MF-Z5-2910 |  | Pool Slab Remediation | 3d | 2026-02-17 | 2026-02-19 | T-INT-MF-Z5-2690 |  | 28d |
| T-INT-MF-Z5-2450 |  | Wall Spray Foam | 3d | 2026-02-18 | 2026-02-20 | T-INT-MF-Z5-2820 |  | 39d |

| ID | WBS | Task | Duration | Start | Finish | Predecessors | Complete | Total float | Constraint |
| --- | --- | --- | --- | --- | --- | --- | --- | --- | --- |
| T-INT-MF-Z5-2370 |  | High Performance Wall Coating- East | 9d | 2026-03-05 | 2026-03-17 | T-INT-MF-Z5-2460 FF, T-INT-MF-Z5-2630, T-INT-MF-Z5-1120 |  | 8d |  |
| T-INT-MF-Z5-2230 |  | Ceiling Mechanical (Includes Perimeter HVAC) | 12d | 2026-03-10 | 2026-03-25 | C-FDN-NN-S6/S2A-1080, C-SOG-S1C/D-1060, C-FDN-A14-1090, C-FDN-A15-1040, C-FDN-PH1-1010, C-FDN-PH3-1000, C-FDN-PH3-1010, MIL-C-670, T-INT-MF-Z5-1020, T-INT-MF-Z5-2820 |  | 15d |  |
| T-INT-MF-Z5-2800 |  | High Performance Wall Coating- South | 6d | 2026-03-18 | 2026-03-25 | T-INT-MF-Z5-2370 |  | 8d |  |
| T-INT-MF-Z5-2810 |  | High Performance Wall Coating- West | 8d | 2026-03-26 | 2026-04-07 | T-INT-MF-Z5-2800 |  | 8d |  |
| T-INT-MF-Z5-2830 |  | Wall Cladding | 10d | 2026-04-08 | 2026-04-21 | T-INT-MF-Z5-2450, T-INT-MF-Z5-2810, P-PRO-193 |  | 8d |  |
|  | 2 | **Fixtures** |  | 2026-03-26 | 2026-04-10 |  |  |  |  |
| T-INT-MF-Z5-2280 |  | Electrical Wiring Pulling & Fixtures | 11d | 2026-03-26 | 2026-04-10 | T-INT-MF-Z5-2720, T-INT-MF-Z5-2730, T-INT-MF-Z5-2370, T-INT-MF-Z5-2800 |  | 26d |  |
|  | 3 | **Tiling** |  | 2026-02-06 | 2026-06-09 |  |  |  |  |
| T-INT-MF-Z5-2330 |  | Tiling - South Natatorium Topping | 10d | 2026-02-06 | 2026-02-20 | T-INT-MF-Z5-1090 |  | 49d |  |
| T-INT-MF-Z5-2390 |  | Tiling - Lap Pool (Pool A)- After Leisure Pool | 35d | 2026-03-30 | 2026-05-19 | C-FDN-SN-LPT-1040, T-INT-MF-Z5-2690, T-INT-MF-Z5-2310, T-INT-MF-Z5-2360, IPP-QAQC-190 FF, T-INT-MF-Z5-2910 |  | 2d |  |
| T-INT-MF-Z5-2410 |  | Tiling - South Floor | 15d | 2026-04-22 | 2026-05-12 | T-INT-MF-Z5-2330, C-FDN-A7-SN-1620, C-FDN-NN-S6/S2A-1080, T-INT-MF-Z5-2280 SS, T-INT-MF-Z5-2830, T-INT-MF-Z5-1210 |  | 8d |  |
| T-INT-MF-Z5-2400 |  | Tiling - Adult Hot Tub (Pool D)- After Leisure Pool | 15d | 2026-04-28 | 2026-05-19 | C-FDN-A7-SN-1390, T-INT-MF-Z5-2390 FF |  | 7d |  |
| T-INT-MF-Z5-2180 |  | Tiling - Steam | 15d | 2026-05-06 | 2026-05-27 | T-INT-MF-Z5-2410 SS+10d, T-INT-MF-Z5-2050 |  | 18d |  |
| T-INT-MF-Z5-1200 |  | Tiling - Sauna | 15d | 2026-05-13 | 2026-06-03 | T-INT-MF-Z5-2180 SS+5d, T-INT-MF-Z5-2130, T-INT-MF-Z5-2170 |  | 22d |  |
| T-INT-MF-Z5-2440 |  | Tile Cleaning | 3d | 2026-05-13 | 2026-05-15 | T-INT-MF-Z5-2930 SS |  | 8d |  |
| T-INT-MF-Z5-2930 |  | Tiling - South Wall | 10d | 2026-05-13 | 2026-05-27 | T-INT-MF-Z5-2920, T-INT-MF-Z5-2410 |  | 8d |  |
| T-INT-MF-Z5-2430 |  | Tiling - Outdoor Adult Hot Tub | 15d | 2026-05-20 | 2026-06-09 | C-FDN-A18-1340, MIL-C-470, T-INT-MF-Z5-2390 |  | 22d |  |
|  | 6 | **Crew 2** |  |  |  |  |  |  |  |
|  | 8 | **Curing** |  | 2026-05-20 | 2026-05-26 |  |  |  |  |
| T-INT-MF-Z5-2880 |  | Curing- Lap Pool | 7d | 2026-05-20 | 2026-05-26 | T-INT-MF-Z5-2390 |  | 2d |  |
| T-INT-MF-Z5-2890 |  | Curing- Adult Hot Tub | 7d | 2026-05-20 | 2026-05-26 | T-INT-MF-Z5-2400 |  | 79d |  |
|  | 4 | **Finishing** |  | 2026-02-10 | 2026-03-27 |  |  |  |  |
| T-INT-MF-Z5-2380 |  | Interior Glazing works (Steam, Sauna South Vestibule) | 5d | 2026-02-10 | 2026-02-17 | P-PRO-183, T-INT-MF-Z5-2630 |  | 97d | start on or after 2026-01-08 |
| T-INT-MF-Z5-2210 |  | Pool Fixtures- Water Features and Deck Goods. | 12d | 2026-03-12 | 2026-03-27 | P-PRO-173, T-INT-MF-Z5-2310 FF |  | 68d |  |
|  | 6 | **Steam Room** |  | 2025-12-17 | 2026-06-01 |  |  |  |  |
| T-INT-MF-Z5-2010 |  | Block Wall | 3d | 2025-12-17 A | 2025-12-19 A | C-FDN-SN-S1E/S1F/S7/S2B-1100 | 100% |  |  |
| T-INT-MF-Z5-2020 |  | Framing | 3d | 2026-01-26 | 2026-01-28 | T-INT-MF-Z5-2460, T-INT-MF-Z5-2010 |  | 19d |  |
| T-INT-MF-Z5-2090 |  | Concrete Benches | 5d | 2026-01-29 | 2026-02-04 | T-INT-MF-Z5-2010, T-INT-MF-Z5-2020 |  | 49d |  |
| T-INT-MF-Z5-2030 |  | Mechanical Rough In | 2d | 2026-02-05 | 2026-02-06 | T-INT-MF-Z5-2020, T-INT-MF-Z5-2090 |  | 71d |  |
| T-INT-MF-Z5-2040 |  | Electrical Rough In | 2d | 2026-02-09 | 2026-02-10 | T-INT-MF-Z5-2030 |  | 71d |  |
| T-INT-MF-Z5-2050 |  | Drywall Mud Tape & Sand | 5d | 2026-02-11 | 2026-02-18 | T-INT-MF-Z5-2040, T-INT-MF-Z5-2030 |  | 71d |  |
| T-INT-MF-Z5-2070 |  | Mechanical Fixtures | 3d | 2026-05-28 | 2026-06-01 | T-INT-MF-Z5-2180 |  | 18d |  |
| T-INT-MF-Z5-2080 |  | Electrical Fixtures | 3d | 2026-05-28 | 2026-06-01 | T-INT-MF-Z5-2070 SS |  | 24d |  |
|  | 7 | **Sauna Room** |  | 2026-02-02 | 2026-06-09 |  |  |  |  |
| T-INT-MF-Z5-2100 |  | Framing | 5d | 2026-02-02 | 2026-02-06 | C-FDN-SN-S1E/S1F/S7/S2B-1100, T-INT-MF-Z4-1000, T-INT-MF-Z5-2020 |  | 17d |  |
| T-INT-MF-Z5-2110 |  | Mechanical Rough In | 5d | 2026-02-09 | 2026-02-13 | T-INT-MF-Z5-2100, T-INT-MF-Z5-2030 |  | 72d |  |
| T-INT-MF-Z5-2120 |  | Electrical Rough In | 5d | 2026-02-11 | 2026-02-18 | T-INT-MF-Z5-2040 |  | 75d |  |
| T-INT-MF-Z5-2130 |  | Drywall Mud Tape & Sand | 5d | 2026-02-17 | 2026-02-23 | T-INT-MF-Z5-2120 FF, T-INT-MF-Z5-2110 |  | 72d |  |
| T-INT-MF-Z5-2170 |  | Sauna Cedar Walls and Ceiling Install | 5d | 2026-02-24 | 2026-03-02 | P-PRO-263, T-INT-MF-Z5-2130 |  | 72d |  |
| T-INT-MF-Z5-2150 |  | Mechanical Fixtures | 3d | 2026-06-02 | 2026-06-04 | T-INT-MF-Z5-2170, T-INT-MF-Z5-2070 |  | 18d |  |
| T-INT-MF-Z5-2160 |  | Electrical Fixtures | 3d | 2026-06-05 | 2026-06-09 | T-INT-MF-Z5-2150, T-INT-MF-Z5-2150 FF |  | 18d |  |
|  | 5 | **Deficiency** |  |  |  |  |  |  |  |
|  | 6 | **ZONE #6 - LOBBY AND VESTIBULE** |  | 2025-12-02 | 2026-06-19 |  |  |  |  |
| T-INT-MF-Z6-1100 |  | Install Stair Railing | 5d | 2025-12-02 A | 2025-12-02 A |  | 100% |  |  |
| T-INT-MF-Z6-1040 |  | Place of FCU | 3d | 2026-01-20 | 2026-01-22 | P-PRO-547, P-PRO-617 FF |  | 16d | start on or after 2026-01-20 |
| T-INT-MF-Z6-1220 |  | Ductwork Install | 7d | 2026-01-23 | 2026-02-02 | T-INT-MF-Z6-1040 |  | 16d |  |
| T-INT-MF-Z6-1000 |  | Steel Stud Framing - Full Height | 4d | 2026-02-03 | 2026-02-06 | T-INT-MF-Z5-2460, T-INT-MF-Z5-2100 SS, T-INT-MF-Z6-1220 |  | 16d |  |
| T-INT-MF-Z6-1010 |  | Electrical Rough In's | 15d | 2026-02-09 | 2026-03-02 | T-INT-MF-Z6-1000 |  | 16d |  |
| T-INT-MF-Z6-1020 |  | Door Frames | 5d | 2026-02-09 | 2026-02-13 | T-INT-MF-Z6-1000 |  | 27d |  |
| T-INT-MF-Z6-1030 |  | Mechanical Rough In's | 15d | 2026-02-09 | 2026-03-02 | T-INT-MF-Z6-1000 |  | 16d |  |
| T-INT-MF-Z6-1050 |  | Drywall Install | 5d | 2026-03-04 | 2026-03-10 | T-INT-MF-Z6-1030, T-INT-MF-Z6-1010, T-INT-MF-Z6-1020, MIL-C-440, MIL-C-490, MIL-C-710, IPP-QAQC-279 |  | 16d |  |
| T-INT-MF-Z6-1060 |  | Mud, Tape and Sand | 7d | 2026-03-11 | 2026-03-19 | T-INT-MF-Z6-1050, T-INT-MF-Z6-1010 |  | 16d |  |
| T-INT-MF-Z6-1070 |  | Prime and Paint | 10d | 2026-03-20 | 2026-04-02 | T-INT-MF-Z6-1060 |  | 16d |  |
| T-INT-MF-Z6-1080 |  | Main Entrance Exterior and Interior Aluminum Storefront and Glazing | 8d | 2026-04-06 | 2026-04-15 | T-INT-MF-Z6-1070 |  | 16d |  |
| T-INT-MF-Z6-1090 |  | Ceiling T-Bar and Permieter/ Devices Tiles | 10d | 2026-04-06 | 2026-04-17 | T-INT-MF-Z6-1070 |  | 16d |  |
| T-INT-MF-Z6-1210 |  | Interior Storefront (BL 2, 7 | 10d | 2026-04-16 | 2026-04-29 | T-INT-MF-Z6-1080 |  | 16d |  |
| T-INT-MF-Z6-1140 |  | Electrical Fixtures | 15d | 2026-04-20 | 2026-05-08 | T-INT-MF-Z6-1070, P-PRO-747, P-PRO-777, T-INT-MF-Z6-1090 |  | 16d |  |
| T-INT-MF-Z6-1110 |  | Millworks | 10d | 2026-04-21 | 2026-05-04 | T-INT-MF-Z6-1070, T-INT-MF-Z3-1130 |  | 6d |  |
| T-INT-MF-Z6-1120 |  | Flooring | 7d | 2026-05-05 | 2026-05-13 | T-INT-MF-Z6-1090, T-INT-MF-Z6-1110 |  | 6d |  |
| T-INT-MF-Z6-1190 |  | Millwork Countertops | 1d | 2026-05-05 | 2026-05-05 | T-INT-MF-Z6-1110, T-INT-MF-Z3-1240 |  | 12d |  |
| T-INT-MF-Z6-1130 |  | Mechanical Fixtures | 15d | 2026-05-14 | 2026-06-04 | T-INT-MF-Z6-1070, T-INT-MF-Z6-1120, P-PRO-677, P-PRO-627, P-PRO-647, P-PRO-657, T-INT-MF-Z6-1210, T-INT-MF-Z6-1040, T-INT-MF-Z6-1190, T-INT-MF-Z6-1090 |  | 6d |  |
| T-INT-MF-Z6-1150 |  | Final Paint | 5d | 2026-06-05 | 2026-06-11 | T-INT-MF-Z6-1120, T-INT-MF-Z6-1100, T-INT-MF-Z6-1140, T-INT-MF-Z6-1130, T-INT-MF-Z6-1080, T-INT-MF-Z6-1190 |  | 11d |  |
| T-INT-MF-Z6-1160 |  | Install of Remaining Ceiling Tiles | 5d | 2026-06-12 | 2026-06-18 | T-INT-MF-Z6-1090, T-INT-MF-Z6-1150 |  | 12d |  |
| T-INT-MF-Z6-1200 |  | Glass Doors, Hardware and Operators (Main Entrance, Viewing Area, Zone 2, South Vestibule) | 6d | 2026-06-12 | 2026-06-19 | T-INT-MF-Z6-1150 |  | 11d |  |
| T-INT-MF-Z6-9000 |  | Zone 06 Completion | 0d | 2026-06-19 | 2026-06-19 | T-INT-MF-Z6-1220 FF, T-INT-MF-Z6-1000 FF, T-INT-MF-Z6-1020 FF, T-INT-MF-Z6-1030 FF, T-INT-MF-Z6-1010 FF, T-INT-MF-Z6-1050 FF, T-INT-MF-Z6-1060 FF, T-INT-MF-Z6-1070 FF, T-INT-MF-Z6-1080 FF, T-INT-MF-Z6-1090 FF, T-INT-MF-Z6-1110 FF, T-INT-MF-Z6-1040 FF, T-INT-MF-Z6-1120 FF, T-INT-MF-Z6-1210 FF, T-INT-MF-Z6-1140 FF, T-INT-MF-Z6-1130 FF, T-INT-MF-Z6-1190 FF, T-INT-MF-Z6-1150 FF, T-INT-MF-Z6-1160 FF, T-INT-MF-Z6-1200 FF, T-INT-MF-Z6-1100 FF |  | 37d |  |
|  | 3 | **SECOND FLOOR** |  | 2025-01-28 | 2026-03-19 |  |  |  |  |
| T-INT-SF-2000 |  | Slab on Deck Concrete and Rebar | 3d | 2025-01-28 A | 2025-01-30 A | C-SS-PH3-1110, C-SS-PH2-1100, C-SS-PH1-1070, C-FDN-PH3-1000 SS, C-FDN-PH3-1010 | 100% |  |  |
| T-INT-SF-2010 |  | Steel Stud Framing - Full Height | 10d | 2025-05-06 A | 2025-05-20 A | T-INT-SF-2000, C-ENV-SID-EW-S-1000 | 100% |  |  |
| T-INT-SF-2040 |  | Ceiling - Mechanical Rough In's | 10d | 2025-10-21 A | 2025-11-07 A | T-INT-SF-2010, P-TEA-21 SS | 100% |  |  |
| T-INT-SF-2030 |  | Ceiling - Electrical Rough In's | 10d | 2025-10-27 A | 2025-12-17 A | T-INT-SF-2010, T-INT-SF-2020 | 100% |  |  |

| ID | WBS | Task | Duration | Start | Finish | Predecessors | Complete | Total float | Constraint |
| --- | --- | --- | --- | --- | --- | --- | --- | --- | --- |
| T-INT-SF-2020 |  | Door Frames | 1d | 2025-12-10 A | 2025-12-10 A | T-INT-SF-2010 | 100% |  |  |
| T-INT-SF-2060 |  | Wall - Mechanical Rough In's | 10d | 2025-12-16 A | 2026-01-09 A | T-INT-SF-2040 | 100% |  |  |
| T-INT-SF-2070 |  | Wall - Electrical Rough In's | 10d | 2025-12-18 A | 2026-01-13 A | T-INT-SF-2030 | 100% |  |  |
| T-INT-SF-2100 |  | Prime plus one Paint Walls | 5d | 2026-01-05 A | 2026-01-09 A | T-INT-SF-2070 | 100% |  |  |
| T-INT-SF-2050 |  | Ceiling Paint | 5d | 2026-01-12 A | 2026-01-16 A | T-INT-SF-2040, T-INT-SF-2030, T-INT-MF-Z1-1190 | 100% |  |  |
| T-INT-SF-2080 |  | Environmental Wall | 5d | 2026-01-26 | 2026-01-30 | MIL-C-440, T-INT-SF-2070, T-INT-SF-2060, IPP-QAQC-201 |  | 134d |  |
| T-INT-SF-9000 |  | Second Floor Interior Completion | 0d | 2026-03-19 | 2026-03-19 | T-INT-SF-2000 FF, T-INT-SF-2010 FF, T-INT-SF-2040 FF, T-INT-SF-2020 FF, T-INT-SF-2030 FF, T-INT-SF-2060 FF, T-INT-SF-2070 FF, T-INT-SF-2050 FF, T-INT-SF-2080 FF, T-INT-SF-2100 FF, T-INT-SF-ELEC-1000 FF, T-INT-SF-ELEC-1020 FF, T-INT-SF-ELEC-1010 FF, T-INT-SF-ELEC-1030 FF, T-INT-SF-ELEC-1040 FF, T-INT-SF-ELEC-1060 FF, T-INT-SF-MR-2050 FF, T-INT-SF-MR-2010 FF, T-INT-SF-MR-2130 FF, T-INT-SF-MR-2020 FF, T-INT-SF-MR-2040 FF, T-INT-SF-MR-2060 FF, T-INT-SF-MR-2070 FF, T-INT-SF-MR-2150 FF, T-INT-SF-MR-2100 FF, T-INT-SF-MR-2110 FF, T-INT-SF-MR-2090 FF, T-INT-SF-MR-2030 FF, T-INT-SF-MR-2120 FF, P-PRO-757 FF, T-INT-SF-MR-2070 SF |  | 101d |  |
|  | 4 | **Electrical Works L2** |  | 2025-10-24 | 2026-03-19 |  |  |  |  |
| T-INT-SF-ELEC-1000 |  | Shaft Wall Complete | 5d | 2025-10-24 A | 2025-10-30 A |  | 100% |  |  |
| T-INT-SF-ELEC-1020 |  | Housekeeping Pads | 5d | 2025-10-28 A | 2025-11-03 A | T-INT-SF-ELEC-1000 | 100% |  |  |
| T-INT-SF-ELEC-1010 |  | Fire Rated Plywood Install | 5d | 2025-12-01 A | 2025-12-05 A | T-INT-SF-ELEC-1000 | 100% |  |  |
| T-INT-SF-ELEC-1030 |  | Install CDP for Roof | 5d | 2026-01-22 | 2026-01-28 | T-INT-SF-ELEC-1020, T-INT-MF-Z1-ER-1160 |  | 99d |  |
| T-INT-SF-ELEC-1040 |  | House Panel Install | 5d | 2026-01-29 | 2026-02-04 | T-INT-SF-ELEC-1030 |  | 99d |  |
| T-INT-SF-ELEC-1060 |  | Ceiling Rough In | 5d | 2026-03-13 | 2026-03-19 | T-INT-SF-ELEC-1040, T-INT-SF-MR-2030 |  | 74d |  |
|  | 1 | **Mechanical Room L2 (AQ205)** |  | 2025-10-28 | 2026-03-16 |  |  |  |  |
| T-INT-SF-MR-2050 |  | Housekeeping Pads (For HRV only) | 5d | 2025-10-28 A | 2025-11-03 A |  | 100% |  |  |
| T-INT-SF-MR-2130 |  | Housekeeping Pads (For AHU only) | 5d | 2025-10-28 A | 2025-11-03 A | T-INT-MF-Z1-ER-1020 FS+1d | 100% |  |  |
| T-INT-SF-MR-2010 |  | Room is Ready to Receive Equipment | 0d | 2025-11-03 A | 2025-11-03 A | T-INT-SF-MR-2130 FF | 100% |  |  |
| T-INT-SF-MR-2020 |  | Place of HRV'S | 25d | 2025-11-06 A | 2025-11-06 A | T-INT-SF-MR-2010, P-PRO-517, T-INT-SF-MR-2040 SS+3d, T-INT-SF-MR-2050 | 100% |  |  |
| T-INT-SF-MR-2040 |  | Place of AHU | 2d | 2025-11-06 A | 2025-11-06 A | P-PRO-527, T-INT-SF-MR-2010, T-INT-SF-MR-2130 | 100% |  |  |
| T-INT-SF-MR-2030 |  | Mechanical Room Fitout Including Piping,Ducts Works (TBC) | 60d | 2025-11-07 A | 2026-03-12 | T-INT-SF-MR-2010 |  | 41d |  |
| T-INT-SF-MR-2060 |  | Place of AC Indoor Unit | 5d | 2026-01-26 | 2026-01-30 | P-PRO-597, T-INT-SF-MR-2010, T-INT-SF-MR-2020 |  | 39d | start on or after 2026-01-26 |
| T-INT-SF-MR-2070 |  | Place of Unit Heater | 5d | 2026-02-02 | 2026-02-06 | T-INT-SF-MR-2060, P-PRO-577, T-INT-SF-MR-2010 |  | 39d |  |
| T-INT-SF-MR-2100 |  | Mechanical Connections for Equipments | 20d | 2026-02-02 | 2026-03-02 | T-INT-SF-MR-2020, T-INT-SF-MR-2040, T-INT-SF-MR-2010, P-PRO-757, T-INT-SF-MR-2070 SS |  | 39d |  |
| T-INT-SF-MR-2150 |  | Install Outside Air Duct | 5d | 2026-02-02 | 2026-02-06 | T-INT-SF-MR-2030 SS, P-PRO-607 |  | 64d |  |
| T-INT-SF-MR-2090 |  | Electrical Connections for Mechanical Equipments | 20d | 2026-02-17 | 2026-03-16 | T-INT-SF-MR-2020, T-INT-SF-MR-2040, T-INT-SF-MR-2100 FF+10d, T-INT-SF-MR-2010, P-PRO-757, T-INT-SF-MR-2070 SS |  | 39d |  |
| T-INT-SF-MR-2110 |  | Final Paint | 5d | 2026-03-03 | 2026-03-09 | T-INT-SF-MR-2100 |  | 44d |  |
| T-INT-SF-MR-2120 |  | Room is Ready | 0d | 2026-03-16 | 2026-03-16 | T-INT-SF-MR-2020 FF, T-INT-SF-MR-2030 FF, T-INT-SF-MR-2040 FF, T-INT-SF-MR-2060 FF, T-INT-SF-MR-2070 FF, T-INT-SF-MR-2100 FF, T-INT-SF-MR-2090 FF, T-INT-SF-MR-2110 FF, T-INT-SF-MR-2150 FF, C-ENV-SID-CL-S-1050 FF, T-INT-SF-MR-2010 FF, P-PRO-757 FF, T-INT-SF-MR-2070 SF |  | 39d |  |
|  | 2 | **Elevator Machine Room** |  |  |  |  |  |  |  |
|  | 6 | **Room Startup** |  |  |  |  |  |  |  |
|  | 3 | **Deficiency** |  |  |  |  |  |  |  |
|  | 4 | **ELEVATOR** |  | 2024-12-21 | 2026-04-08 |  |  |  |  |
| T-MEIT-EL-1000 |  | Hoist Beam Install | 5d | 2024-12-21 A | 2024-12-21 A | C-SS-PH3-1110, C-SS-PH2-1100, C-SS-PH1-1070, C-FDN-PH1-1010 SS, C-FDN-PH3-1000 SS, C-FDN-PH3-1010 | 100% |  |  |
| T-MEIT-EL-1010 |  | Shaft Devices Install | 15d | 2026-01-19 | 2026-02-06 | T-MEIT-EL-1000, T-INT-SF-2070, T-INT-SF-2060 |  | 74d |  |
| T-MEIT-EL-1040 |  | Site Readiness | 0d | 2026-02-06 | 2026-02-06 | T-MEIT-EL-1010 |  | 74d |  |
| T-MEIT-EL-1020 |  | Elevator Fabrication and Delivery | 0d | 2026-02-20 | 2026-02-20 | P-PRO-159 |  | 66d |  |
| T-MEIT-EL-1050 |  | Elevator Installation | 20d | 2026-02-23 | 2026-03-20 | T-MEIT-EL-1040, T-MEIT-EL-1020, IPP-QAQC-199 |  | 66d |  |
| T-MEIT-EL-1060 |  | Shaft Cleandown | 5d | 2026-03-23 | 2026-03-27 | T-MEIT-EL-1050 |  | 66d |  |
| T-MEIT-EL-1070 |  | Elevator Pre-AEDARDSA Inspection Testing | 5d | 2026-03-30 | 2026-04-06 | T-MEIT-EL-1060 |  | 66d |  |
| T-MEIT-EL-1080 |  | Elevator Testing and Commissioning / AEDARDSA Inspection & Acceptance | 2d | 2026-04-07 | 2026-04-08 | T-MEIT-EL-1050, T-MEIT-EL-1070 |  | 66d |  |
|  | 4 | **SITE WORK** |  | 2025-10-08 | 2026-05-05 |  |  |  |  |
|  | 1 | **East Elevation** |  | 2025-10-08 | 2025-11-07 |  |  |  |  |
| C-SW-1060 |  | Prep (East) | 7d | 2025-10-08 A | 2025-10-24 A | P-PRO-273, C-ENV-SID-CL-E-1020 FF, C-ENV-SID-CL-S-1020 FF, MIL-C-720, C-FDN-ACB-1160 FF, C-FDN-A20-1200, C-ENV-SID-GL-S-1020 | 100% |  |  |
| C-SW-1120 |  | Sidewalk and Curbs (East) | 7d | 2025-10-27 A | 2025-10-31 A | C-FDN-ACB-1160, C-FDN-A20-1200, C-SW-1060 | 100% |  |  |
| C-SW-1130 |  | Asphalt paving (East) | 5d | 2025-10-30 A | 2025-11-03 A | P-PRO-273, C-FDN-ACB-1160, C-FDN-A20-1200, C-SW-1120 | 100% |  |  |
| C-SW-1070 |  | Landscaping (East) | 3d | 2025-11-03 A | 2025-11-07 A | C-SW-1060 SS, P-PRO-172, MIL-C-730, C-ENV-SID-CL-N-1020, C-ENV-SID-CL-E-1020, C-SW-1090 FF, C-SW-1120 SS+4d | 100% |  |  |
| C-SW-1180 |  | Boulevard Landscaping | 1d | 2025-11-03 A | 2025-11-07 A | C-SW-1060 SS, P-PRO-172, MIL-C-730, C-ENV-SID-CL-N-1020, C-ENV-SID-CL-E-1020, C-SW-1090 FF, C-SW-1120 SS+4d, C-SW-1070 | 100% |  |  |
|  | 2 | **South Elevation** |  | 2025-10-08 | 2026-05-05 |  |  |  |  |
| C-SW-1140 |  | Prep (South) | 7d | 2025-10-08 A | 2025-10-24 A | P-PRO-273, C-ENV-SID-CL-E-1020 FF-5d, C-ENV-SID-CL-S-1020 FF, MIL-C-720, C-FDN-ACB-1160, C-FDN-A20-1200, C-ENV-SID-GL-S-1020, C-SW-1060 | 100% |  |  |
| C-SW-1170 |  | Sidewalk and Curbs (South) | 5d | 2025-10-27 A | 2025-10-31 A | C-FDN-ACB-1160, C-FDN-A20-1200, C-SW-1060, C-SW-1140, C-SW-1120 | 100% |  |  |
| C-SW-1190 |  | Landscape (South) | 4d | 2025-11-10 A | 2025-11-14 A | P-PRO-273, C-FDN-ACB-1160, C-FDN-A20-1200, C-SW-1120, C-SW-1170 SS, C-SW-1070 | 100% |  |  |
| C-SW-1200 |  | Fencing | 2d | 2025-11-12 A | 2025-11-14 A | P-PRO-273, C-FDN-ACB-1160, C-FDN-A20-1200, C-SW-1120, C-SW-1170, C-SW-1130, C-SW-1190 SS, C-SW-1180, C-SW-1070, C-SW-1090 | 100% |  |  |
| C-SW-1160 |  | Asphalt paving (South) | 2d | 2026-05-04 | 2026-05-05 | P-PRO-273, C-FDN-ACB-1160, C-FDN-A20-1200, C-SW-1120, C-SW-1170, C-SW-1130, WX-2000 |  | 43d |  |
|  | 1 | **COMMISSIONING & STARTUP OF GLOBAL MEIT SYSTEMS** |  | 2026-03-11 | 2026-07-13 |  |  |  |  |
|  | 2 | **ELECTRICAL** |  | 2026-03-11 | 2026-06-23 |  |  |  |  |
| CX-2000 |  | CDP Energization | 1d | 2026-03-11 | 2026-03-11 | T-INT-MF-Z1-ER-1150 FF |  | 57d |  |
| CX-2001 |  | Lighting Functional Testing | 5d | 2026-05-22 | 2026-05-28 | CX-2000, T-INT-BA-2080, T-INT-MF-Z6-1140, T-INT-MF-Z5-1080, T-INT-MF-Z4-1180, T-INT-MF-Z3-1170, T-INT-MF-Z2-1130, T-INT-MF-Z1-1090, T-INT-BA-2080 FF, T-INT-MF-Z5-2280 |  | 8d |  |
| CX-2002 |  | Lighting Control Function Testing | 5d | 2026-05-29 | 2026-06-04 | CX-2001 |  | 8d |  |
| CX-2003 |  | Fire Alarm Pre-checks | 5d | 2026-06-05 | 2026-06-11 | CX-2002, CX-2018 |  | 8d |  |
| CX-2004 |  | Fire Alarm Verification FAVI | 2d | 2026-06-12 | 2026-06-15 | CX-2003 |  | 8d |  |
| CX-2005 |  | Fire Alarm Battery Test | 1d | 2026-06-16 | 2026-06-16 | CX-2004 |  | 8d |  |
| CX-2006 |  | Fire Alarm Interface with BMS/Security/Bold Centre | 5d | 2026-06-17 | 2026-06-23 | CX-2005 |  | 8d |  |
| CX-2007 |  | Access Control and Security Integration | 5d | 2026-06-17 | 2026-06-23 | CX-2006 SS |  | 8d |  |
|  | 1 | **MECHANICAL** |  | 2026-04-29 | 2026-06-25 |  |  |  |  |
| CX-2009 |  | Domestic Water System Start Up | 5d | 2026-04-29 | 2026-05-05 | T-INT-MF-Z1-MR-1180, T-INT-SF-MR-2120, MIL-C-810 |  | 9d |  |
| CX-2010 |  | Underground Drainage System Start Up (P13A/B, P12A/B, P14) | 1d | 2026-05-06 | 2026-05-06 | CX-2009 |  | 9d |  |
| CX-2018 |  | Sprinkler System Testing and Fill | 5d | 2026-05-06 | 2026-05-12 | CX-2009 |  | 24d |  |
| CX-2011 |  | Natural Gas System and Meter Installation | 1d | 2026-05-07 | 2026-05-07 | CX-2010, T-INT-MF-Z1-MR-1180, T-INT-SF-MR-2120 |  | 9d |  |
| CX-2012 |  | Hot Water Heating System Start Up | 2d | 2026-05-08 | 2026-05-11 | CX-2011, T-INT-MF-Z1-MR-1180, T-INT-SF-MR-2120 |  | 9d |  |
| CX-2013 |  | Pool Heat Exchanger Start Up | 3d | 2026-05-12 | 2026-05-14 | CX-2012, T-INT-MF-Z1-MR-1180 |  | 9d |  |

| ID | WBS | Task | Duration | Start | Finish | Predecessors | Total float |
| --- | --- | --- | --- | --- | --- | --- | --- |
| CX-2019 |  | BMS System Integration | 5d | 2026-05-13 | 2026-05-20 | CX-2018, T-INT-MF-Z1-MR-1180, T-INT-SF-MR-2120 | 32d |
| CX-2014 |  | Glycol Heating System Start Up | 2d | 2026-05-15 | 2026-05-19 | CX-2013, T-INT-MF-Z1-MR-1180, T-INT-SF-MR-2120 | 11d |
| CX-2015 |  | Ventilation System Start Up (AHU, HRV, RTU, Exhaust Fans) | 5d | 2026-05-20 | 2026-05-26 | CX-2014, T-INT-MF-Z4-1090, T-INT-SF-MR-2120 | 11d |
| CX-2016 |  | Air Cooling System Start Up | 2d | 2026-05-27 | 2026-05-28 | CX-2015, T-INT-MF-Z1-MR-1180, T-INT-SF-MR-2120 | 11d |
| CX-2017 |  | Air and Water Balancing | 15d | 2026-06-05 | 2026-06-25 | CX-2016, T-INT-MF-Z1-1070, T-INT-MF-Z2-1120, T-INT-MF-Z3-1160, T-INT-MF-Z4-1120, T-INT-MF-Z6-1130, T-INT-BA-2070 | 6d |
|  | 3 | **POOLS** |  | 2026-05-21 | 2026-07-13 |  |  |
| CX-2025 |  | Waterslide Commissioning | 3d | 2026-05-21 | 2026-05-25 | T-INT-MF-Z5-1230, CX-2019, CX-2013, CX-2012, CX-2009, P-PRO-152, C-FDN-NN-S6/S2A-1080, T-INT-MF-Z5-2280 SS | 34d |
| CX-2067 |  | Pool Fill- Lap Pool/ Leisure Pool, Adult Hot Tub & Family Hot Tub | 10d | 2026-05-27 | 2026-06-05 | CX-2009, CX-2012, CX-2013, T-INT-MF-Z5-2390, C-FDN-SN-LPT-1040, C-FDN-SN-S1E/S1F/S7/S2B-1100, C-FDN-A8-1070, C-FDN-PH3-1010, MIL-C-650, T-INT-MF-Z5-2880, T-INT-MF-Z5-2860, T-INT-MF-Z5-2410 SS+15d, T-INT-MF-Z5-2400, T-INT-MF-Z5-1150, T-INT-MF-Z5-2940, T-INT-MF-Z5-2440 | 2d |
| CX-2024 |  | Pool Deck Flood Test | 2d | 2026-05-28 | 2026-05-29 | T-INT-MF-Z5-1210, T-INT-MF-Z5-2410, C-FDN-NN-S6/S2A-1080, T-INT-MF-Z5-2930, T-INT-MF-Z5-2920 | 30d |
| CX-2023 |  | Pool Piping and Equipment Start Up ( Pool Mechanical CX) | 25d | 2026-06-08 | 2026-07-13 | T-INT-BA-2090, CX-2067, CX-2012, CX-2013 | 0d |
| CX-2022 |  | Pool Fill- Outdoor Hot Tub | 3d | 2026-06-10 | 2026-06-12 | CX-2013, CX-2012, CX-2009, T-INT-MF-Z5-2430, C-FDN-A18-1340, MIL-C-470, T-INT-BA-2190 | 31d |
| CX-2026 |  | Steam/Sauna Commissioning | 5d | 2026-06-10 | 2026-06-16 | T-INT-MF-Z5-1200, T-INT-MF-Z5-2080, T-INT-MF-Z5-2160 | 18d |
| CX-2027 |  | Chemical Treatment/Balance Tank | 5d | 2026-07-07 | 2026-07-13 | CX-2023 FF | 0d |
| CX-2047 |  | Pool Commissioning Complete | 0d | 2026-07-13 | 2026-07-13 | CX-2022 FF, CX-2023 FF, CX-2024 FF, CX-2025 FF, CX-2026 FF, CX-2027 FF, CX-2067 FF, T-INT-MF-Z5-2430 FF, C-FDN-A18-1340 FF, T-INT-MF-Z5-1200 FF, MIL-C-470 FF | 0d |
|  | 4 | **INSPECTION & DEFICIENCY CLOSEOUT** |  | 2026-01-19 | 2026-07-03 |  |  |
| IX-ST-1010 |  | Structural | 5d | 2026-01-19 | 2026-01-23 | C-FDN-SN-S1E/S1F/S7/S2B-1100, IPP-QAQC-309 | 117d |
| IX-ENV-1020 |  | Building Envelope | 5d | 2026-02-23 | 2026-02-27 | MIL-C-740, MIL-C-440, MIL-C-490, MIL-C-710, MIL-C-720, MIL-C-730, MIL-C-740 FF, C-ENV-SID-GL-S-1020, C-ENV-SID-CL-AC-1110, C-ENV-SID-CL-E-1010, C-ENV-GL-1000, C-ENV-SID-CL-N-1040 | 94d |
| IX-L2-ARC-1060 |  | Level 2 Architectural | 5d | 2026-04-20 | 2026-04-24 | T-INT-SF-2100, T-INT-SF-MR-2110, P-PRO-223 | 55d |
| IX-Z1-ARC-1000 |  | Zone 1 Architectural | 5d | 2026-04-21 | 2026-04-27 | T-INT-MF-Z1-1190, T-INT-MF-Z1-1170, T-INT-MF-Z1-1180, P-PRO-223, T-INT-MF-Z1-1060, T-INT-MF-Z1-1070, T-INT-MF-Z1-1090, T-INT-MF-Z1-1080, T-INT-MF-Z1-1270, T-INT-BA-2080 | 54d |
| IX-Z2-ARC-1010 |  | Zone 2 Architectural | 5d | 2026-05-04 | 2026-05-08 | T-INT-MF-Z2-1150, T-INT-MF-Z2-1140, P-PRO-223, T-INT-MF-Z2-1080, T-INT-MF-Z2-1220 | 45d |
| IX-EXT-1030 |  | Exterior | 5d | 2026-05-06 | 2026-05-12 | C-SW-1070, C-SW-1060, C-SW-1120, C-SW-1130, C-SW-1140, C-SW-1160, C-SW-1170, C-SW-1180, C-SW-1190, C-SW-1200, C-ENV-SID-CL-N-1040 | 43d |
| IX-POOLMECH-1040 |  | Pool Mechanical | 5d | 2026-05-07 | 2026-05-13 | T-INT-MF-Z4-1170, T-INT-MF-Z4-1160, T-INT-MF-Z4-1150, T-INT-MF-Z4-1140, T-INT-BA-2090, T-INT-MF-Z4-1230, T-INT-MF-Z5-2210 | 41d |
| IX-Z4-ARC-1030 |  | Zone 4 Architectural | 5d | 2026-05-22 | 2026-05-28 | T-INT-MF-Z4-1210, P-PRO-223 | 17d |
| IX-Z3-ARC-1020 |  | Zone 3 Architectural | 5d | 2026-06-05 | 2026-06-11 | T-INT-MF-Z3-1220, T-INT-MF-Z3-1180, P-PRO-223 | 22d |
| IX-Z5-ARC-1040 |  | Zone 5 Architectural | 5d | 2026-06-10 | 2026-06-16 | T-INT-MF-Z5-1180, T-INT-MF-Z5-1230, T-INT-MF-Z5-2080, T-INT-MF-Z5-2160, P-PRO-171 FF, T-INT-MF-Z5-2380, T-INT-MF-Z5-2410, T-INT-MF-Z5-1210, T-INT-MF-Z5-1090, T-INT-MF-Z5-2210, T-INT-MF-Z5-1110, P-PRO-223, T-INT-MF-Z5-1180 SS, T-INT-MF-Z5-2380 SS, P-PRO-152, C-FDN-NN-S6/S2A-1080, T-INT-MF-Z5-2280 SS | 19d |
| IX-Z6-ARC-1050 |  | Zone 6 Architectural | 5d | 2026-06-22 | 2026-06-26 | T-INT-MF-Z6-1160, T-INT-MF-Z6-1150, P-PRO-223, T-INT-MF-Z6-1200 | 11d |
| IX-ELEC-1010 |  | Electrical | 5d | 2026-06-24 | 2026-06-30 | CX-2000, CX-2001, CX-2002, CX-2003, CX-2004, CX-2005, CX-2006, CX-2007, T-INT-SF-ELEC-1060 | 8d |
| IX-MECH-1000 |  | Mechanical | 5d | 2026-06-26 | 2026-07-03 | CX-2009, CX-2010, CX-2011, CX-2012, CX-2013, CX-2014, CX-2015, CX-2016, CX-2017, CX-2018, CX-2019 | 6d |
|  | 2 | **STRUCTURAL** |  |  |  |  |  |
|  | 9 | **PROJECT CLOSEOUT** |  | 2026-01-26 | 2026-08-13 |  |  |
| PCO-2000 |  | Structural C-Schedule | 1d | 2026-01-26 | 2026-01-26 | IX-ST-1010 | 117d |
| PCO-2030 |  | AEDARSA Final | 1d | 2026-04-09 | 2026-04-09 | T-MEIT-EL-1080 | 66d |
| PCO-2040 |  | Sprinkler C Schedule Issued | 1d | 2026-05-13 | 2026-05-13 | CX-2018 | 43d |
| PCO-2100 |  | Signage & Wayfinding (TBC) | 15d | 2026-05-29 | 2026-06-18 | IX-Z4-ARC-1030, P-PRO-223 | 17d |
| PCO-2010 |  | FAVI Certificate Issued | 1d | 2026-06-16 | 2026-06-16 | CX-2004 | 20d |
| PCO-2020 |  | Occupancy Pre-Reviews with AHS and Code Authority | 1d | 2026-06-19 | 2026-06-19 | T-INT-MF-Z5-1090, T-INT-MF-Z5-1150, T-INT-MF-Z5-1200, T-INT-MF-Z5-1210, T-INT-MF-Z5-2410, T-INT-MF-Z5-2330, T-INT-MF-Z5-2390, T-INT-MF-Z5-2310, T-INT-MF-Z5-2400, C-FDN-A18-1340, MIL-C-470, C-FDN-SN-LPT-1040, T-INT-MF-Z5-1080, T-INT-MF-Z5-1040, T-INT-MF-Z5-1270, C-FDN-SN-S1E/S1F/S7/S2B-1100, C-FDN-A8-1070, C-FDN-PH3-1010, MIL-C-650, T-INT-MF-Z3-1150, T-INT-MF-Z5-1310, IPP-QAQC-190, C-FDN-A7-SN-1390, T-INT-MF-Z5-2280 SS, T-INT-MF-Z5-2360, T-INT-MF-Z5-2310 SS, T-INT-MF-Z5-2740, C-FDN-NN-S6/S2A-1080, T-INT-MF-Z5-2370 SS, PCO-2100 | 17d |
| PCO-2050 |  | Final BIST | 1d | 2026-06-26 | 2026-06-26 | CX-2007, CX-2019, CX-2004, PCO-2030, CX-2002, CX-2009, CX-2010, CX-2011, CX-2012, CX-2013, CX-2014, CX-2015, CX-2016, CX-2017, CX-2018, CX-2000, CX-2001, CX-2003, CX-2005, CX-2006 | 12d |
| PCO-2070 |  | Electrical C-Schedule | 1d | 2026-07-02 | 2026-07-02 | CX-2000, CX-2001, CX-2002, CX-2003, CX-2004, CX-2005, CX-2006, CX-2007, IX-ELEC-1010 | 8d |
| PCO-2060 |  | Mechanical C-Schedule | 1d | 2026-07-06 | 2026-07-06 | CX-2009, CX-2010, CX-2011, CX-2012, CX-2013, CX-2014, CX-2015, CX-2016, CX-2017, CX-2018, CX-2019, IX-MECH-1000 | 6d |
| PCO-1020 |  | LLB staff training etc | 10d | 2026-07-14 | 2026-07-27 | PCO-1000 FF, CX-2023 | 12d |
| PCO-2090 |  | Pool Mechanical C-Schedule | 1d | 2026-07-14 | 2026-07-14 | CX-2022, CX-2023, CX-2024, CX-2025, CX-2026, CX-2027, CX-2047, IX-POOLMECH-1040 | 0d |
| PCO-2080 |  | Architectural C-Schedule | 1d | 2026-07-15 | 2026-07-15 | PCO-2000, PCO-2060, PCO-2070, PCO-2090, IX-ENV-1020, IX-L2-ARC-1060, IX-EXT-1030, IX-Z1-ARC-1000, IX-Z2-ARC-1010, IX-Z3-ARC-1020, IX-Z4-ARC-1030, IX-Z5-ARC-1040, IX-Z6-ARC-1050 | 0d |
| PCO-1000 |  | Substantial Completion | 1d | 2026-07-16 | 2026-07-16 | PCO-2090, PCO-2080, PCO-2070, PCO-2060, PCO-2050, PCO-2040, PCO-2030, PCO-2020, PCO-2010, PCO-2000 | 0d |
| PCO-1010 |  | Final Deficiencies Closeout | 20d | 2026-07-16 | 2026-08-13 | PCO-1000 SS, IX-Z5-ARC-1040, MIL-C-510 FF, PCO-2120 FF | 0d |
| PCO-2110 |  | Final Clean | 10d | 2026-07-16 | 2026-07-29 | PCO-1010 SS | 9d |
| PCO-2120 |  | County Interim Move-In | 5d | 2026-07-17 | 2026-07-23 | PCO-1000 | 14d |
| PCO-1040 |  | Occupancy | 1d | 2026-08-13 | 2026-08-13 | PCO-1010 FF, PCO-1020 FF, PCO-2110 | 0d |

## Version 2 (data date 2026-04-02, saved 2026-04-15, file UP33-54074-2026.04.15 - IPR.xer)

Last finish stays 2026-08-13. Complete tasks 990 → 1112.

Added:

| ID | Task | Duration | Start | Finish | Predecessors | Constraint |
| --- | --- | --- | --- | --- | --- | --- |
| MIL-C-820 | Basement Interior Finishes (Pool Equipment) | 0d | 2026-05-11 | 2026-05-11 | T-INT-MF-BA-9000 FF |  |
| IPP-SAFE-204 | Safety Hold Point: Roof Equipment Hoisting Review | 5d | 2026-02-03 A | 2026-02-04 A |  |  |
| IPP-SAFE-214 | Pre-Leak Test Safety Briefing & Equipment Deployment | 10d | 2026-04-10 | 2026-04-23 | T-INT-MF-Z5-2360 FF |  |
| IPP-SAFE-224 | Surge Tank Water Proofing (Confined Space) | 5d | 2026-05-26 | 2026-06-01 |  | as late as possible |
| IPP-QAQC-339 | Finalize Water Damage Prevention Plan | 1d | 2026-01-27 A | 2026-02-03 A |  |  |
| IPP-QAQC-349 | Finalize Commissioning Plan | 15d | 2026-02-19 A | 2026-04-10 |  |  |
| IPP-QAQC-329 | Zone #5 Natatorium Dust Free Inspection | 1d | 2026-06-10 | 2026-06-10 | T-INT-MF-Z5-2440 |  |
| 24 | **Zone-05-South Natatorium Pool Leak test** |  | 2026-02-04 | 2026-04-22 |  |  |
| X-T-INT-MF-Z5-1000 | Pool A leak, investigation and re-test (1th round) | 25d | 2026-02-04 A | 2026-04-02 A |  |  |
| X-T-INT-MF-Z5-1010 | Pool D leak, investigation and re-test (1th round) | 12d | 2026-02-04 A | 2026-04-02 A |  |  |
| X-T-INT-MF-Z5-1030 | Remediation Pool A | 5d | 2026-04-06 | 2026-04-10 | X-T-INT-MF-Z5-1000 |  |
| X-T-INT-MF-Z5-1040 | Remediation Pool D | 5d | 2026-04-06 | 2026-04-10 | X-T-INT-MF-Z5-1010 |  |
| X-T-INT-MF-Z5-1050 | Re test Pool A | 8d | 2026-04-13 | 2026-04-22 | X-T-INT-MF-Z5-1030 |  |
| X-T-INT-MF-Z5-1060 | Re test Pool D | 6d | 2026-04-13 | 2026-04-20 | X-T-INT-MF-Z5-1040 |  |
| 25 | **Zone-06-South Natatorium-Ductwork** |  | 2026-02-17 | 2026-02-20 |  |  |
| X-T-INT-MF-Z6-1000 | RFI for Ceiling/Duct Conflict | 5d | 2026-02-17 A | 2026-02-20 A |  |  |
| 26 | **Zone-05-South Natatorium-Wall&Bulkhead Framing** |  | 2026-02-17 | 2026-03-10 |  |  |
| X-T-INT-MF-Z5-1020 | RFI for Wall & Bulkhead Frame | 5d | 2026-02-17 A | 2026-03-10 A |  |  |
| 27 | **Zone-05-North Natatorium-RFI 210** |  | 2026-02-09 | 2026-02-13 |  |  |
| X-T-INT-MF-Z5-2790 | RFI 210- Z Girts- Face flashing through Wall Cladding Perforations | 5d | 2026-02-09 A | 2026-02-13 A |  |  |
| 28 | **Zone-03-Rough-ins re-install (Modern)** |  | 2026-02-17 | 2026-02-25 |  |  |
| X-T-INT-MF-Z2-1130 | Delay event for Modern to re-install rough-ins to coordinate with ceiling height | 5d | 2026-02-17 A | 2026-02-25 A |  |  |
| 29 | **Fix Hot Tub Stair Drawing Conflicts** |  | 2026-02-25 | 2026-03-10 |  |  |
| X-T-INT-MF-Z5-1170 | Remediation of Aquatic Structural Drawing Errors | 5d | 2026-02-25 A | 2026-03-10 A |  |  |
| 30 | **Coordination Study & Federal License Delay** |  | 2026-02-18 | 2026-03-26 |  |  |
| X-T-INT-MF-Z1-ER-1040 | Delay: Federal Licensing & Coordination Study Review | 5d | 2026-02-18 A | 2026-03-26 A |  |  |
| C-ENV-GL-1010 | Cap Flashing | 6d | 2026-04-20 | 2026-04-27 | C-ENV-GL-1000 |  |
| 5 | **Pool B** |  | 2025-12-29 | 2026-03-13 |  |  |
| T-INT-BA-PB-1000 | Support and Mounts | 5d | 2025-12-29 A | 2026-01-30 A | T-INT-BA-2120 |  |
| T-INT-BA-PB-1010 | Circulation Loops | 5d | 2026-01-05 A | 2026-03-13 A | T-INT-BA-PB-1000 SS+5d |  |
| T-INT-BA-PB-1030 | UV Circulation | 5d | 2026-02-02 A | 2026-03-13 A | T-INT-BA-PB-1010 FF |  |
| T-INT-BA-PB-1020 | VFD's | 5d | 2026-02-09 A | 2026-03-13 A | T-INT-BA-PB-1010 FF |  |
| 1 | **Pool C** |  | 2026-02-02 | 2026-03-19 |  |  |
| T-INT-BA-PC-1040 | Support and Mounts | 5d | 2026-02-02 A | 2026-02-13 A | T-INT-BA-PB-1000, T-INT-BA-PB-1010 |  |
| T-INT-BA-PC-1070 | VFD's | 5d | 2026-02-02 A | 2026-03-19 A | T-INT-BA-PC-1050 FF |  |
| T-INT-BA-PC-1050 | Circulation Loops | 5d | 2026-02-09 A | 2026-03-13 A | T-INT-BA-PC-1040 FF |  |
| T-INT-BA-PC-1060 | UV Circulation | 5d | 2026-02-16 A | 2026-03-19 A | T-INT-BA-PC-1050 FF |  |
| 2 | **Pool A** |  | 2026-01-23 | 2026-04-20 |  |  |
| T-INT-BA-PA-1080 | Support and Mounts | 31d | 2026-01-23 A | 2026-03-09 A |  |  |
| T-INT-BA-PA-1110 | UV Circulation | 25d | 2026-02-13 A | 2026-04-13 | T-INT-BA-PA-1100 FF |  |
| T-INT-BA-PA-1090 | VFD's | 10d | 2026-02-20 A | 2026-04-20 | T-INT-BA-PA-1100 FF |  |
| T-INT-BA-PA-1100 | Circulation Loops | 10d | 2026-03-13 A | 2026-04-02 A | T-INT-BA-PA-1080, T-INT-BA-PC-1050 |  |
| 6 | **Pool D** |  | 2026-02-16 | 2026-04-13 |  |  |
| T-INT-BA-PD-1150 | VFD's | 10d | 2026-02-16 A | 2026-02-27 A | T-INT-BA-PB-1020 SS |  |
| T-INT-BA-PD-1120 | Support and Mounts | 5d | 2026-02-23 A | 2026-03-27 A | T-INT-BA-PC-1040, T-INT-BA-PC-1050 FF |  |
| T-INT-BA-PD-1130 | Circulation Loops | 10d | 2026-02-23 A | 2026-04-06 | T-INT-BA-PD-1120 FF |  |
| T-INT-BA-PD-1140 | UV Circulation | 5d | 2026-03-02 A | 2026-04-13 | T-INT-BA-PD-1130 FF |  |
| T-INT-MF-Z1-1290 | Ceiling Plumbing | 5d | 2026-02-18 A | 2026-04-09 | T-INT-MF-Z1-1100, T-INT-MF-Z3-1290 FF+5d |  |
| T-INT-MF-Z1-1400 | Plumbing Insulation | 5d | 2026-04-10 | 2026-04-16 | T-INT-MF-Z1-1290 |  |
| T-INT-MF-Z1-1340 | Hard Ceiling Boarding/Drywall | 2d | 2026-04-15 | 2026-04-16 | T-INT-MF-Z1-1220 |  |
| T-INT-MF-Z1-1320 | Sprinkler Ceilings | 2d | 2026-04-17 | 2026-04-20 | T-INT-MF-Z1-1220, T-INT-MF-Z1-1340 |  |
| T-INT-MF-Z1-1380 | Hard Ceiling Paint - Prime Plus One | 2d | 2026-04-28 | 2026-04-29 | T-INT-MF-Z1-1340, T-INT-MF-Z1-1250 |  |
| T-INT-MF-Z1-1390 | Hard Ceiling - Final Paint | 2d | 2026-05-14 | 2026-05-15 | T-INT-MF-Z1-1180 |  |
| T-INT-MF-Z1-ER-1170 | Pull Branch Power For The Mechanical Equipment | 5d | 2026-03-03 A | 2026-03-27 A | T-INT-MF-Z1-ER-1110 |  |
| T-INT-MF-Z1-ER-1180 | Pull Branch Power For The Remaining Areas | 15d | 2026-03-30 A | 2026-05-01 | T-INT-MF-Z1-ER-1170 FF |  |
| T-INT-MF-Z1-MR-1100 | Installing Gauges, thermometers, bypass pumps | 15d | 2026-03-23 A | 2026-04-13 | T-INT-MF-Z1-MR-1080 |  |
| T-INT-MF-Z1-MR-1190 | Water Service Connection | 1d | 2026-04-24 | 2026-04-24 | IPP-QAQC-339, T-INT-MF-Z1-1120 |  |
| 2 | **ZONE #2 - STAFF AREAS (AQ103-112)** |  | 2025-09-15 | 2026-05-15 |  |  |
| T-INT-MF-Z2-1160 | Drywall Multipurpose Room | 4d | 2026-02-19 A | 2026-02-25 A | T-INT-MF-Z2-1130 |  |
| T-INT-MF-Z2-1180 | Painting Prime First Coat | 2d | 2026-03-09 A | 2026-03-12 A | T-INT-MF-Z2-1160 |  |
| T-INT-MF-Z2-1200 | M&E Final Tie Ins | 2d | 2026-04-27 | 2026-04-28 | T-INT-MF-Z2-1100, T-INT-MF-Z2-1150 |  |
| T-INT-MF-Z2-1190 | Final Touch Ups | 5d | 2026-05-11 | 2026-05-15 | T-INT-MF-Z2-1110, T-INT-MF-Z2-1140 |  |
| 3 | **ZONE #3 - CHANGE ROOMS (AQ115-137)** |  | 2025-09-15 | 2026-06-26 |  |  |
| T-INT-MF-Z3-1230 | Electrical Racking | 5d | 2026-02-11 A | 2026-02-18 A | T-INT-MF-Z3-1080 |  |
| T-INT-MF-Z3-1290 | Plumbing Rough Ins | 10d | 2026-02-11 A | 2026-04-01 A | T-INT-MF-Z3-1230 SS |  |
| T-INT-MF-Z3-1310 | Ductwork Final Tie-ins | 4d | 2026-03-09 A | 2026-03-17 A | T-INT-MF-Z3-1290 SS |  |
| T-INT-MF-Z3-1210 | Universal change room electrical rough-ins | 5d | 2026-03-16 A | 2026-03-17 A | T-INT-MF-Z3-1040 |  |
| T-INT-MF-Z3-1320 | Female change room electrical rough-ins | 5d | 2026-03-23 A | 2026-03-27 A | T-INT-MF-Z3-1210 |  |
| T-INT-MF-Z3-1300 | Plumbing Insulation | 4d | 2026-03-30 A | 2026-04-02 A | T-INT-MF-Z3-1290 FS-5d |  |
| T-INT-MF-Z3-1330 | Remaining Universal Electrical Rough ins | 4d | 2026-03-30 A | 2026-04-01 A | T-INT-MF-Z3-1210, T-INT-MF-Z3-1320 |  |
| 4 | **ZONE #4 - POOL MECHANICAL, STORAGE, CHEMICAL, ROOMS (AQ140-144)** |  | 2025-11-14 | 2026-06-23 |  |  |
| T-INT-MF-Z4-1050 | House Keep Pad for Heat Exchange | 5d | 2026-03-23 A | 2026-03-27 A |  |  |
| T-INT-MF-Z4-1060 | Mechanical Fitout | 5d | 2026-04-20 | 2026-04-24 | T-INT-MF-Z4-1050, T-INT-MF-Z4-1040 FF |  |
| 1 | **Pool Mechanical** |  | 2026-04-20 | 2026-06-08 |  |  |
| T-INT-MF-Z4-1240 | Pool E Supports and Mounts | 10d | 2026-04-20 | 2026-05-01 | T-INT-MF-Z4-1000, T-INT-MF-Z4-1040 SS+5d |  |
| T-INT-MF-Z4-1250 | Pool E Circulation Loops | 10d | 2026-05-04 | 2026-05-15 | T-INT-MF-Z4-1240 |  |
| T-INT-MF-Z4-1260 | Pool E VFD's | 15d | 2026-05-19 | 2026-06-08 | T-INT-MF-Z4-1250 |  |
| T-INT-MF-Z4-1270 | Pool E UV Circulation | 5d | 2026-05-19 | 2026-05-25 | T-INT-MF-Z4-1250, T-INT-BA-PB-1030 |  |
| 6 | **Chemical Room** |  | 2026-05-04 | 2026-06-09 |  |  |
| T-INT-MF-Z4-1280 | Supports and Mounts | 5d | 2026-05-04 | 2026-05-08 | T-INT-MF-Z4-1240 |  |
| T-INT-MF-Z4-1290 | Circulation Loops | 15d | 2026-05-11 | 2026-06-01 | T-INT-MF-Z4-1280 |  |
| 8 | **North Natatorium (AQ100,AQ102,AQ125)** |  | 2025-11-21 | 2026-06-16 |  |  |
| T-INT-MF-Z5-1160 | Wall Cladding (Z bars & J Trim) West | 3d | 2026-03-17 A | 2026-03-19 A | T-INT-MF-Z5-2630 SS |  |
| T-INT-MF-Z5-1240 | Surge Tank Leak Test (Pool B& C) | 3d | 2026-05-21 | 2026-05-25 | C-FDN-A5-1060 | as late as possible |
| T-INT-MF-Z5-1260 | Water Proofing for Surge Tanks (Pool B & C) | 4d | 2026-05-26 | 2026-05-29 | T-INT-MF-Z5-1240, IPP-SAFE-224 SS | as late as possible |
| T-INT-MF-Z5-1190 | Interior Glazing Change Room | 3d | 2026-06-05 | 2026-06-09 | T-INT-MF-Z5-2410 |  |
| T-INT-MF-Z5-1250 | Access Control Gate | 5d | 2026-06-10 | 2026-06-16 | T-INT-MF-Z5-1190 |  |
| T-INT-MF-Z5-2315 | Pool Concrete Repair | 5d | 2026-02-23 A | 2026-04-02 A |  |  |
| 1 | **South Natatorium (AQ145,AQ147)** |  | 2025-12-01 | 2026-07-06 |  |  |
| T-INT-MF-Z5-1301 | Pool E Repairs | 5d | 2026-05-26 | 2026-06-01 | T-INT-MF-Z4-1270 |  |
| T-INT-MF-Z5-2250 | Surge Tank Leak Test (Pool A) | 3d | 2026-06-29 | 2026-07-02 | C-FDN-A5-1060 | as late as possible |
| T-INT-MF-Z5-2270 | Water Proofing for Surge Tanks (Pool A) | 2d | 2026-07-03 | 2026-07-06 | T-INT-MF-Z5-2250, IPP-SAFE-224 SS | as late as possible |
| T-INT-MF-Z5-2140 | Fire Rated Plywood Install | 5d | 2026-02-28 A | 2026-04-06 | T-INT-MF-Z5-2120 FF |  |
| 6 | **ZONE #6 - LOBBY AND VESTIBULE (AQ101)** |  | 2025-12-02 | 2026-06-29 |  |  |
| T-INT-MF-Z6-1250 | Ductwork Insulation | 5d | 2026-04-01 A | 2026-04-02 A | T-INT-MF-Z6-1220 FS-2d |  |
| T-INT-MF-Z6-1170 | Main Entrance Interior Aluminum | 5d | 2026-05-21 | 2026-05-27 | T-INT-MF-Z6-1090 |  |
| T-INT-MF-Z6-1230 | Concret Curbs | 4d | 2026-06-01 | 2026-06-04 | T-INT-MF-Z5-1100, T-INT-MF-Z5-2230, T-INT-MF-Z5-2800, T-INT-MF-Z5-1230 |  |
| T-INT-MF-Z6-1240 | Main Flour Veiwing Area Glazing | 1d | 2026-06-05 | 2026-06-05 | T-INT-MF-Z6-1230 |  |
| IX-ENV-1070 | Intuitive Building Envelope Closeout | 5d | 2026-04-28 | 2026-05-04 | C-ENV-GL-1010, C-ENV-GL-1000 |  |
| PCO-2150 | Glazing Film | 3d | 2026-07-02 | 2026-07-06 | PCO-2100 SS, T-INT-MF-Z5-1250 |  |

Removed: P-PRO-617 Radiator Delivery; IPP-QAQC-279 Zone #6 Pre-board Inspection; T-INT-BA-2130 Plumbing Circulation loop from wall to filter back to wall; T-INT-BA-2140 Water Filtration Loops; T-INT-BA-2150 U.V Bypass loops; T-INT-BA-2160 Chemical Bypass Loops; T-INT-BA-2170 Heat Exchanger Bypass Loops; T-INT-BA-2180 Finishing Trim; T-INT-BA-2190 Pool E System; ZONE #2 - STAFF AREAS; ZONE #3 - CHANGE ROOMS; ZONE #4 - POOL MECHANICAL, STORAGE, CHEMICAL, ROOMS; Install Pool Equipment; T-INT-MF-Z4-1150 Storage; T-INT-MF-Z4-1160 Pumps and Boosters; T-INT-MF-Z4-1170 Flow Meters; North Natatorium; South Natatorium; T-INT-MF-Z5-2110 Mechanical Rough In; ZONE #6 - LOBBY AND VESTIBULE

Changed:

| ID | Task | Start | Finish | Duration | Complete | Total float | Predecessors | Other |
| --- | --- | --- | --- | --- | --- | --- | --- | --- |
| 2 | **Contractual Milestones** | 2026-03-25 → 2026-04-02 (+8d) |  |  |  |  |  |  |
| MIL-CM-100 | Contractual Substantial Completion Date | 2026-03-25 → 2026-04-02 (+8d) | 2026-03-25 → 2026-04-02 (+8d) |  |  | 97d → 91d |  |  |
| MIL-C-510 | Substantial Completion | 2026-07-16 → 2026-08-05 (+20d) | 2026-07-16 → 2026-08-05 (+20d) |  |  | 19d → 6d |  |  |
| 3 | **Construction Milestones** |  | 2026-06-18 → 2026-07-06 (+18d) |  |  |  |  |  |
| 3 | **Envelope** |  | 2026-01-23 → 2026-02-18 (+26d) |  |  |  |  |  |
| MIL-C-740 | Remaining East & South Side Envelope | 2026-01-23 → 2026-01-16 A (-7d) | 2026-01-23 → 2026-01-16 A (-7d) |  | 0% → 100% | 113d → none | C-ENV-SID-GL-S-1020 FF, C-ENV-SID-EW-S-1000 FF, C-ENV-SID-CL-S-1020 FF, C-ENV-SID-CL-AC-1120 FF, C-ENV-SID-CL-S-1050 FF, C-ENV-SID-CL-S-1040 FF → C-ENV-SID-GL-S-1020 FF, C-ENV-SID-EW-S-1000 FF, C-ENV-SID-CL-S-1020 FF, C-ENV-SID-CL-AC-1120 FF |  |
| MIL-C-440 | 100% Complete Fully Enclosing the Building | 2026-01-23 → 2026-02-18 A (+26d) | 2026-01-23 → 2026-02-18 A (+26d) |  | 0% → 100% | 28d → none |  |  |
| 4 | **Interior Milestones** | 2026-04-20 → 2026-05-11 (+21d) | 2026-06-18 → 2026-07-06 (+18d) |  |  |  |  |  |
| MIL-C-760 | Zone-2 Interior Finishes (Staff Areas) | 2026-05-01 → 2026-05-15 (+14d) | 2026-05-01 → 2026-05-15 (+14d) |  |  | 71d → 61d | T-INT-MF-Z2-1150 FF → T-INT-MF-Z2-1150 FF, T-INT-MF-Z2-9000 FF |  |
| MIL-C-750 | Zone-1 Interior Finishes (Mechanical, Electrical Rooms & Corridor) | 2026-04-20 → 2026-05-22 (+32d) | 2026-04-20 → 2026-05-22 (+32d) |  |  | 80d → 57d | T-INT-MF-Z1-MR-1060 FF, T-INT-MF-Z1-ER-1020 FF, T-INT-MF-Z1-ER-1030 FF, T-INT-MF-Z1-1060 FF, T-INT-MF-Z1-1070 FF, T-INT-MF-Z1-1090 FF, T-INT-MF-Z1-1080 FF, T-INT-MF-Z1-1270 FF → T-INT-MF-Z1-MR-1060 FF, T-INT-MF-Z1-ER-1020 FF, T-INT-MF-Z1-ER-1030 FF, T-INT-MF-Z1-1060 FF, T-INT-MF-Z1-1070 FF, T-INT-MF-Z1-1090 FF, T-INT-MF-Z1-1080 FF, T-INT-MF-Z1-1270 FF, T-INT-MF-Z1-9000 FF |  |
| MIL-C-780 | Zone-4 Interior Finishes (Pool Mechanical, Storage & Chemical Rooms) | 2026-05-21 → 2026-06-23 (+33d) | 2026-05-21 → 2026-06-23 (+33d) |  |  | 58d → 35d | T-INT-MF-Z4-1190 FF, T-INT-MF-Z4-1210 FF → T-INT-MF-Z4-1190 FF, T-INT-MF-Z4-1210 FF, T-INT-MF-Z4-9000 FF |  |
| MIL-C-770 | Zone-3 Interior Finishes (Change Rooms) | 2026-06-04 → 2026-06-26 (+22d) | 2026-06-04 → 2026-06-26 (+22d) |  |  | 48d → 32d | T-INT-MF-Z3-1220 FF → T-INT-MF-Z3-1220 FF, T-INT-MF-Z3-1260 FF |  |
| MIL-C-800 | Zone-6 Interior Finishes | 2026-06-18 → 2026-06-29 (+11d) | 2026-06-18 → 2026-06-29 (+11d) |  |  | 38d → 31d | T-INT-MF-Z6-1150 FF, T-INT-MF-Z6-1160 FF → T-INT-MF-Z6-1150 FF, T-INT-MF-Z6-1160 FF, T-INT-MF-Z6-9000 FF |  |
| MIL-C-790 | Zone-5 Interior Finishes | 2026-06-09 → 2026-07-06 (+27d) | 2026-06-09 → 2026-07-06 (+27d) |  |  | 45d → 27d | T-INT-MF-Z5-1180 FF, T-INT-MF-Z5-1230 FF, T-INT-MF-Z5-1100 FF, T-INT-MF-Z5-1150 FF, T-INT-MF-Z5-2160 FF, T-INT-MF-Z5-2080 FF, T-INT-MF-Z5-2380 FF, T-INT-MF-Z5-2330 FF, T-INT-MF-Z5-1090 FF, T-INT-MF-Z5-2310 SF, T-INT-MF-Z5-2360 FF, IPP-QAQC-190 FF, T-INT-MF-Z5-2280 SF, T-INT-MF-Z5-2210 FF, T-INT-MF-Z5-1110 FF, C-FDN-NN-S6/S2A-1080 FF, T-INT-MF-Z5-2370 SF, P-PRO-152 FF → T-INT-MF-Z5-1180 FF, T-INT-MF-Z5-1230 FF, T-INT-MF-Z5-1100 FF, T-INT-MF-Z5-1150 FF, T-INT-MF-Z5-2160 FF, T-INT-MF-Z5-2080 FF, T-INT-MF-Z5-2380 FF, T-INT-MF-Z5-2330 FF, T-INT-MF-Z5-1090 FF, T-INT-MF-Z5-2310 SF, T-INT-MF-Z5-2360 FF, IPP-QAQC-190 FF, T-INT-MF-Z5-2280 SF, T-INT-MF-Z5-2210 FF, T-INT-MF-Z5-1110 FF, C-FDN-NN-S6/S2A-1080 FF, T-INT-MF-Z5-2370 FF, P-PRO-152 FF, T-INT-MF-Z5-9000 FF, T-INT-MF-Z5-9010 FF |  |
| 4 | **MEIT & Energization Milestones** | 2026-03-11 → 2026-05-08 (+58d) | 2026-04-08 → 2026-07-07 (+90d) |  |  |  |  |  |
| MIL-C-810 | Energization | 2026-03-11 → 2026-05-08 (+58d) | 2026-03-11 → 2026-05-08 (+58d) |  |  | 42d → 12d |  |  |
| MIL-C-830 | Elevator Testing and Commissioning | 2026-04-08 → 2026-07-07 (+90d) | 2026-04-08 → 2026-07-07 (+90d) |  |  | 88d → 26d |  |  |
| DUR-1040 | Envelope (With Final Finishings) |  | 2026-01-23 → 2026-04-27 (+94d) |  | 0% → 100% | 28d → 62d | C-ENV-RF-N-1000 SS, C-ENV-SID-CL-S-1020 FF, C-ENV-SID-CL-S-1040 FF → C-ENV-RF-N-1000 SS, C-ENV-SID-CL-S-1020 FF, C-ENV-SID-CL-S-1040 FF, C-ENV-GL-1010 FF | was named Envelope |
| DUR-1050 | Fitout to Commissioning |  | 2026-06-04 → 2026-07-06 (+32d) |  |  | 22d → 14d |  |  |
| DUR-1060 | Commissioning | 2026-03-11 → 2026-05-08 (+58d) | 2026-07-13 → 2026-07-30 (+17d) | 86d → 58d |  |  |  |  |
| DUR-1070 | Close Out | 2026-06-16 → 2026-07-13 (+27d) |  | 41d → 23d |  |  |  |  |
| 3 | **Building Envelope** |  | 2026-01-23 → 2026-01-29 (+6d) |  |  |  |  |  |
| DUR-1200 | South Side |  | 2026-01-23 → 2026-01-29 A (+6d) |  | 0% → 100% | 28d → none |  |  |
| 4 | **Interior** |  | 2026-06-19 → 2026-07-07 (+18d) |  |  |  |  |  |
| DUR-1260 | Zone #5 - Natatorium, Steam And Sauna, Viewing |  | 2026-06-09 → 2026-07-06 (+27d) |  |  | 45d → 27d |  |  |
| DUR-1280 | Second Floor |  | 2026-03-19 → 2026-05-15 (+57d) |  |  | 101d → 61d |  |  |
| DUR-1210 | Basement |  | 2026-05-25 → 2026-05-11 (-14d) |  |  | 56d → 65d |  |  |
| DUR-1220 | Zone #1 - Mechanical Room, Electrical Room, Exit Corridor | 2025-09-15 A → 2025-09-02 A (-13d) | 2026-04-28 → 2026-05-22 (+24d) |  |  | 74d → 57d | T-INT-MF-Z1-9000 FF → T-INT-MF-Z1-9000 FF, T-INT-MF-Z1-1080 SS |  |
| DUR-1230 | Zone #2 - Staff Areas |  | 2026-05-01 → 2026-05-15 (+14d) |  |  | 71d → 61d | T-INT-MF-Z2-9000 FF → T-INT-MF-Z2-9000 FF, T-INT-MF-Z2-1000 SS |  |
| DUR-1240 | Zone #3 - Change Rooms | 2026-01-19 → 2025-09-15 A (-126d) | 2026-06-04 → 2026-06-26 (+22d) | 96d → 86d |  | 48d → 32d | T-INT-MF-Z3-1260 FF → T-INT-MF-Z3-1260 FF, T-INT-MF-Z3-1010 SS |  |
| DUR-1250 | Zone #4 - Pool Mechanical, Storage, Chemical, Rooms | 2026-01-19 → 2025-11-14 A (-66d) | 2026-05-21 → 2026-06-23 (+33d) | 86d → 53d |  | 58d → 35d | T-INT-MF-Z4-9000 FF → T-INT-MF-Z4-9000 FF, T-INT-MF-Z4-1080 SS |  |
| DUR-1270 | Zone #6 - Lobby And Vestibule | 2026-01-19 → 2025-12-02 A (-48d) | 2026-06-19 → 2026-06-29 (+10d) | 107d → 83d |  | 37d → 31d | T-INT-MF-Z6-9000 FF → T-INT-MF-Z6-9000 FF, T-INT-MF-Z6-1100 SS |  |
| DUR-1290 | Elevator | 2026-02-23 → 2026-05-22 (+88d) | 2026-04-08 → 2026-07-07 (+90d) |  |  | 66d → 17d |  |  |
| pre | **PRE- CONSTRUCTION** |  | 2026-04-17 → 2026-06-01 (+45d) |  |  |  |  |  |
| 4 | **SHOP DRAWINGS AND MATERIAL PROCUREMENT** |  | 2026-04-17 → 2026-06-01 (+45d) |  |  |  |  |  |
| 6 | **TP2 (Core and Shell)** |  | 2026-02-20 → 2026-05-20 (+89d) |  |  |  |  |  |
| 6 | **Elevator** |  | 2026-02-20 → 2026-05-20 (+89d) |  |  |  |  |  |
| P-PRO-159 | Elevator Delivery | 2025-09-12 A → 2025-12-17 A (+96d) | 2026-02-20 → 2026-05-20 (+89d) |  |  | 66d → 17d |  |  |
| 5 | **TP3 (Interior, Site Works, Mechanical and Electrical)** |  | 2026-04-17 → 2026-06-01 (+45d) |  |  |  |  |  |
| 9 | **Waterslide** |  | 2026-01-21 → 2026-01-27 (+6d) |  |  |  |  |  |
| P-PRO-152 | Waterslide Delivery |  | 2026-01-21 → 2026-01-27 A (+6d) |  | 0% → 100% | 104d → none |  |  |
| 10 | **Millwork** |  | 2026-03-16 → 2026-03-19 (+3d) |  |  |  |  |  |
| P-PRO-165 | Millwork Delivery |  | 2026-03-16 → 2026-03-19 A (+3d) |  | 0% → 100% | 18d → none |  |  |
| 7 | **Furnishings** |  | 2026-01-30 → 2026-02-06 (+7d) |  |  |  |  |  |
| P-PRO-171 | Bleacher Seating Delivery |  | 2026-01-30 → 2026-02-06 A (+7d) |  | 0% → 100% | 113d → none |  |  |
| 1 | **Mechanical** |  | 2026-02-20 → 2026-02-13 (-7d) |  |  |  |  |  |
| 12 | **Exhaust Fans** |  | 2026-01-30 → 2026-02-04 (+5d) |  |  |  |  |  |
| P-PRO-607 | Exhaust Fans Delivery (RTU's) |  | 2026-01-30 → 2026-02-04 A (+5d) |  | 0% → 100% | 64d → none |  | was named Exhaust Fans Delivery |
| 2 | **Radiator** |  | 2026-01-19 → 2025-01-29 (-355d) |  |  |  |  |  |
| 4 | **Fixtures** |  | 2026-01-30 → 2026-01-16 (-14d) |  |  |  |  |  |
| P-PRO-627 | Mechanical Fixtures Delivery |  | 2026-01-30 → 2026-01-16 A (-14d) |  | 0% → 100% | 69d → none |  | was named Fixtures Delivery |
| 17 | **Controls** |  | 2026-02-20 → 2026-02-13 (-7d) |  |  |  |  |  |
| P-PRO-697 | Controls Delivery |  | 2026-02-20 → 2026-02-13 A (-7d) |  | 0% → 100% | 54d → none |  |  |
| 2 | **Electrical** |  | 2026-02-10 → 2026-02-13 (+3d) |  |  |  |  |  |
| 3 | **Lighting Controls** |  | 2026-02-10 → 2026-02-13 (+3d) |  |  |  |  |  |
| P-PRO-767 | Lighting Controls Delivery |  | 2026-02-10 → 2026-02-13 A (+3d) |  | 0% → 100% | 67d → none |  |  |
| 3 | **Finishes** |  | 2026-04-17 → 2026-06-01 (+45d) |  |  |  |  |  |
| 1 | **Arch Louvers** |  | 2026-03-17 → 2026-02-13 (-32d) |  |  |  |  |  |
| P-PRO-193 | Arch Louvers Delivery |  | 2026-03-17 → 2026-02-13 A (-32d) |  |  | 22d → none |  |  |
| 9 | **Wahsroom Accessories** |  | 2026-03-31 → 2026-04-30 (+30d) |  |  |  |  |  |
| P-PRO-243 | Washroom Accessories Delivery |  | 2026-03-31 → 2026-04-30 (+30d) |  |  | 62d → 54d |  |  |
| 10 | **Steam/ Sauna** |  | 2026-02-17 → 2026-06-01 (+104d) |  |  |  |  |  |
| P-PRO-263 | Sauna Cedar & Heater Delivery |  | 2026-02-17 → 2026-06-01 (+104d) |  |  | 76d → 22d |  |  |
| 4 | **Lockers** |  | 2026-03-16 → 2026-04-30 (+45d) |  |  |  |  |  |
| P-PRO-253 | Lockers Delivery |  | 2026-03-16 → 2026-04-30 (+45d) |  |  | 28d → 39d |  |  |
| 11 | **INTEGRATED PHASED PLANNING - IPP** |  | 2026-03-09 → 2026-06-10 (+93d) |  |  |  |  |  |
| 5 | **SAFETY HOLD POINTS** |  | 2026-02-04 → 2026-06-01 (+117d) |  |  |  |  |  |
| IPP-SAFE-184 | Safety Hold Point: Main Electrical Room Energization Safety Review | 2026-01-22 → 2026-02-10 A (+19d) | 2026-02-04 → 2026-04-13 (+68d) | 10d → 5d |  | 61d → 26d |  |  |
| 6 | **QAQC HOLD POINTS** |  | 2026-03-09 → 2026-06-10 (+93d) |  |  |  |  |  |
| IPP-QAQC-259 | Zone #5 North Pre-board Inspection | 2026-01-19 → 2026-01-05 A (-14d) | 2026-01-19 → 2026-01-05 A (-14d) |  | 0% → 100% | 12d → none |  |  |

| ID | Task | Start | Finish | Duration | Complete | Total float | Predecessors | Other |
| --- | --- | --- | --- | --- | --- | --- | --- | --- |
| IPP-QAQC-190 | QAQC Hold Point: Pool Tank Water Test- All Pools | 2026-01-19 → 2026-01-07 A (-12d) | 2026-03-09 → 2026-04-23 (+45d) |  |  | 11d → 3d |  |  |
| IPP-QAQC-201 | QAQC Hold Point: Pre-board Review and Inspection - Second Floor | 2026-01-19 A | 2026-01-19 A |  | 0% → 100% | 138d → none |  |  |
| IPP-QAQC-269 | Zone #5 South Pre-board Inspection | 2026-02-02 A | 2026-02-02 A |  | 0% → 100% | 24d → none | T-INT-MF-Z5-2720 SS+5d → none |  |
| IPP-QAQC-229 | Zone #3 Ceiling Pre-board Inspection | 2026-02-25 → 2026-03-16 A (+19d) | 2026-02-25 → 2026-04-10 (+44d) |  |  | 6d → 10d |  |  |
| IPP-QAQC-319 | Final Block Wall Inspections | 2026-02-02 → 2026-03-30 A (+56d) | 2026-02-02 → 2026-04-10 (+67d) |  |  | 133d → 86d | T-INT-MF-Z4-1000, T-INT-MF-Z5-2010 FF → T-INT-MF-Z4-1000, T-INT-MF-Z5-2010, X-C-Z5-NN-FRA-1020 |  |
| IPP-QAQC-249 | Zone #4 Pre-board Inspection | 2026-02-17 → 2026-04-27 (+69d) | 2026-02-17 → 2026-04-27 (+69d) |  |  | 8d → 65d |  |  |
| IPP-QAQC-199 | QAQC Hold Point: Elevators Site Readiness | 2026-02-09 → 2026-05-21 (+101d) | 2026-02-09 → 2026-05-21 (+101d) |  |  | 74d → 17d | T-MEIT-EL-1040 → T-MEIT-EL-1040, P-PRO-159 |  |
| 5 | **DELAY EVENTS** |  | 2026-01-26 → 2026-04-22 (+86d) |  |  |  |  |  |
| C-Z5-NN-ELEC-1010 | North Natatorium Missed TV Screen Backing & Electrical Rough In |  | 2026-01-23 A |  | 0% → 100% | 8d → none |  |  |
| 23 | **Zone -04- Frame Delivery** |  | 2026-01-26 → 2026-02-25 (+30d) |  |  |  |  |  |
| X-C-Z5-NN-FRA-1020 | Remaining 5 opening Frame Delivery | 2026-01-26 A | 2026-01-26 → 2026-02-25 A (+30d) |  | 0% → 100% | 12d → none |  | constraint start on or after 2026-01-23 → none |
| 8 | **CONSTRUCTION** |  | 2026-06-19 → 2026-07-07 (+18d) |  |  |  |  |  |
| 1 | **SUBSTRUCTURE (FOUNDATIONS)** |  | 2026-04-11 → 2026-05-01 (+20d) |  |  |  |  |  |
| 3 | **SOUTH NATATORIUM GL P5.5-P10** |  | 2026-04-11 → 2026-05-01 (+20d) |  |  |  |  |  |
| C-FDN-A8-1140 | Pour 3- Cure |  |  |  |  |  | C-FDN-A8-1110 → C-FDN-A8-1110, C-FDN-A8-1050 |  |
| C-FDN-A7-SN-1250 | Bench (Includes Trench) - Pipe Penetrations |  |  |  |  |  | C-FDN-A7-SN-1330 → C-FDN-A7-SN-1330, C-FDN-A7-SN-1240 |  |
| C-FDN-A7-SN-1690 | Wall (Includes Trench) - Pipe Penetrations |  |  |  |  |  | none → C-FDN-A7-SN-1680 |  |
| 6 | **East Natatorium Benches** | 2026-03-26 → 2026-04-16 (+21d) | 2026-04-11 → 2026-05-01 (+20d) |  |  |  |  |  |
| C-FDN-A7-SN-1570 | Forming | 2026-03-26 → 2026-04-16 (+21d) | 2026-03-27 → 2026-04-17 (+21d) |  |  | 20d → 13d | C-FDN-SN-S1E/S1F/S7/S2B-1100, T-INT-MF-Z5-2630, T-INT-MF-Z5-2230, T-INT-MF-Z5-2090 → C-FDN-SN-S1E/S1F/S7/S2B-1100, T-INT-MF-Z5-2630, T-INT-MF-Z5-2230 |  |
| C-FDN-A7-SN-1580 | Rebar | 2026-03-30 → 2026-04-20 (+21d) | 2026-04-01 → 2026-04-22 (+21d) |  |  | 15d → 11d |  |  |
| C-FDN-A7-SN-1590 | Inspection | 2026-04-02 → 2026-04-23 (+21d) | 2026-04-02 → 2026-04-23 (+21d) |  |  | 15d → 11d |  |  |
| C-FDN-A7-SN-1600 | Close | 2026-04-03 → 2026-04-24 (+21d) | 2026-04-06 → 2026-04-25 (+19d) |  |  | 18d → 14d |  |  |
| C-FDN-A7-SN-1610 | Pour | 2026-04-07 → 2026-04-27 (+20d) | 2026-04-07 → 2026-04-27 (+20d) |  |  | 14d → 11d |  |  |
| C-FDN-A7-SN-1660 | Cure | 2026-04-08 → 2026-04-28 (+20d) | 2026-04-10 → 2026-04-30 (+20d) |  |  | 18d → 13d |  |  |
| C-FDN-A7-SN-1620 | Strip | 2026-04-11 → 2026-05-01 (+20d) | 2026-04-11 → 2026-05-01 (+20d) |  |  | 18d → 13d |  |  |
| 2 | **SUPERSTRUCTURE (CORE AND SHELL)** |  | 2026-02-20 → 2026-04-30 (+69d) |  |  |  |  |  |
| 2 | **BUILDING ENVELOPE** |  | 2026-02-20 → 2026-04-30 (+69d) |  |  |  |  |  |
| C-ENV-GL-1000 | Exterior Glazing Finishing | 2026-01-26 → 2026-04-02 A (+66d) | 2026-02-06 → 2026-04-17 (+70d) |  |  | 94d → 59d | C-ENV-SID-CL-S-1040 → C-ENV-SID-CL-S-1040, T-INT-MF-Z2-1230 |  |
| C-ENV-RF-N-1030 | Mockup |  |  |  |  |  | none → C-ENV-RF-N-1020 |  |
| 2 | **North Side** |  | 2026-02-20 → 2026-04-30 (+69d) |  |  |  |  |  |
| 1 | **Clading** |  | 2026-02-20 → 2026-04-30 (+69d) |  |  |  |  |  |
| C-ENV-SID-CL-N-1040 | Wood Soffit | 2026-02-09 → 2026-04-20 (+70d) | 2026-02-20 → 2026-04-30 (+69d) |  |  | 94d → 59d |  |  |
| 4 | **South Side** |  | 2026-01-23 → 2026-01-29 (+6d) |  |  |  |  |  |
| 1 | **Clading** |  | 2026-01-23 → 2026-01-29 (+6d) |  |  |  |  |  |
| C-ENV-SID-CL-S-1040 | Stone Veneer |  | 2026-01-23 → 2026-01-29 A (+6d) |  | 0% → 100% | 28d → none | C-ENV-SID-CL-S-1020, C-SW-1090, C-ENV-SID-CL-S-1070 → C-ENV-SID-CL-S-1020, C-SW-1090, C-ENV-SID-CL-S-1070, MIL-C-740 FF |  |
| C-ENV-SID-CL-S-1050 | IMP Installation |  |  |  |  |  | C-ENV-SID-CL-S-1020, T-INT-SF-MR-2020 SS+2d, C-ENV-S-CL-1000 → C-ENV-SID-CL-S-1020, T-INT-SF-MR-2020 SS+2d, C-ENV-S-CL-1000, MIL-C-740 FF |  |
| 3 | **INTERIOR** |  | 2026-06-19 → 2026-07-07 (+18d) |  |  |  |  |  |
| 1 | **BASEMENT** |  | 2026-05-25 → 2026-05-11 (-14d) |  |  |  |  |  |
| 3 | **Basement & Pool Equipments** |  | 2026-05-25 → 2026-05-11 (-14d) |  |  |  |  |  |
| T-INT-MF-BA-9000 | Basement Completion | 2026-05-25 → 2026-05-11 (-14d) | 2026-05-25 → 2026-05-11 (-14d) |  |  | 56d → 65d | T-INT-BA-2100 FF, T-INT-BA-2010 FF, T-INT-BA-2000 FF, T-INT-BA-2020 FF, T-INT-BA-2030 FF, T-INT-BA-2040 FF, T-INT-BA-2050 FF, T-INT-BA-2120 FF, Plumbing Circulation loop from wall to filter back to wall FF, Water Filtration Loops FF, U.V Bypass loops FF, Chemical Bypass Loops FF, Heat Exchanger Bypass Loops FF, Finishing Trim FF, Pool E System FF, T-INT-BA-2070 FF, T-INT-BA-2060 FF, T-INT-BA-2080 FF, T-INT-BA-2090 FF → T-INT-BA-2100 FF, T-INT-BA-2010 FF, T-INT-BA-2000 FF, T-INT-BA-2020 FF, T-INT-BA-2030 FF, T-INT-BA-2040 FF, T-INT-BA-2050 FF, T-INT-BA-2120 FF, T-INT-BA-2070 FF, T-INT-BA-2060 FF, T-INT-BA-2080 FF, T-INT-BA-2090 FF |  |
| 1 | **Pool Equipment & Fitout** |  | 2026-05-25 → 2026-04-20 (-35d) |  |  |  |  |  |
| T-INT-BA-2120 | Mount equipment on rack and walls |  | 2025-12-22 A → 2025-12-26 A (+4d) |  |  |  |  |  |
| 3 | **Connections & Fixtures** | 2026-02-24 → 2026-03-30 (+34d) | 2026-04-07 → 2026-04-27 (+20d) |  |  |  |  |  |
| T-INT-BA-2060 | Electrical Connections and Rough In's | 2026-02-24 → 2026-03-30 A (+34d) | 2026-03-30 → 2026-04-21 (+22d) |  |  | 39d → 45d | Water Filtration Loops → T-INT-MF-Z1-ER-1170, T-INT-MF-Z4-1020 FF, T-INT-BA-PD-1150 FF, T-INT-BA-PA-1090 FF, T-INT-BA-PC-1070 FF, T-INT-BA-PB-1020 FF |  |
| T-INT-BA-2070 | Mechanical Fixtures | 2026-02-24 → 2026-03-30 A (+34d) | 2026-03-03 → 2026-04-21 (+49d) |  |  | 47d → 39d |  |  |
| T-INT-BA-2080 | Electrical Fixtures | 2026-03-31 → 2026-04-21 (+21d) | 2026-04-07 → 2026-04-27 (+20d) |  |  | 39d → 49d |  |  |
| 4 | **Startup & Testing** | 2026-04-20 → 2026-05-11 (+21d) | 2026-04-20 → 2026-05-11 (+21d) |  |  |  |  |  |
| T-INT-BA-2090 | Pool Equipment Start Up and Testing | 2026-04-20 → 2026-05-11 (+21d) | 2026-04-20 → 2026-05-11 (+21d) |  |  | 33d → 31d | T-INT-MF-Z1-ER-1150, T-INT-BA-2060, Heat Exchanger Bypass Loops → T-INT-MF-Z1-ER-1150, T-INT-BA-2060, T-INT-BA-PD-1140, T-INT-BA-PA-1110, T-INT-BA-PC-1060, T-INT-BA-PB-1030 |  |
| 2 | **MAIN FLOOR** |  | 2026-06-19 → 2026-07-06 (+17d) |  |  |  |  |  |
| 1 | **ZONE #1 - MECHANICAL ROOM, ELECTRICAL ROOM, EXIT CORRIDOR** |  | 2026-04-28 → 2026-05-22 (+24d) |  |  |  |  |  |
| T-INT-MF-Z1-9000 | Zone 01 Completion | 2026-04-28 → 2026-05-22 (+24d) | 2026-04-28 → 2026-05-22 (+24d) |  |  | 74d → 57d | T-INT-MF-Z1-1350 FF, T-INT-MF-Z1-1310 FF, T-INT-MF-Z1-1360 FF, T-INT-MF-Z1-1280 FF, T-INT-MF-Z1-1330 FF, T-INT-MF-Z1-1370 FF, T-INT-MF-Z1-1300 FF, T-INT-MF-Z1-1080 FF, T-INT-MF-Z1-1130 FF, T-INT-MF-Z1-1262 FF, T-INT-MF-Z1-1100 FF, T-INT-MF-Z1-1190 FF, T-INT-MF-Z1-1110 FF, T-INT-MF-Z1-1220 FF, T-INT-MF-Z1-1170 FF, T-INT-MF-Z1-1180 FF, T-INT-MF-Z1-1250 FF, T-INT-MF-Z1-1270 FF, T-INT-MF-Z1-ER-1020 FF, T-INT-MF-Z1-ER-1050 FF, T-INT-MF-Z1-ER-1070 FF, T-INT-MF-Z1-ER-1100 FF, T-INT-MF-Z1-ER-1090 FF, T-INT-MF-Z1-ER-1080 FF, T-INT-MF-Z1-ER-1030 FF, T-INT-MF-Z1-ER-1120 FF, T-INT-MF-Z1-ER-1160 FF, T-INT-MF-Z1-ER-1130 FF, T-INT-MF-Z1-ER-1110 FF, T-INT-MF-Z1-ER-1140 FF, T-INT-MF-Z1-ER-1150 FF, T-INT-MF-Z1-1000 FF, T-INT-MF-Z1-MR-1060 FF, T-INT-MF-Z1-1230 FF, T-INT-MF-Z1-1010 FF, T-INT-MF-Z1-1050 FF, T-INT-MF-Z1-MR-1090 FF, T-INT-MF-Z1-1240 FF, T-INT-MF-Z1-1200 FF, T-INT-MF-Z1-1140 FF, T-INT-MF-Z1-1150 FF, T-INT-MF-Z1-1120 FF, T-INT-MF-Z1-1060 FF, T-INT-MF-Z1-1070 FF, T-INT-MF-Z1-MR-1080 FF, T-INT-MF-Z1-MR-1040 FF, T-INT-MF-Z1-1090 FF, T-INT-MF-Z1-1260 FF, T-INT-MF-Z1-MR-1180 FF, T-INT-MF-Z1-MR-1150 FF → T-INT-MF-Z1-1350 FF, T-INT-MF-Z1-1310 FF, T-INT-MF-Z1-1360 FF, T-INT-MF-Z1-1280 FF, T-INT-MF-Z1-1330 FF, T-INT-MF-Z1-1370 FF, T-INT-MF-Z1-1300 FF, T-INT-MF-Z1-1080 FF, T-INT-MF-Z1-1130 FF, T-INT-MF-Z1-1262 FF, T-INT-MF-Z1-1100 FF, T-INT-MF-Z1-1190 FF, T-INT-MF-Z1-1110 FF, T-INT-MF-Z1-1220 FF, T-INT-MF-Z1-1170 FF, T-INT-MF-Z1-1180 FF, T-INT-MF-Z1-1250 FF, T-INT-MF-Z1-1270 FF, T-INT-MF-Z1-ER-1020 FF, T-INT-MF-Z1-ER-1050 FF, T-INT-MF-Z1-ER-1070 FF, T-INT-MF-Z1-ER-1100 FF, T-INT-MF-Z1-ER-1090 FF, T-INT-MF-Z1-ER-1080 FF, T-INT-MF-Z1-ER-1030 FF, T-INT-MF-Z1-ER-1120 FF, T-INT-MF-Z1-ER-1160 FF, T-INT-MF-Z1-ER-1130 FF, T-INT-MF-Z1-ER-1110 FF, T-INT-MF-Z1-ER-1140 FF, T-INT-MF-Z1-ER-1150 FF, T-INT-MF-Z1-1000 FF, T-INT-MF-Z1-MR-1060 FF, T-INT-MF-Z1-1230 FF, T-INT-MF-Z1-1010 FF, T-INT-MF-Z1-1050 FF, T-INT-MF-Z1-MR-1090 FF, T-INT-MF-Z1-1240 FF, T-INT-MF-Z1-1200 FF, T-INT-MF-Z1-1140 FF, T-INT-MF-Z1-1150 FF, T-INT-MF-Z1-1120 FF, T-INT-MF-Z1-1060 FF, T-INT-MF-Z1-1070 FF, T-INT-MF-Z1-MR-1080 FF, T-INT-MF-Z1-MR-1040 FF, T-INT-MF-Z1-1090 FF, T-INT-MF-Z1-1260 FF, T-INT-MF-Z1-MR-1180 FF, T-INT-MF-Z1-1340 FF, T-INT-MF-Z1-1390 FF |  |
| 6 | **Corridor Fitouts (AQ-C002 & AQ-C005)** |  | 2026-04-20 → 2026-05-15 (+25d) |  |  |  |  |  |
| T-INT-MF-Z1-1110 | Electrical Runs |  | 2026-03-13 → 2026-04-02 A (+20d) |  | 0% → 100% | 54d → none |  |  |
| T-INT-MF-Z1-1170 | Mechanical Fixtures- Ceilings | 2026-03-23 → 2026-03-09 A (-14d) | 2026-04-06 → 2026-04-20 (+14d) |  |  | 54d → 50d | T-INT-MF-Z1-1100, T-INT-MF-Z1-1010, T-INT-MF-Z1-1220 → T-INT-MF-Z1-1100, T-INT-MF-Z1-1010, T-INT-MF-Z1-1220 FF, T-INT-MF-Z1-1320 FF, T-INT-MF-Z1-1340 FF |  |
| T-INT-MF-Z1-1220 | Hard Ceiling Framing/ Grid | 2026-03-16 → 2026-04-09 (+24d) | 2026-03-20 → 2026-04-14 (+25d) | 5d → 4d |  | 54d → 50d | T-INT-MF-Z1-1190, T-INT-MF-Z1-1110, T-INT-MF-Z1-1100 → T-INT-MF-Z1-1190, T-INT-MF-Z1-1110, T-INT-MF-Z1-1100, T-INT-MF-Z1-1290 FS-1d | was named T-Bar Ceiling Grid |
| T-INT-MF-Z1-1250 | DryWall Mud & Tape | 2026-04-07 → 2026-04-21 (+14d) | 2026-04-13 → 2026-04-27 (+14d) |  |  | 54d → 50d | T-INT-MF-Z1-1180, T-INT-MF-Z1-1170 → T-INT-MF-Z1-1170, T-INT-MF-Z1-1340 | was named Ceiling Tiles |
| T-INT-MF-Z1-1270 | Resilient Flooring | 2026-04-14 → 2026-04-28 (+14d) | 2026-04-20 → 2026-05-04 (+14d) |  |  | 54d → 57d |  |  |
| T-INT-MF-Z1-1180 | Electrical Fixtures- Ceilings | 2026-03-23 → 2026-04-30 (+38d) | 2026-04-06 → 2026-05-13 (+37d) |  |  | 54d → 50d | T-INT-MF-Z1-1110, T-INT-MF-Z1-1010, T-INT-MF-Z1-1220 → T-INT-MF-Z1-1110, T-INT-MF-Z1-1010, T-INT-MF-Z1-1220, T-INT-MF-Z1-1340, T-INT-MF-Z1-1380 |  |
| 1 | **Electrical Room (AQ152) Equipments & Fitouts** |  | 2026-03-11 → 2026-05-08 (+58d) |  |  |  |  |  |
| T-INT-MF-Z1-ER-1110 | Pull Branch Power For The Energizations- Power Distribution | 2026-01-19 → 2026-01-12 A (-7d) | 2026-03-04 → 2026-03-02 A (-2d) |  | 0% → 100% | 42d → none |  | was named Pull Branch Power For The Entire Building |
| T-INT-MF-Z1-ER-1160 | CDP Feeds to L2 | 2026-01-19 A | 2026-01-21 A |  | 0% → 100% | 61d → none |  |  |
| T-INT-MF-Z1-ER-1130 | Transformer is Ready for Energization | 2026-03-04 → 2026-03-02 A (-2d) | 2026-03-04 → 2026-03-02 A (-2d) |  | 0% → 100% | 42d → none |  |  |
| T-INT-MF-Z1-ER-1030 | Door Install | 2026-01-12 A → 2026-03-13 A (+60d) | 2026-01-19 → 2026-03-13 A (+53d) |  | 0% → 100% | 73d → none |  |  |
| T-INT-MF-Z1-ER-1140 | Inspection | 2026-03-05 → 2026-03-20 A (+15d) | 2026-03-11 → 2026-03-20 A (+9d) | 5d → 1d | 0% → 100% | 42d → none | T-INT-MF-Z1-ER-1130, T-INT-MF-Z1-ER-1030 → T-INT-MF-Z1-ER-1130, X-T-INT-MF-Z1-ER-1040 FF |  |
| T-INT-MF-Z1-ER-1150 | Energization | 2026-03-05 → 2026-05-04 (+60d) | 2026-03-11 → 2026-05-08 (+58d) |  |  | 42d → 12d | T-INT-MF-Z1-ER-1140 SS, T-INT-MF-Z1-ER-1050 FF, T-INT-MF-Z1-ER-1070, T-INT-MF-Z1-ER-1080, IPP-SAFE-184 → T-INT-MF-Z1-ER-1140 SS, T-INT-MF-Z1-ER-1050 FF, T-INT-MF-Z1-ER-1070, T-INT-MF-Z1-ER-1080, IPP-SAFE-184, X-T-INT-MF-Z1-ER-1040, T-INT-MF-Z1-ER-1180, T-INT-MF-Z1-1260 |  |
| 2 | **Mechanical Room (AQ153) Fitouts** |  | 2026-04-28 → 2026-05-22 (+24d) |  |  |  |  |  |
| T-INT-MF-Z1-MR-1080 | Mechanical Room Fitout Including Piping |  | 2026-03-12 → 2026-03-19 A (+7d) |  | 0% → 100% | 40d → none |  |  |
| T-INT-MF-Z1-1150 | Removal of Hoardings |  | 2026-01-22 → 2026-01-15 A (-7d) |  | 0% → 100% | 24d → none |  |  |
| T-INT-MF-Z1-9010 | Pipe Runs Material Delivery |  | 2026-02-12 A |  | 0% → 100% | 9d → none |  |  |
| T-INT-MF-Z1-1120 | Pipe runs from Mechanical room to Level 2 | 2026-02-13 A | 2026-03-02 → 2026-04-23 (+52d) | 11d → 9d |  | 9d → 3d | T-INT-MF-Z1-1150, T-INT-MF-Z1-9010 → T-INT-MF-Z1-1150, T-INT-MF-Z1-9010, T-INT-MF-Z1-1290 FF+10d, T-INT-MF-Z1-1400 FF |  |

| ID | Task | Start | Finish | Duration | Complete | Total float | Predecessors | Other |
| --- | --- | --- | --- | --- | --- | --- | --- | --- |
| T-INT-MF-Z1-1260 | Electrical Connections | 2026-03-05 → 2026-03-02 A (-3d) | 2026-03-25 → 2026-03-27 A (+2d) |  | 0% → 100% | 47d → none | T-INT-MF-Z1-1240, T-INT-MF-Z1-ER-1080, T-INT-MF-Z1-ER-1110, T-INT-MF-Z1-MR-1080 FF → T-INT-MF-Z1-1240, T-INT-MF-Z1-ER-1080, T-INT-MF-Z1-ER-1110, T-INT-MF-Z1-MR-1080 FF, T-INT-MF-Z1-ER-1170 FF |  |
| T-INT-MF-Z1-1070 | Mechanical Fixtures- Ceilings | 2026-03-09 → 2026-03-30 A (+21d) | 2026-03-20 → 2026-05-01 (+42d) |  |  | 58d → 42d | P-PRO-677, T-INT-MF-Z1-1200, T-INT-MF-Z1-MR-1080 FF, T-INT-MF-Z1-1060 → P-PRO-677, T-INT-MF-Z1-1200, T-INT-MF-Z1-MR-1080 FF, T-INT-MF-Z1-1060 FF |  |
| T-INT-MF-Z1-MR-1040 | Door Install | 2026-03-13 → 2026-04-06 (+24d) | 2026-03-13 → 2026-04-06 (+24d) |  |  | 40d → 36d |  |  |
| T-INT-MF-Z1-1060 | Painting Drywall | 2026-03-03 → 2026-04-20 (+48d) | 2026-03-06 → 2026-04-23 (+48d) |  |  | 45d → 23d | P-PRO-169, T-INT-MF-Z1-1010, T-INT-MF-Z1-1000, T-INT-MF-Z1-1050, MIL-C-710, IPP-QAQC-202 SS, T-INT-MF-Z1-1120 → P-PRO-169, T-INT-MF-Z1-1010, T-INT-MF-Z1-1000, T-INT-MF-Z1-1050, MIL-C-710, IPP-QAQC-202 SS, T-INT-MF-Z1-1120 FF |  |
| T-INT-MF-Z1-1090 | Electrical Fixtures- Ceilings | 2026-03-12 → 2026-04-24 (+43d) | 2026-03-25 → 2026-05-07 (+43d) |  |  | 47d → 41d |  |  |
| T-INT-MF-Z1-MR-1150 | Mechanical Piping Insulation | 2026-03-03 → 2026-04-24 (+52d) | 2026-04-28 → 2026-05-22 (+24d) | 40d → 20d |  | 9d → 3d |  |  |
| T-INT-MF-Z1-MR-1180 | Room Is Ready | 2026-04-28 → 2026-05-22 (+24d) | 2026-04-28 → 2026-05-22 (+24d) |  |  | 9d → 3d | T-INT-MF-Z1-MR-1080 FF, T-INT-MF-Z1-MR-1150 FF, T-INT-MF-Z1-MR-1040 FF, P-PRO-697 FF, C-SOG-S1B-1050 FF, T-INT-MF-Z1-1060 FF → T-INT-MF-Z1-MR-1080 FF, T-INT-MF-Z1-MR-1150 FF, T-INT-MF-Z1-MR-1040 FF, P-PRO-697 FF, C-SOG-S1B-1050 FF, T-INT-MF-Z1-1060 FF, T-INT-MF-Z1-MR-1100 FF |  |
| T-INT-MF-Z2-1100 | Ceiling T-Bar and Perimeter/ Service Tiles | 2026-01-26 → 2026-01-29 A (+3d) | 2026-02-06 A |  | 0% → 100% | 15d → none |  | was named Ceiling T-Bar and Perimeter/ Devices Tiles; constraint start on or after 2026-01-26 → none |
| T-INT-MF-Z2-1130 | Electrical/Mechanical Rough-Ins/ Fixtures | 2026-03-27 → 2026-02-09 A (-46d) | 2026-04-10 → 2026-03-05 A (-36d) |  | 0% → 100% | 36d → none | T-INT-MF-Z2-1090, T-INT-MF-Z2-1110, P-PRO-747, P-PRO-767, P-PRO-777 → P-PRO-747, P-PRO-767, P-PRO-777, X-T-INT-MF-Z2-1130 FF | was named Electrical Fixtures |
| T-INT-MF-Z2-1230 | Interior Storefront (BL 3, 5 8, 9, 10) | 2026-03-03 → 2026-03-16 A (+13d) | 2026-03-05 → 2026-03-18 A (+13d) |  | 0% → 100% | 64d → none | T-INT-MF-Z2-1110 → T-INT-MF-Z2-1100, T-INT-MF-Z5-1180 |  |
| T-INT-MF-Z2-1110 | Floor Tiling | 2026-02-09 → 2026-03-22 A (+41d) | 2026-03-02 → 2026-03-31 A (+29d) | 15d → 14d | 0% → 100% | 15d → none | P-PRO-168, T-INT-MF-Z2-1070, T-INT-MF-Z2-1100 → T-INT-MF-Z2-1230 | was named Tiling |
| T-INT-MF-Z2-1150 | Install of Remaining Ceiling Tiles | 2026-04-27 → 2026-04-20 (-7d) | 2026-05-01 → 2026-04-24 (-7d) |  |  | 45d → 19d | T-INT-MF-Z2-1100, T-INT-MF-Z2-1140 → T-INT-MF-Z2-1100, T-INT-MF-Z2-1110 | constraint none → start on or after 2026-04-20 |
| T-INT-MF-Z2-1090 | Millwork | 2026-03-20 → 2026-04-27 (+38d) | 2026-03-26 → 2026-05-01 (+36d) |  |  | 15d → 19d | T-INT-MF-Z2-1070, P-PRO-165, T-INT-MF-Z2-1110 FS+13d → T-INT-MF-Z2-1070, P-PRO-165, T-INT-MF-Z2-1230, T-INT-MF-Z2-1130, T-INT-MF-Z2-1110, T-INT-MF-Z2-1150 |  |
| T-INT-MF-Z2-1140 | Finish Paint | 2026-04-20 → 2026-05-04 (+14d) | 2026-04-24 → 2026-05-08 (+14d) |  |  | 45d → 53d | T-INT-MF-Z2-1120, T-INT-MF-Z2-1130, T-INT-MF-Z2-1110, T-INT-MF-Z2-1080 → T-INT-MF-Z2-1130, T-INT-MF-Z2-1080, T-INT-MF-Z2-1180, T-INT-MF-Z2-1090 |  |
| T-INT-MF-Z2-1220 | Millwork Countertops | 2026-04-10 → 2026-05-04 (+24d) | 2026-04-10 → 2026-05-04 (+24d) |  |  | 26d → 36d | T-INT-MF-Z2-1090, T-INT-MF-Z3-1270 → T-INT-MF-Z2-1090 |  |
| T-INT-MF-Z2-1120 | Mechanical Fixtures | 2026-04-13 → 2026-05-05 (+22d) | 2026-04-17 → 2026-05-11 (+24d) |  |  | 39d → 36d | T-INT-MF-Z2-1090, T-INT-MF-Z2-1110, P-PRO-677, P-PRO-627, P-PRO-657, T-INT-MF-Z2-1230, T-INT-MF-Z2-1220 → T-INT-MF-Z2-1090, P-PRO-677, P-PRO-627, P-PRO-657, T-INT-MF-Z2-1230, T-INT-MF-Z2-1220, T-INT-MF-Z2-1200 |  |
| T-INT-MF-Z2-9000 | Zone 2 Completion | 2026-05-01 → 2026-05-15 (+14d) | 2026-05-01 → 2026-05-15 (+14d) |  |  | 71d → 61d | T-INT-MF-Z2-1000 FF, T-INT-MF-Z2-1010 FF, T-INT-MF-Z2-1040 FF, T-INT-MF-Z2-1020 FF, T-INT-MF-Z2-1030 FF, T-INT-MF-Z2-1050 FF, T-INT-MF-Z2-1060 FF, T-INT-MF-Z2-1170 FF, T-INT-MF-Z2-1070 FF, T-INT-MF-Z2-1210 FF, T-INT-MF-Z2-1080 FF, T-INT-MF-Z2-1100 FF, T-INT-MF-Z2-1110 FF, T-INT-MF-Z2-1230 FF, T-INT-MF-Z2-1090 FF, T-INT-MF-Z2-1120 FF, T-INT-MF-Z2-1130 FF, T-INT-MF-Z2-1220 FF, T-INT-MF-Z2-1140 FF, T-INT-MF-Z2-1150 FF → T-INT-MF-Z2-1000 FF, T-INT-MF-Z2-1010 FF, T-INT-MF-Z2-1040 FF, T-INT-MF-Z2-1020 FF, T-INT-MF-Z2-1030 FF, T-INT-MF-Z2-1050 FF, T-INT-MF-Z2-1060 FF, T-INT-MF-Z2-1170 FF, T-INT-MF-Z2-1070 FF, T-INT-MF-Z2-1210 FF, T-INT-MF-Z2-1080 FF, T-INT-MF-Z2-1100 FF, T-INT-MF-Z2-1230 FF, T-INT-MF-Z2-1090 FF, T-INT-MF-Z2-1120 FF, T-INT-MF-Z2-1130 FF, T-INT-MF-Z2-1220 FF, T-INT-MF-Z2-1140 FF, T-INT-MF-Z2-1150 FF, T-INT-MF-Z2-1110 FF, T-INT-MF-Z2-1190 FF |  |
| T-INT-MF-Z3-1060 | Mechanical Ceiling Rough In's |  | 2026-02-06 A |  |  | 6d → none |  |  |
| T-INT-MF-Z3-1070 | Electrical Ceiling Rough In's (Includes Branch power Pathways) |  | 2026-02-06 A |  |  | 6d → none |  |  |
| T-INT-MF-Z3-1280 | Trench Drains |  | 2026-02-06 → 2026-02-13 A (+7d) |  | 0% → 100% | 33d → none |  |  |
| T-INT-MF-Z3-1050 | Tiling - Topping Slab | 2026-02-06 → 2026-01-26 A (-11d) | 2026-02-06 → 2026-02-04 A (-2d) |  | 0% → 100% | 6d → none | T-INT-MF-Z3-1010, T-INT-MF-Z3-1040, T-INT-MF-Z3-1020, T-INT-MF-Z3-1030, T-INT-MF-Z5-1090 → T-INT-MF-Z3-1010, T-INT-MF-Z3-1040, T-INT-MF-Z3-1020, T-INT-MF-Z3-1030, T-INT-MF-Z5-1090 FF |  |
| T-INT-MF-Z3-1080 | High Ceiling and Bulkhead Framing | 2026-02-06 → 2026-02-04 A (-2d) | 2026-02-17 → 2026-02-11 A (-6d) |  | 0% → 100% | 6d → none | T-INT-MF-Z3-1030, T-INT-MF-Z3-1070, T-INT-MF-Z3-1060 → T-INT-MF-Z3-1030, T-INT-MF-Z3-1070, X-T-INT-MF-Z2-1130 SS | was named Ceiling and Bulkhead Framing |
| T-INT-MF-Z3-1250 | Sprinkler Heads | 2026-02-18 A | 2026-02-24 A |  | 0% → 100% | 6d → none |  |  |
| T-INT-MF-Z3-1150 | Tiling - Floor | 2026-03-19 → 2026-02-23 A (-24d) | 2026-04-09 → 2026-04-22 (+13d) |  |  | 6d → 2d | T-INT-MF-Z3-1120, T-INT-MF-Z3-1050 → T-INT-MF-Z3-1050, T-INT-MF-Z3-1110 FF |  |
| T-INT-MF-Z3-1100 | Low Ceiling Drywall Install | 2026-02-26 → 2026-02-25 A (-1d) | 2026-03-02 → 2026-04-14 (+43d) | 3d → 5d |  | 6d → 8d | T-INT-MF-Z3-1060, T-INT-MF-Z3-1070, MIL-C-440, T-INT-MF-Z3-1080, IPP-QAQC-229, T-INT-MF-Z3-1090, T-INT-MF-Z3-1050, T-INT-MF-Z3-1280 SS → T-INT-MF-Z3-1060, T-INT-MF-Z3-1070, MIL-C-440, T-INT-MF-Z3-1080, IPP-QAQC-229 FF, T-INT-MF-Z3-1090 FF, T-INT-MF-Z3-1050, T-INT-MF-Z3-1280 SS, X-T-INT-MF-Z2-1130 | was named Ceiling Drywall Install |
| T-INT-MF-Z3-1090 | Ceiling Inspection | 2026-02-25 → 2026-03-20 A (+23d) | 2026-02-25 → 2026-03-20 A (+23d) |  | 0% → 100% | 6d → none | T-INT-MF-Z3-1080, T-INT-MF-Z3-1250 → T-INT-MF-Z3-1080, T-INT-MF-Z3-1250, T-INT-MF-Z3-1310 |  |
| T-INT-MF-Z3-1110 | Ceiling Mud, Tape and Sand | 2026-03-03 → 2026-03-23 A (+20d) | 2026-03-04 → 2026-04-14 (+41d) | 2d → 10d | 0% → 100% | 6d → 8d | T-INT-MF-Z3-1100 → T-INT-MF-Z3-1100 FF, T-INT-MF-Z3-1090 |  |
| T-INT-MF-Z3-1120 | Paint - Prime Plus One | 2026-03-05 → 2026-04-23 (+49d) | 2026-03-18 → 2026-05-06 (+49d) |  |  | 6d → 35d | T-INT-MF-Z3-1110, IPP-QAQC-239, T-INT-MF-Z3-1030, T-INT-MF-Z3-1010 → T-INT-MF-Z3-1110, IPP-QAQC-239, T-INT-MF-Z3-1030, T-INT-MF-Z3-1010, T-INT-MF-Z3-1150 |  |
| T-INT-MF-Z3-1130 | Millwork - Vanities | 2026-04-10 → 2026-04-27 (+17d) | 2026-04-20 → 2026-05-05 (+15d) |  |  | 6d → 19d | T-INT-MF-Z3-1150, T-INT-MF-Z2-1090 → T-INT-MF-Z3-1150, T-INT-MF-Z2-1090 SS |  |
| T-INT-MF-Z3-1170 | Electrical Fixtures | 2026-04-21 → 2026-05-06 (+15d) | 2026-05-11 → 2026-05-27 (+16d) |  |  | 15d → 28d | P-PRO-747, P-PRO-777, T-INT-MF-Z3-1130 → P-PRO-747, P-PRO-777, T-INT-MF-Z3-1130, T-INT-MF-Z3-1330 |  |
| T-INT-MF-Z3-1240 | Millwork Countertops | 2026-04-21 → 2026-05-06 (+15d) | 2026-04-22 → 2026-05-07 (+15d) |  |  | 20d → 19d | T-INT-MF-Z3-1130, T-INT-MF-Z2-1220 → T-INT-MF-Z3-1130 |  |
| T-INT-MF-Z3-1200 | Lockers | 2026-03-19 → 2026-05-07 (+49d) | 2026-04-01 → 2026-05-21 (+50d) |  |  | 26d → 35d |  |  |
| T-INT-MF-Z3-1140 | Wall Tiling | 2026-04-23 → 2026-05-08 (+15d) | 2026-05-13 → 2026-05-29 (+16d) |  |  | 22d → 19d |  |  |
| T-INT-MF-Z3-1160 | Mechanical Fixtures | 2026-04-23 → 2026-05-08 (+15d) | 2026-05-13 → 2026-05-29 (+16d) |  |  | 21d → 23d |  |  |
| T-INT-MF-Z3-1270 | Millwork/Lockers | 2026-04-02 → 2026-05-22 (+50d) | 2026-04-09 → 2026-05-28 (+49d) |  |  | 26d → 35d |  |  |
| T-INT-MF-Z3-1190 | Toilet Partitions | 2026-05-14 → 2026-06-01 (+18d) | 2026-06-04 → 2026-06-19 (+15d) |  |  | 22d → 19d |  |  |
| T-INT-MF-Z3-1220 | Final Paint | 2026-05-29 → 2026-06-15 (+17d) | 2026-06-04 → 2026-06-19 (+15d) |  |  | 22d → 24d | T-INT-MF-Z3-1190 FF, T-INT-MF-Z3-1200, T-INT-MF-Z3-1240, P-PRO-183 → T-INT-MF-Z3-1190 FF, T-INT-MF-Z3-1200, T-INT-MF-Z3-1240, P-PRO-183, T-INT-MF-Z3-1270 |  |
| T-INT-MF-Z3-1180 | Washroom Accessories | 2026-05-14 → 2026-06-22 (+39d) | 2026-05-21 → 2026-06-26 (+36d) |  |  | 32d → 19d | P-PRO-243, T-INT-MF-Z3-1140 → P-PRO-243, T-INT-MF-Z3-1140, T-INT-MF-Z3-1190 |  |
| T-INT-MF-Z3-1260 | Zone 03 Completion | 2026-06-04 → 2026-06-26 (+22d) | 2026-06-04 → 2026-06-26 (+22d) |  |  | 48d → 32d | T-INT-MF-Z3-1010 FF, T-INT-MF-Z3-1030 FF, T-INT-MF-Z3-1020 FF, T-INT-MF-Z3-1040 FF, T-INT-MF-Z3-1060 FF, T-INT-MF-Z3-1070 FF, T-INT-MF-Z3-1080 FF, T-INT-MF-Z3-1250 FF, T-INT-MF-Z3-1090 FF, T-INT-MF-Z3-1100 FF, T-INT-MF-Z3-1110 FF, T-INT-MF-Z3-1050 FF, T-INT-MF-Z3-1120 FF, T-INT-MF-Z3-1200 FF, T-INT-MF-Z3-1150 FF, T-INT-MF-Z3-1130 FF, T-INT-MF-Z3-1160 FF, T-INT-MF-Z3-1170 FF, T-INT-MF-Z3-1240 FF, T-INT-MF-Z3-1140 FF, T-INT-MF-Z3-1180 FF, T-INT-MF-Z3-1190 FF, T-INT-MF-Z3-1220 FF → T-INT-MF-Z3-1010 FF, T-INT-MF-Z3-1030 FF, T-INT-MF-Z3-1020 FF, T-INT-MF-Z3-1040 FF, T-INT-MF-Z3-1060 FF, T-INT-MF-Z3-1070 FF, T-INT-MF-Z3-1080 FF, T-INT-MF-Z3-1250 FF, T-INT-MF-Z3-1090 FF, T-INT-MF-Z3-1100 FF, T-INT-MF-Z3-1110 FF, T-INT-MF-Z3-1050 FF, T-INT-MF-Z3-1120 FF, T-INT-MF-Z3-1200 FF, T-INT-MF-Z3-1150 FF, T-INT-MF-Z3-1130 FF, T-INT-MF-Z3-1160 FF, T-INT-MF-Z3-1170 FF, T-INT-MF-Z3-1240 FF, T-INT-MF-Z3-1140 FF, T-INT-MF-Z3-1180 FF, T-INT-MF-Z3-1190 FF, T-INT-MF-Z3-1220 FF, T-INT-MF-Z3-1310 FF, T-INT-MF-Z3-1300 FF |  |
| T-INT-MF-Z4-9000 | Zone 04 Completion | 2026-05-21 → 2026-06-23 (+33d) | 2026-05-21 → 2026-06-23 (+33d) |  |  | 58d → 35d | T-INT-MF-Z4-1080, T-INT-MF-Z4-1010, T-INT-MF-Z4-1000, T-INT-MF-Z4-1110, T-INT-MF-Z4-1020, T-INT-MF-Z4-1040, T-INT-MF-Z4-1070, T-INT-MF-Z4-1140, Storage, Pumps and Boosters, Flow Meters, T-INT-MF-Z4-1230, T-INT-MF-Z4-1090, T-INT-MF-Z4-1130, T-INT-MF-Z4-1190, T-INT-MF-Z4-1120, T-INT-MF-Z4-1180, T-INT-MF-Z4-1200, T-INT-MF-Z4-1210 → T-INT-MF-Z4-1080, T-INT-MF-Z4-1010, T-INT-MF-Z4-1000, T-INT-MF-Z4-1110, T-INT-MF-Z4-1020, T-INT-MF-Z4-1040, T-INT-MF-Z4-1070, T-INT-MF-Z4-1230, T-INT-MF-Z4-1090, T-INT-MF-Z4-1130, T-INT-MF-Z4-1190, T-INT-MF-Z4-1120, T-INT-MF-Z4-1180, T-INT-MF-Z4-1200, T-INT-MF-Z4-1210 |  |
| 3 | **Prep & Rough-Ins** |  | 2026-03-03 → 2026-05-11 (+69d) |  |  |  |  |  |
| T-INT-MF-Z4-1000 | Block Wall |  | 2026-01-30 → 2026-03-20 A (+49d) |  | 0% → 100% | 8d → none |  |  |
| T-INT-MF-Z4-1020 | Electrical Rough In's- Ceiling & Wall |  | 2026-02-09 → 2026-04-15 (+65d) |  |  | 12d → 48d | T-INT-MF-Z4-1000 SS, T-INT-MF-Z4-1000 FF+5d, T-INT-MF-Z4-9010 FF → T-INT-MF-Z4-1000 FF, T-INT-MF-Z4-9010 FF, T-INT-MF-Z4-1110 FF+3d |  |
| T-INT-MF-Z4-9010 | Door Frame Install | 2026-01-19 → 2026-02-24 A (+36d) | 2026-01-19 → 2026-02-24 A (+36d) |  | 0% → 100% | 17d → none | none → X-C-Z5-NN-FRA-1020 |  |
| T-INT-MF-Z4-1110 | Exterior Wall Drywall, mud, tape | 2026-02-02 → 2026-04-06 (+63d) | 2026-02-06 → 2026-04-10 (+63d) |  |  | 14d → 7d |  | was named Drywall, mud, tape |
| T-INT-MF-Z4-1140 | Vestibule Drywall, mud, tape | 2026-02-25 → 2026-04-06 (+40d) | 2026-05-06 → 2026-04-10 (-26d) | 50d → 5d |  | 8d → 76d | P-PRO-293, T-INT-MF-Z4-1070 SS+5d → T-INT-MF-Z4-1110 SS | was named pH Feeders |
| T-INT-MF-Z4-1040 | Mechanical Rough In's- Ceiling & Wall | 2026-02-02 → 2026-04-13 (+70d) | 2026-02-13 → 2026-04-24 (+70d) |  |  | 8d → 7d | T-INT-MF-Z4-1000, P-TEA-21 SS, T-INT-MF-Z1-1100 → T-INT-MF-Z4-1000, P-TEA-21 SS, T-INT-MF-Z1-1100, T-INT-MF-Z4-1110 |  |
| T-INT-MF-Z4-1070 | Prime and Paint- Prime Plus one | 2026-02-18 → 2026-04-28 (+69d) | 2026-03-03 → 2026-05-11 (+69d) |  |  | 8d → 65d | T-INT-MF-Z4-1040, T-INT-MF-Z4-1020, IPP-QAQC-249, T-INT-MF-Z4-1110 → T-INT-MF-Z4-1040, T-INT-MF-Z4-1020, IPP-QAQC-249, T-INT-MF-Z4-1110, T-INT-MF-Z4-1140, T-INT-MF-Z4-1060 |  |
| T-INT-MF-Z4-1230 | Completion of Pool Equipment Installation | 2026-05-06 → 2026-06-09 (+34d) | 2026-05-06 → 2026-06-09 (+34d) |  |  | 8d → 7d | T-INT-MF-Z4-1140 FF, Storage FF, Pumps and Boosters FF, Flow Meters FF → T-INT-MF-Z4-1260, T-INT-MF-Z4-1290, T-INT-MF-Z4-1270 |  |
| 2 | **Install Mechanical Equipment & Fitouts** | 2026-02-02 → 2026-01-19 (-14d) | 2026-04-14 → 2026-04-24 (+10d) |  |  |  |  |  |
| T-INT-MF-Z4-1090 | Place of Mechanical Equipments & Fitouts | 2026-02-02 → 2026-01-19 A (-14d) | 2026-04-14 → 2026-04-24 (+10d) |  |  | 19d → 33d | P-PRO-517, T-INT-MF-Z4-1000 → P-PRO-517, T-INT-MF-Z4-1000 FF |  |
| 4 | **Finishing** |  | 2026-05-21 → 2026-06-23 (+33d) |  |  |  |  |  |
| T-INT-MF-Z4-1120 | Mechanical Fixtures | 2026-04-15 → 2026-04-27 (+12d) | 2026-04-21 → 2026-05-01 (+10d) |  |  | 19d → 33d |  |  |
| T-INT-MF-Z4-1190 | Door Install | 2026-04-15 → 2026-04-27 (+12d) | 2026-04-15 → 2026-04-27 (+12d) |  |  | 37d → 42d |  |  |
| T-INT-MF-Z4-1200 | Electrical Connections | 2026-05-07 → 2026-06-10 (+34d) | 2026-05-13 → 2026-06-16 (+34d) |  |  | 8d → 7d |  |  |
| T-INT-MF-Z4-1180 | Electrical Fixtures | 2026-05-14 → 2026-06-17 (+34d) | 2026-05-21 → 2026-06-23 (+33d) |  |  | 8d → 9d |  |  |
| T-INT-MF-Z4-1210 | Final Paint | 2026-05-14 → 2026-06-17 (+34d) | 2026-05-21 → 2026-06-23 (+33d) |  |  | 17d → 7d |  |  |
| 5 | **ZONE #5 - NATATORIUM, STEAM AND SAUNA, VIEWING** |  | 2026-06-09 → 2026-07-06 (+27d) |  |  |  |  |  |
| T-INT-MF-Z5-9000 | Zone 05 Completion- North Natatorium | 2026-05-04 → 2026-05-29 (+25d) | 2026-05-04 → 2026-05-29 (+25d) |  |  | 70d → 52d | T-INT-MF-Z5-1280 FF, T-INT-MF-Z5-1300 FF, T-INT-MF-Z5-2760 FF, T-INT-MF-Z5-1040 FF, T-INT-MF-Z5-1140 FF, T-INT-MF-Z5-1220 FF, T-INT-MF-Z5-1030 FF, T-INT-MF-Z5-1320 FF, T-INT-MF-Z5-2750 FF, T-INT-MF-Z5-2740 FF, T-INT-MF-Z5-1290 FF, T-INT-MF-Z5-1010 FF, T-INT-MF-Z5-1130 FF, T-INT-MF-Z5-1270 FF, T-INT-MF-Z5-2780 FF, T-INT-MF-Z5-1340 FF, T-INT-MF-Z5-1050 FF, T-INT-MF-Z5-2770 FF, T-INT-MF-Z5-1310 FF, T-INT-MF-Z5-2900 FF, T-INT-MF-Z5-1120 FF, T-INT-MF-Z5-2790 FF, T-INT-MF-Z5-1020 FF, T-INT-MF-Z5-1100 FF, T-INT-MF-Z5-1080 FF, T-INT-MF-Z5-1090 FF, T-INT-MF-Z5-1150 FF, T-INT-MF-Z5-2310 FF, T-INT-MF-Z5-1210 FF, T-INT-MF-Z5-2920 FF, T-INT-MF-Z5-2870 FF, T-INT-MF-Z5-2860 FF, T-INT-MF-Z5-1180 FF, T-INT-MF-Z5-1230 FF, T-INT-MF-Z5-1110 FF → T-INT-MF-Z5-1280 FF, T-INT-MF-Z5-1300 FF, T-INT-MF-Z5-2760 FF, T-INT-MF-Z5-1040 FF, T-INT-MF-Z5-1140 FF, T-INT-MF-Z5-1220 FF, T-INT-MF-Z5-1030 FF, T-INT-MF-Z5-1320 FF, T-INT-MF-Z5-2750 FF, T-INT-MF-Z5-2740 FF, T-INT-MF-Z5-1290 FF, T-INT-MF-Z5-1010 FF, T-INT-MF-Z5-1130 FF, T-INT-MF-Z5-1270 FF, T-INT-MF-Z5-2780 FF, T-INT-MF-Z5-1340 FF, T-INT-MF-Z5-1050 FF, T-INT-MF-Z5-2770 FF, T-INT-MF-Z5-1310 FF, T-INT-MF-Z5-2900 FF, T-INT-MF-Z5-1120 FF, T-INT-MF-Z5-2790 FF, T-INT-MF-Z5-1020 FF, T-INT-MF-Z5-1100 FF, T-INT-MF-Z5-1080 FF, T-INT-MF-Z5-1090 FF, T-INT-MF-Z5-1150 FF, T-INT-MF-Z5-2310 FF, T-INT-MF-Z5-1210 FF, T-INT-MF-Z5-2920 FF, T-INT-MF-Z5-2870 FF, T-INT-MF-Z5-2860 FF, T-INT-MF-Z5-1180 FF, T-INT-MF-Z5-1230 FF, T-INT-MF-Z5-1110 FF, T-INT-MF-Z5-1260 FF |  |
| 1 | **Prep & Rough-In's** |  | 2026-03-09 → 2026-04-02 (+24d) |  |  |  |  |  |
| T-INT-MF-Z5-1290 | Cement Board Install |  | 2026-01-23 A |  | 0% → 100% | 8d → none |  |  |
| T-INT-MF-Z5-1340 | Sprinkler Ceiling | 2026-01-19 A | 2026-01-23 → 2026-01-30 A (+7d) |  | 0% → 100% | 2d → none |  |  |
| T-INT-MF-Z5-1130 | Wall Cladding (Z Bars & J Trim) | 2026-01-26 A | 2026-01-30 → 2026-02-02 A (+3d) |  | 0% → 100% | 8d → none |  |  |
| T-INT-MF-Z5-1050 | Ceiling Painting | 2026-01-26 → 2026-02-02 A (+7d) | 2026-01-29 → 2026-02-05 A (+7d) |  | 0% → 100% | 2d → none |  |  |
| T-INT-MF-Z5-1270 | Wall Spray Foam | 2026-02-02 → 2026-02-03 A (+1d) | 2026-02-06 → 2026-02-10 A (+4d) | 5d → 4d | 0% → 100% | 33d → none |  |  |
| T-INT-MF-Z5-9020 | Ceiling Clean | 2026-01-30 → 2026-02-05 A (+6d) | 2026-02-02 → 2026-02-06 A (+4d) |  | 0% → 100% | 2d → none |  |  |
| T-INT-MF-Z5-1310 | Leisure Pool- Dismantle Dancefloor Scaffolding | 2026-02-03 → 2026-02-06 A (+3d) | 2026-02-09 → 2026-02-12 A (+3d) |  | 0% → 100% | 2d → none |  |  |
| T-INT-MF-Z5-2790 | Wall Cladding | 2026-02-20 → 2026-02-10 A (-10d) | 2026-03-05 → 2026-02-18 A (-15d) |  | 0% → 100% | 25d → none | T-INT-MF-Z5-1270, T-INT-MF-Z5-2780, T-INT-MF-Z5-2770 → T-INT-MF-Z5-1270, X-T-INT-MF-Z5-2790 |  |
| T-INT-MF-Z5-1120 | High Performance Wall Coating- East | 2026-02-20 → 2026-02-15 A (-5d) | 2026-03-04 → 2026-02-23 A (-9d) |  | 0% → 100% | 8d → none | T-INT-MF-Z5-2770 → T-INT-MF-Z5-2780 |  |
| T-INT-MF-Z5-2780 | High Performance Wall Coating- North | 2026-02-02 → 2026-02-16 A (+14d) | 2026-02-06 → 2026-02-20 A (+14d) | 5d → 7d | 0% → 100% | 8d → none | T-INT-MF-Z5-1130 → T-INT-MF-Z5-1130, T-INT-MF-Z5-1270 |  |

| ID | Task | Start | Finish | Duration | Complete | Total float | Predecessors | Other |
| --- | --- | --- | --- | --- | --- | --- | --- | --- |
| T-INT-MF-Z5-2900 | Pool Slab Remediation | 2026-02-10 → 2026-02-21 A (+11d) | 2026-02-12 → 2026-02-25 A (+13d) | 3d → 2d | 0% → 100% | 2d → none | T-INT-MF-Z5-1310 → T-INT-MF-Z5-1310, T-INT-MF-Z5-2780 FS-1d |  |
| T-INT-MF-Z5-1020 | Ceiling Mechanical (Includes Perimeter HVAC) | 2026-02-09 → 2026-02-23 A (+14d) | 2026-03-09 → 2026-04-02 A (+24d) |  | 0% → 100% | 15d → none |  |  |
| T-INT-MF-Z5-2770 | High Performance Wall Coating- West | 2026-02-09 → 2026-03-26 A (+45d) | 2026-02-19 → 2026-04-02 A (+42d) | 8d → 2d | 0% → 100% | 8d → none | T-INT-MF-Z5-2780 → T-INT-MF-Z5-1120, T-INT-MF-Z5-1180, T-INT-MF-Z5-1160, T-INT-MF-Z5-2830, T-INT-MF-Z5-1160 FF |  |
| 2 | **Fixtures** | 2026-02-27 → 2026-03-09 (+10d) | 2026-03-25 → 2026-05-25 (+61d) |  |  |  |  |  |
| T-INT-MF-Z5-1100 | Waterslide Stair and Railing Steel | 2026-02-27 → 2026-03-09 A (+10d) | 2026-03-05 → 2026-03-18 A (+13d) |  | 0% → 100% | 25d → none |  |  |
| T-INT-MF-Z5-1080 | Electrical Wiring Pulling & Fixtures | 2026-03-05 → 2026-05-04 (+60d) | 2026-03-25 → 2026-05-25 (+61d) |  |  | 47d → 30d | T-INT-MF-Z5-1120 → T-INT-MF-Z5-1120, T-INT-MF-Z1-ER-1180 |  |
| 3 | **Tiling** | 2026-01-19 → 2026-02-02 (+14d) | 2026-05-04 → 2026-05-13 (+9d) |  |  |  |  |  |
| T-INT-MF-Z5-1150 | Tiling - Family Hot Tub (Pool C) | 2026-02-06 → 2026-02-02 A (-4d) | 2026-02-27 → 2026-04-01 A (+33d) |  | 0% → 100% | 62d → none | T-INT-MF-Z5-1090, IPP-QAQC-190 SS+8d, T-INT-MF-Z5-2740 → IPP-QAQC-190 SS+8d, T-INT-MF-Z5-2740, X-T-INT-MF-Z5-1170 FF+15d |  |
| T-INT-MF-Z5-1090 | Tiling - North Natatorium Topping | 2026-01-19 → 2026-02-03 A (+15d) | 2026-02-05 → 2026-03-06 A (+29d) |  | 0% → 100% | 6d → none |  |  |
| T-INT-MF-Z5-2310 | Tiling - Leisure Pool (Pool B) | 2026-02-13 → 2026-04-06 (+52d) | 2026-03-27 → 2026-05-05 (+39d) |  |  | 2d → 3d | T-INT-MF-Z5-2360, IPP-QAQC-190 SS+10d, C-FDN-NN-S6/S2A-1080, C-SOG-S1C/D-1060, C-FDN-A14-1090, C-FDN-A15-1040, C-FDN-PH1-1010, C-FDN-PH3-1000, C-FDN-PH3-1010, MIL-C-670, T-INT-MF-Z5-1090, T-INT-MF-Z5-1310, T-INT-MF-Z5-2900, T-INT-MF-Z5-1040 → IPP-QAQC-190 SS+10d, C-FDN-NN-S6/S2A-1080, C-SOG-S1C/D-1060, C-FDN-A14-1090, C-FDN-A15-1040, C-FDN-PH1-1010, C-FDN-PH3-1000, C-FDN-PH3-1010, MIL-C-670, T-INT-MF-Z5-1090 FS-2d, T-INT-MF-Z5-1310, T-INT-MF-Z5-2900, T-INT-MF-Z5-1040, T-INT-MF-Z5-2315 |  |
| T-INT-MF-Z5-1210 | Tiling - North Floor | 2026-03-30 → 2026-04-23 (+24d) | 2026-04-20 → 2026-05-13 (+23d) |  |  | 9d → 2d | T-INT-MF-Z5-1100, T-INT-MF-Z5-1090, IPP-QAQC-190, T-INT-MF-Z5-2740, T-INT-MF-Z5-2310, T-INT-MF-Z5-2790 → T-INT-MF-Z5-1100, T-INT-MF-Z5-1090 FF, IPP-QAQC-190 FF, T-INT-MF-Z5-2740, T-INT-MF-Z5-2790, T-INT-MF-Z3-1150 |  |
| T-INT-MF-Z5-2920 | Tiling - North Wall | 2026-04-21 → 2026-04-30 (+9d) | 2026-05-04 → 2026-05-13 (+9d) |  |  | 14d → 17d | T-INT-MF-Z5-2390 SS+15d, T-INT-MF-Z5-1210 → T-INT-MF-Z5-2390 SS, T-INT-MF-Z5-1210 FF, T-INT-MF-Z5-2780, T-INT-MF-Z5-1100 |  |
| T-INT-MF-Z5-2940 | Tile Cleaning | 2026-04-21 → 2026-04-30 (+9d) | 2026-04-23 → 2026-05-04 (+11d) |  |  | 24d → 28d |  |  |
| 6 | **Curing** | 2026-02-28 → 2026-04-06 (+37d) | 2026-04-03 → 2026-05-12 (+39d) |  |  |  |  |  |
| T-INT-MF-Z5-2870 | Curing-Family Hot Tub | 2026-02-28 → 2026-04-06 (+37d) | 2026-03-06 → 2026-04-12 (+37d) |  |  | 160d → 123d |  |  |
| T-INT-MF-Z5-2860 | Curing- Leisure Pool | 2026-03-28 → 2026-05-06 (+39d) | 2026-04-03 → 2026-05-12 (+39d) |  |  | 55d → 33d |  |  |
| 4 | **Finishing** | 2026-03-05 → 2026-02-25 (-8d) | 2026-03-27 → 2026-06-16 (+81d) |  |  |  |  |  |
| T-INT-MF-Z5-1180 | Interior Glazing works Second Floor Veiw | 2026-03-05 → 2026-02-25 A (-8d) | 2026-03-12 → 2026-03-06 A (-6d) |  | 0% → 100% | 80d → none | P-PRO-183, T-INT-MF-Z5-1120 → P-PRO-183, T-INT-MF-Z5-1120, T-INT-SF-2080 | was named Interior Glazing works (Viewing Area, Change Rooms) |
| T-INT-MF-Z5-1110 | Pool Fixtures- Water Features and Deck Goods. | 2026-03-20 → 2026-05-06 (+47d) | 2026-03-27 → 2026-05-13 (+47d) |  |  | 69d → 50d | P-PRO-173, T-INT-MF-Z5-1040 FF, T-INT-MF-Z5-1090 FF, IPP-QAQC-190 FF, T-INT-MF-Z5-2740 FF, T-INT-MF-Z5-2310 FF → P-PRO-173, T-INT-MF-Z5-1040 FF, T-INT-MF-Z5-1090 FF, IPP-QAQC-190 FF, T-INT-MF-Z5-2740 FF, T-INT-MF-Z5-2310 FF, T-INT-MF-Z5-2310 |  |
| T-INT-MF-Z5-1230 | Waterslide and Platform Installation | 2026-03-06 → 2026-05-14 (+69d) | 2026-03-20 → 2026-05-29 (+70d) |  |  | 74d → 28d | P-PRO-152, T-INT-MF-Z5-1100 → P-PRO-152, T-INT-MF-Z5-1100, T-INT-MF-Z5-2920 |  |
| 5 | **Deficiency** | none → 2026-02-23 | none → 2026-04-02 |  |  |  |  |  |
| T-INT-MF-Z5-9010 | Zone 05 Completion- SouthNatatorium | 2026-06-09 → 2026-07-06 (+27d) | 2026-06-09 → 2026-07-06 (+27d) |  |  | 45d → 27d | T-INT-MF-Z5-2670 FF, T-INT-MF-Z5-2240 FF, T-INT-MF-Z5-2700 FF, T-INT-MF-Z5-2710 FF, T-INT-MF-Z5-2220 FF, T-INT-MF-Z5-2460 FF, T-INT-MF-Z5-2360 FF, T-INT-MF-Z5-2850 FF, T-INT-MF-Z5-2720 FF, T-INT-MF-Z5-2630 FF, T-INT-MF-Z5-2730 FF, T-INT-MF-Z5-2820 FF, T-INT-MF-Z5-2260 FF, T-INT-MF-Z5-2450 FF, T-INT-MF-Z5-2690 FF, T-INT-MF-Z5-2910 FF, T-INT-MF-Z5-2370 FF, T-INT-MF-Z5-2230 FF, T-INT-MF-Z5-2800 FF, T-INT-MF-Z5-2810 FF, T-INT-MF-Z5-2830 FF, T-INT-MF-Z5-2280 FF, T-INT-MF-Z5-2330 FF, T-INT-MF-Z5-2410 FF, T-INT-MF-Z5-2390 FF, T-INT-MF-Z5-2400 FF, T-INT-MF-Z5-2180 FF, T-INT-MF-Z5-2930 FF, T-INT-MF-Z5-1200 FF, T-INT-MF-Z5-2430 FF, T-INT-MF-Z5-2880 FF, T-INT-MF-Z5-2890 FF, T-INT-MF-Z5-2380 FF, T-INT-MF-Z5-2210 FF, T-INT-MF-Z5-2010 FF, T-INT-MF-Z5-2020 FF, T-INT-MF-Z5-2090 FF, T-INT-MF-Z5-2030 FF, T-INT-MF-Z5-2040 FF, T-INT-MF-Z5-2050 FF, T-INT-MF-Z5-2070 FF, T-INT-MF-Z5-2080 FF, T-INT-MF-Z5-2100 FF, Mechanical Rough In FF, T-INT-MF-Z5-2120 FF, T-INT-MF-Z5-2130 FF, T-INT-MF-Z5-2170 FF, T-INT-MF-Z5-2150 FF, T-INT-MF-Z5-2160 FF → T-INT-MF-Z5-2670 FF, T-INT-MF-Z5-2240 FF, T-INT-MF-Z5-2700 FF, T-INT-MF-Z5-2710 FF, T-INT-MF-Z5-2220 FF, T-INT-MF-Z5-2460 FF, T-INT-MF-Z5-2360 FF, T-INT-MF-Z5-2850 FF, T-INT-MF-Z5-2720 FF, T-INT-MF-Z5-2630 FF, T-INT-MF-Z5-2730 FF, T-INT-MF-Z5-2820 FF, T-INT-MF-Z5-2260 FF, T-INT-MF-Z5-2450 FF, T-INT-MF-Z5-2690 FF, T-INT-MF-Z5-2910 FF, T-INT-MF-Z5-2370 FF, T-INT-MF-Z5-2230 FF, T-INT-MF-Z5-2800 FF, T-INT-MF-Z5-2810 FF, T-INT-MF-Z5-2830 FF, T-INT-MF-Z5-2280 FF, T-INT-MF-Z5-2330 FF, T-INT-MF-Z5-2410 FF, T-INT-MF-Z5-2390 FF, T-INT-MF-Z5-2400 FF, T-INT-MF-Z5-2180 FF, T-INT-MF-Z5-2930 FF, T-INT-MF-Z5-1200 FF, T-INT-MF-Z5-2430 FF, T-INT-MF-Z5-2880 FF, T-INT-MF-Z5-2890 FF, T-INT-MF-Z5-2380 FF, T-INT-MF-Z5-2210 FF, T-INT-MF-Z5-2010 FF, T-INT-MF-Z5-2020 FF, T-INT-MF-Z5-2090 FF, T-INT-MF-Z5-2030 FF, T-INT-MF-Z5-2040 FF, T-INT-MF-Z5-2050 FF, T-INT-MF-Z5-2070 FF, T-INT-MF-Z5-2080 FF, T-INT-MF-Z5-2100 FF, T-INT-MF-Z5-2120 FF, T-INT-MF-Z5-2130 FF, T-INT-MF-Z5-2170 FF, T-INT-MF-Z5-2150 FF, T-INT-MF-Z5-2160 FF, T-INT-MF-Z5-2270 FF |  |
| 1 | **Prep & Rough-In's** |  | 2026-04-21 → 2026-06-01 (+41d) |  |  |  |  |  |
| T-INT-MF-Z5-2850 | Leak Test Pool D |  | 2026-02-06 → 2026-04-21 (+74d) |  |  | 11d → 3d | T-INT-MF-Z5-2740 → T-INT-MF-Z5-2740, X-T-INT-MF-Z5-1010 FF, X-T-INT-MF-Z5-1060 FF |  |
| T-INT-MF-Z5-2240 | Ceiling Electrical |  | 2026-01-23 A |  | 0% → 100% | 31d → none |  |  |
| T-INT-MF-Z5-2360 | Leak Test Pool A |  | 2026-01-30 → 2026-04-23 (+83d) |  |  | 11d → 0d | C-FDN-A7-1130, C-FDN-A8-1080, X-LP-1020, C-FDN-A15-1030, C-SOG-S1C/D-1060, C-FDN-SN-LPT-1040, C-FDN-A15-1040, C-FDN-NN-S6/S2A-1080, C-FDN-A14-1090, C-FDN-A7-SN-1390 SS+10d, T-INT-MF-Z5-2670, C-FDN-PH1-1010, C-FDN-PH3-1000, C-FDN-PH3-1010, MIL-C-670, T-INT-MF-Z5-2700 → C-FDN-A7-1130, C-FDN-A8-1080, X-LP-1020, C-FDN-A15-1030, C-SOG-S1C/D-1060, C-FDN-SN-LPT-1040, C-FDN-A15-1040, C-FDN-NN-S6/S2A-1080, C-FDN-A14-1090, C-FDN-A7-SN-1390 SS+10d, T-INT-MF-Z5-2670, C-FDN-PH1-1010, C-FDN-PH3-1000, C-FDN-PH3-1010, MIL-C-670, T-INT-MF-Z5-2700, X-T-INT-MF-Z5-1000 FF-1d, X-T-INT-MF-Z5-1050 FF |  |
| T-INT-MF-Z5-2220 | Acoustic Spray |  | 2026-01-20 A |  | 0% → 100% | 31d → none |  |  |
| T-INT-MF-Z5-2730 | Sprinkler Ceiling | 2026-01-26 A | 2026-01-30 A |  | 0% → 100% | 28d → none |  |  |
| T-INT-MF-Z5-2460 | Wall & Bulkhead Framing | 2026-01-19 → 2026-01-30 A (+11d) | 2026-01-23 → 2026-03-18 A (+54d) |  | 0% → 100% | 19d → none | C-FDN-NN-S6/S2A-1080, C-SOG-S1C/D-1060, C-FDN-A14-1090, C-FDN-A15-1040, C-FDN-PH1-1010, C-FDN-PH3-1000, C-FDN-PH3-1010, MIL-C-670, T-INT-MF-Z5-1280, T-INT-MF-Z5-2710, C-ENV-SID-CL-S-1060 → C-FDN-NN-S6/S2A-1080, C-SOG-S1C/D-1060, C-FDN-A14-1090, C-FDN-A15-1040, C-FDN-PH1-1010, C-FDN-PH3-1000, C-FDN-PH3-1010, MIL-C-670, T-INT-MF-Z5-1280, T-INT-MF-Z5-2710, C-ENV-SID-CL-S-1060, X-T-INT-MF-Z5-1020 FF |  |
| T-INT-MF-Z5-2260 | Ceiling Painting | 2026-02-02 A | 2026-02-06 → 2026-02-18 A (+12d) |  | 0% → 100% | 28d → none |  |  |
| T-INT-MF-Z5-2630 | Cement Board Install | 2026-02-03 A | 2026-02-09 → 2026-03-29 A (+48d) |  | 0% → 100% | 24d → none | T-INT-MF-Z5-2710, T-INT-MF-Z5-2720 SS+6d, T-INT-MF-Z5-1290, IPP-QAQC-269 → T-INT-MF-Z5-2710, T-INT-MF-Z5-1290 FF, IPP-QAQC-269, T-INT-MF-Z5-2820 FF, T-INT-MF-Z5-2460, T-INT-MF-Z5-2720 FF |  |
| T-INT-MF-Z5-9030 | Ceiling Clean | 2026-02-09 A | 2026-02-10 A |  | 0% → 100% | 28d → none |  |  |
| T-INT-MF-Z5-2370 | High Performance Wall Coating- East | 2026-03-05 → 2026-02-13 A (-20d) | 2026-03-17 → 2026-02-23 A (-22d) |  | 0% → 100% | 8d → none | T-INT-MF-Z5-2460 FF, T-INT-MF-Z5-2630, T-INT-MF-Z5-1120 → T-INT-MF-Z5-2460 SS, T-INT-MF-Z5-2630 SS, T-INT-MF-Z5-1120 SS-3d |  |
| T-INT-MF-Z5-2690 | Lap Pool- Dismantle Dancefloor Scaffolding | 2026-02-11 → 2026-03-05 A (+22d) | 2026-02-13 → 2026-03-29 A (+44d) |  | 0% → 100% | 28d → none | T-INT-MF-Z5-2670, T-INT-MF-Z5-2360, T-INT-MF-Z5-2260, T-INT-MF-Z5-9030 → T-INT-MF-Z5-2670, T-INT-MF-Z5-2260, T-INT-MF-Z5-9030, X-T-INT-MF-Z5-1000 SS |  |
| T-INT-MF-Z5-2230 | Ceiling Mechanical (Includes Perimeter HVAC) | 2026-03-10 → 2026-03-09 A (-1d) | 2026-03-25 → 2026-04-15 (+21d) |  | 0% → 100% | 15d → 11d | C-FDN-NN-S6/S2A-1080, C-SOG-S1C/D-1060, C-FDN-A14-1090, C-FDN-A15-1040, C-FDN-PH1-1010, C-FDN-PH3-1000, C-FDN-PH3-1010, MIL-C-670, T-INT-MF-Z5-1020, T-INT-MF-Z5-2820 → C-FDN-NN-S6/S2A-1080, C-SOG-S1C/D-1060, C-FDN-A14-1090, C-FDN-A15-1040, C-FDN-PH1-1010, C-FDN-PH3-1000, C-FDN-PH3-1010, MIL-C-670, T-INT-MF-Z5-1020 FF, T-INT-MF-Z5-2820 FF |  |
| T-INT-MF-Z5-2830 | Wall Cladding | 2026-04-08 → 2026-03-09 A (-30d) | 2026-04-21 → 2026-03-27 A (-25d) |  | 0% → 100% | 8d → none | T-INT-MF-Z5-2450, T-INT-MF-Z5-2810, P-PRO-193 → T-INT-MF-Z5-2450 FF, P-PRO-193, T-INT-MF-Z5-2820 FF |  |
| T-INT-MF-Z5-2820 | Wall Cladding (Z Bars & J Trim)(should connect with west j trim) | 2026-02-10 → 2026-03-13 A (+31d) | 2026-02-17 → 2026-03-20 A (+31d) | 5d → 2d | 0% → 100% | 29d → none | T-INT-MF-Z5-2630, T-INT-MF-Z5-1130 → T-INT-MF-Z5-1130 | was named Wall Cladding (Z Bars & J Trim) |
| T-INT-MF-Z5-2450 | Wall Spray Foam | 2026-02-18 → 2026-03-18 A (+28d) | 2026-02-20 → 2026-03-24 A (+32d) |  | 0% → 100% | 39d → none | T-INT-MF-Z5-2820 → T-INT-MF-Z5-2820 FF |  |
| T-INT-MF-Z5-2720 | Electrical Wall Rough-Ins | 2026-01-26 → 2026-03-23 A (+56d) | 2026-02-06 → 2026-03-27 A (+49d) | 10d → 2d | 0% → 100% | 24d → none | T-INT-MF-Z5-2460, C-ENV-SID-CL-AC-1110, T-INT-MF-Z5-1320 → T-INT-MF-Z5-2460, C-ENV-SID-CL-AC-1110, T-INT-MF-Z5-1320 FF |  |
| T-INT-MF-Z5-2810 | High Performance Wall Coating- West | 2026-03-26 → 2026-03-30 A (+4d) |  | 8d → 3d |  | 8d → 24d | T-INT-MF-Z5-2800 → T-INT-MF-Z5-2370 |  |
| T-INT-MF-Z5-2910 | Pool Slab Remediation | 2026-02-17 → 2026-03-30 A (+41d) | 2026-02-19 → 2026-04-07 (+47d) | 3d → 6d |  | 28d → 12d |  |  |
| T-INT-MF-Z5-2800 | High Performance Wall Coating- South | 2026-03-18 → 2026-04-08 (+21d) | 2026-03-25 → 2026-04-13 (+19d) | 6d → 4d |  | 8d → 24d | T-INT-MF-Z5-2370 → T-INT-MF-Z5-2370, T-INT-MF-Z5-2810 |  |
| 2 | **Fixtures** | 2026-03-26 → 2026-04-14 (+19d) | 2026-04-10 → 2026-04-28 (+18d) |  |  |  |  |  |
| T-INT-MF-Z5-2280 | Electrical Wiring Pulling & Fixtures | 2026-03-26 → 2026-04-14 (+19d) | 2026-04-10 → 2026-04-28 (+18d) |  |  | 26d → 24d |  |  |
| 3 | **Tiling** | 2026-02-06 → 2026-02-10 (+4d) | 2026-06-09 → 2026-07-06 (+27d) |  |  |  |  |  |
| T-INT-MF-Z5-2330 | Tiling - South Natatorium Topping | 2026-02-06 → 2026-02-10 A (+4d) | 2026-02-20 → 2026-03-23 A (+31d) |  | 0% → 100% | 49d → none | T-INT-MF-Z5-1090 → T-INT-MF-Z5-1090 FF |  |
| T-INT-MF-Z5-2390 | Tiling - Lap Pool (Pool A)- After Leisure Pool | 2026-03-30 → 2026-04-24 (+25d) | 2026-05-19 → 2026-06-12 (+24d) |  |  | 2d → 0d | C-FDN-SN-LPT-1040, T-INT-MF-Z5-2690, T-INT-MF-Z5-2310, T-INT-MF-Z5-2360, IPP-QAQC-190 FF, T-INT-MF-Z5-2910 → C-FDN-SN-LPT-1040, T-INT-MF-Z5-2690, T-INT-MF-Z5-2310 SS+15d, T-INT-MF-Z5-2360, IPP-QAQC-190 FF, T-INT-MF-Z5-2910 |  |
| T-INT-MF-Z5-1200 | Tiling - Sauna | 2026-05-13 → 2026-05-04 (-9d) | 2026-06-03 → 2026-05-25 (-9d) |  |  | 22d → 14d | T-INT-MF-Z5-2180 SS+5d, T-INT-MF-Z5-2130, T-INT-MF-Z5-2170 → T-INT-MF-Z5-2130, T-INT-MF-Z5-2410 SS-8d |  |
| T-INT-MF-Z5-2410 | Tiling - South Floor | 2026-04-22 → 2026-05-14 (+22d) | 2026-05-12 → 2026-06-04 (+23d) |  |  | 8d → 2d |  |  |
| T-INT-MF-Z5-2400 | Tiling - Adult Hot Tub (Pool D)- After Leisure Pool | 2026-04-28 → 2026-05-25 (+27d) | 2026-05-19 → 2026-06-12 (+24d) |  |  | 7d → 0d | C-FDN-A7-SN-1390, T-INT-MF-Z5-2390 FF → C-FDN-A7-SN-1390, T-INT-MF-Z5-2390 FF, T-INT-MF-Z5-2850 |  |
| T-INT-MF-Z5-2180 | Tiling - Steam | 2026-05-06 → 2026-05-26 (+20d) | 2026-05-27 → 2026-06-15 (+19d) |  |  | 18d → 14d | T-INT-MF-Z5-2410 SS+10d, T-INT-MF-Z5-2050 → T-INT-MF-Z5-2410 SS+2d, T-INT-MF-Z5-2050, T-INT-MF-Z5-1200 |  |
| T-INT-MF-Z5-2440 | Tile Cleaning | 2026-05-13 → 2026-06-05 (+23d) | 2026-05-15 → 2026-06-09 (+25d) |  |  | 8d → 2d |  |  |
| T-INT-MF-Z5-2930 | Tiling - South Wall | 2026-05-13 → 2026-06-05 (+23d) | 2026-05-27 → 2026-06-18 (+22d) |  |  | 8d → 2d |  |  |
| T-INT-MF-Z5-2430 | Tiling - Outdoor Adult Hot Tub | 2026-05-20 → 2026-06-15 (+26d) | 2026-06-09 → 2026-07-06 (+27d) |  |  | 22d → 15d |  |  |
| 8 | **Curing** | 2026-05-20 → 2026-06-13 (+24d) | 2026-05-26 → 2026-06-19 (+24d) |  |  |  |  |  |
| T-INT-MF-Z5-2880 | Curing- Lap Pool | 2026-05-20 → 2026-06-13 (+24d) | 2026-05-26 → 2026-06-19 (+24d) |  |  | 2d → 0d |  |  |
| T-INT-MF-Z5-2890 | Curing- Adult Hot Tub | 2026-05-20 → 2026-06-13 (+24d) | 2026-05-26 → 2026-06-19 (+24d) |  |  | 79d → 55d |  |  |
| 4 | **Finishing** | 2026-02-10 → 2026-06-02 (+112d) | 2026-03-27 → 2026-07-06 (+101d) |  |  |  |  |  |
| T-INT-MF-Z5-2210 | Pool Fixtures- Water Features and Deck Goods. | 2026-03-12 → 2026-06-02 (+82d) | 2026-03-27 → 2026-06-17 (+82d) |  |  | 68d → 25d | P-PRO-173, T-INT-MF-Z5-2310 FF → P-PRO-173, T-INT-MF-Z5-2310 FF, T-INT-MF-Z5-2390 FF, T-INT-MF-Z5-1301 |  |
| T-INT-MF-Z5-2380 | Interior Glazing works (Steam, Sauna South Vestibule) | 2026-02-10 → 2026-06-29 (+139d) | 2026-02-17 → 2026-07-06 (+139d) |  |  | 97d → 14d | P-PRO-183, T-INT-MF-Z5-2630 → P-PRO-183, T-INT-MF-Z5-2630, T-INT-MF-Z5-2160, T-INT-MF-Z5-2080 | constraint start on or after 2026-01-08 → none |
| 6 | **Steam Room** |  | 2026-06-01 → 2026-06-18 (+17d) |  |  |  |  |  |
| T-INT-MF-Z5-2020 | Framing | 2026-01-26 → 2026-03-16 A (+49d) | 2026-01-28 → 2026-04-30 (+92d) |  |  | 19d → 16d | T-INT-MF-Z5-2460, T-INT-MF-Z5-2010 → T-INT-MF-Z5-2460, T-INT-MF-Z5-2010, T-INT-MF-Z5-2100 |  |
| T-INT-MF-Z5-2090 | Concrete Benches | 2026-01-29 → 2026-05-01 (+92d) | 2026-02-04 → 2026-05-07 (+92d) |  |  | 49d → 16d |  |  |
| T-INT-MF-Z5-2030 | Mechanical Rough In | 2026-02-05 → 2026-05-08 (+92d) | 2026-02-06 → 2026-05-11 (+94d) |  |  | 71d → 16d |  |  |
| T-INT-MF-Z5-2040 | Electrical Rough In | 2026-02-09 → 2026-05-12 (+92d) | 2026-02-10 → 2026-05-13 (+92d) |  |  | 71d → 16d | T-INT-MF-Z5-2030 → T-INT-MF-Z5-2030, T-INT-MF-Z5-2120 FF |  |
| T-INT-MF-Z5-2050 | Drywall Mud Tape & Sand | 2026-02-11 → 2026-05-14 (+92d) | 2026-02-18 → 2026-05-21 (+92d) |  |  | 71d → 16d |  |  |
| T-INT-MF-Z5-2070 | Mechanical Fixtures | 2026-05-28 → 2026-06-16 (+19d) | 2026-06-01 → 2026-06-18 (+17d) |  |  | 18d → 14d |  |  |
| T-INT-MF-Z5-2080 | Electrical Fixtures | 2026-05-28 → 2026-06-16 (+19d) | 2026-06-01 → 2026-06-18 (+17d) |  |  | 24d → 20d |  |  |
| 7 | **Sauna Room** | 2026-02-02 → 2026-02-09 (+7d) | 2026-06-09 → 2026-06-26 (+17d) |  |  |  |  |  |
| T-INT-MF-Z5-2100 | Framing | 2026-02-02 → 2026-02-09 A (+7d) | 2026-02-06 → 2026-02-13 A (+7d) |  | 0% → 100% | 17d → none | C-FDN-SN-S1E/S1F/S7/S2B-1100, T-INT-MF-Z4-1000, T-INT-MF-Z5-2020 → C-FDN-SN-S1E/S1F/S7/S2B-1100, T-INT-MF-Z4-1000 SS |  |

| ID | Task | Start | Finish | Duration | Complete | Total float | Predecessors | Other |
| --- | --- | --- | --- | --- | --- | --- | --- | --- |
| T-INT-MF-Z5-2120 | Electrical Rough In | 2026-02-11 → 2026-02-18 A (+7d) | 2026-02-18 → 2026-02-24 A (+6d) |  | 0% → 100% | 75d → none | T-INT-MF-Z5-2040 → T-INT-MF-Z5-2100 |  |
| T-INT-MF-Z5-2130 | Drywall Mud Tape & Sand | 2026-02-17 → 2026-04-07 (+49d) | 2026-02-23 → 2026-04-13 (+49d) |  |  | 72d → 28d | T-INT-MF-Z5-2120 FF, Mechanical Rough In → T-INT-MF-Z5-2120 FF, T-INT-MF-Z5-2140 |  |
| T-INT-MF-Z5-2170 | Sauna Cedar Walls and Ceiling Install | 2026-02-24 → 2026-06-02 (+98d) | 2026-03-02 → 2026-06-08 (+98d) |  |  | 72d → 22d | P-PRO-263, T-INT-MF-Z5-2130 → P-PRO-263, T-INT-MF-Z5-2130, T-INT-MF-Z5-1200 |  |
| T-INT-MF-Z5-2150 | Mechanical Fixtures | 2026-06-02 → 2026-06-19 (+17d) | 2026-06-04 → 2026-06-23 (+19d) |  |  | 18d → 14d |  |  |
| T-INT-MF-Z5-2160 | Electrical Fixtures | 2026-06-05 → 2026-06-24 (+19d) | 2026-06-09 → 2026-06-26 (+17d) |  |  | 18d → 14d |  |  |
| T-INT-MF-Z6-1040 | Place of FCU | 2026-01-20 A | 2026-01-22 A |  | 0% → 100% | 16d → none | P-PRO-547, Radiator Delivery FF → P-PRO-547 | constraint start on or after 2026-01-20 → none |
| T-INT-MF-Z6-1000 | Steel Stud Framing - Full Height | 2026-02-03 → 2026-02-09 A (+6d) | 2026-02-06 → 2026-04-10 (+63d) |  |  | 16d → 13d | T-INT-MF-Z5-2460, T-INT-MF-Z5-2100 SS, T-INT-MF-Z6-1220 → T-INT-MF-Z5-2460 FF |  |
| T-INT-MF-Z6-1220 | Ductwork Install | 2026-01-23 → 2026-02-09 A (+17d) | 2026-02-02 → 2026-04-01 A (+58d) |  | 0% → 100% | 16d → none | T-INT-MF-Z6-1040 → T-INT-MF-Z6-1040, X-T-INT-MF-Z6-1000 FF, T-INT-MF-Z6-1080 FF |  |
| T-INT-MF-Z6-1020 | Door Frames | 2026-02-09 → 2026-03-10 A (+29d) | 2026-02-13 → 2026-03-16 A (+31d) |  | 0% → 100% | 27d → none | T-INT-MF-Z6-1000 → T-INT-MF-Z6-1000 SS |  |
| T-INT-MF-Z6-1080 | Main Entrance Exterior Glazing | 2026-04-06 → 2026-03-10 A (-27d) | 2026-04-15 → 2026-03-13 A (-33d) | 8d → 7d | 0% → 100% | 16d → none | T-INT-MF-Z6-1070 → T-INT-MF-Z6-1000 SS | was named Main Entrance Exterior and Interior Aluminum Storefront and Glazing |
| T-INT-MF-Z6-1030 | Mechanical Rough In's | 2026-02-09 → 2026-03-23 A (+42d) | 2026-03-02 → 2026-04-02 A (+31d) | 15d → 10d | 0% → 100% | 16d → none | T-INT-MF-Z6-1000 → T-INT-MF-Z6-1000 SS |  |
| T-INT-MF-Z6-1010 | Electrical Rough In's | 2026-02-09 → 2026-03-30 A (+49d) | 2026-03-02 → 2026-04-02 A (+31d) | 15d → 8d | 0% → 100% | 16d → none | T-INT-MF-Z6-1000 → T-INT-MF-Z6-1000 SS |  |
| T-INT-MF-Z6-1050 | Drywall Install | 2026-03-04 → 2026-04-06 (+33d) | 2026-03-10 → 2026-04-10 (+31d) |  |  | 16d → 13d | T-INT-MF-Z6-1030, T-INT-MF-Z6-1010, T-INT-MF-Z6-1020, MIL-C-440, MIL-C-490, MIL-C-710, Zone #6 Pre-board Inspection → T-INT-MF-Z6-1020, MIL-C-440, MIL-C-490, MIL-C-710, T-INT-MF-Z6-1010 |  |
| T-INT-MF-Z6-1060 | Mud, Tape and Sand | 2026-03-11 → 2026-04-13 (+33d) | 2026-03-19 → 2026-04-21 (+33d) |  |  | 16d → 13d |  |  |
| T-INT-MF-Z6-1070 | Prime and Paint | 2026-03-20 → 2026-04-22 (+33d) | 2026-04-02 → 2026-05-05 (+33d) |  |  | 16d → 13d |  |  |
| T-INT-MF-Z6-1090 | Ceiling T-Bar and Permieter/ Devices Tiles | 2026-04-06 → 2026-05-06 (+30d) | 2026-04-17 → 2026-05-20 (+33d) |  |  | 16d → 13d |  |  |
| T-INT-MF-Z6-1110 | Millworks | 2026-04-21 → 2026-05-06 (+15d) | 2026-05-04 → 2026-05-20 (+16d) |  |  | 6d → 13d | T-INT-MF-Z6-1070, T-INT-MF-Z3-1130 → T-INT-MF-Z6-1070, T-INT-MF-Z6-1210 SS |  |
| T-INT-MF-Z6-1210 | Interior Storefront (BL 2, 7) | 2026-04-16 → 2026-05-06 (+20d) | 2026-04-29 → 2026-05-20 (+21d) |  |  | 16d → 13d | T-INT-MF-Z6-1080 → T-INT-MF-Z6-1000 SS, T-INT-MF-Z6-1070 | was named Interior Storefront (BL 2, 7 |
| T-INT-MF-Z6-1120 | Flooring | 2026-05-05 → 2026-05-21 (+16d) | 2026-05-13 → 2026-05-29 (+16d) |  |  | 6d → 13d |  |  |
| T-INT-MF-Z6-1140 | Electrical Fixtures | 2026-04-20 → 2026-05-21 (+31d) | 2026-05-08 → 2026-06-10 (+33d) |  |  | 16d → 18d |  |  |
| T-INT-MF-Z6-1190 | Millwork Countertops | 2026-05-05 → 2026-05-21 (+16d) | 2026-05-05 → 2026-05-21 (+16d) |  |  | 12d → 19d |  |  |
| T-INT-MF-Z6-1130 | Mechanical Fixtures | 2026-05-14 → 2026-06-01 (+18d) | 2026-06-04 → 2026-06-12 (+8d) | 15d → 10d |  | 6d → 13d |  |  |
| T-INT-MF-Z6-1150 | Final Paint | 2026-06-05 → 2026-06-15 (+10d) | 2026-06-11 → 2026-06-19 (+8d) |  |  | 11d → 18d |  |  |
| T-INT-MF-Z6-1160 | Install of Remaining Ceiling Tiles | 2026-06-12 → 2026-06-22 (+10d) | 2026-06-18 → 2026-06-26 (+8d) |  |  | 12d → 19d |  |  |
| T-INT-MF-Z6-1200 | Glass Doors, Hardware and Operators (Main Entrance, Viewing Area, Zone 2, South Vestibule) | 2026-06-12 → 2026-06-22 (+10d) | 2026-06-19 → 2026-06-29 (+10d) |  |  | 11d → 18d | T-INT-MF-Z6-1150 → T-INT-MF-Z6-1150, T-INT-MF-Z6-1230, T-INT-MF-Z6-1240, T-INT-MF-Z6-1170 |  |
| T-INT-MF-Z6-9000 | Zone 06 Completion | 2026-06-19 → 2026-06-29 (+10d) | 2026-06-19 → 2026-06-29 (+10d) |  |  | 37d → 31d | T-INT-MF-Z6-1220 FF, T-INT-MF-Z6-1000 FF, T-INT-MF-Z6-1020 FF, T-INT-MF-Z6-1030 FF, T-INT-MF-Z6-1010 FF, T-INT-MF-Z6-1050 FF, T-INT-MF-Z6-1060 FF, T-INT-MF-Z6-1070 FF, T-INT-MF-Z6-1080 FF, T-INT-MF-Z6-1090 FF, T-INT-MF-Z6-1110 FF, T-INT-MF-Z6-1040 FF, T-INT-MF-Z6-1120 FF, T-INT-MF-Z6-1210 FF, T-INT-MF-Z6-1140 FF, T-INT-MF-Z6-1130 FF, T-INT-MF-Z6-1190 FF, T-INT-MF-Z6-1150 FF, T-INT-MF-Z6-1160 FF, T-INT-MF-Z6-1200 FF, T-INT-MF-Z6-1100 FF → T-INT-MF-Z6-1220 FF, T-INT-MF-Z6-1000 FF, T-INT-MF-Z6-1020 FF, T-INT-MF-Z6-1030 FF, T-INT-MF-Z6-1010 FF, T-INT-MF-Z6-1050 FF, T-INT-MF-Z6-1060 FF, T-INT-MF-Z6-1070 FF, T-INT-MF-Z6-1080 FF, T-INT-MF-Z6-1090 FF, T-INT-MF-Z6-1110 FF, T-INT-MF-Z6-1040 FF, T-INT-MF-Z6-1120 FF, T-INT-MF-Z6-1210 FF, T-INT-MF-Z6-1140 FF, T-INT-MF-Z6-1130 FF, T-INT-MF-Z6-1190 FF, T-INT-MF-Z6-1150 FF, T-INT-MF-Z6-1160 FF, T-INT-MF-Z6-1200 FF, T-INT-MF-Z6-1100 FF, T-INT-MF-Z6-1170 FF, T-INT-MF-Z6-1250 FF |  |
| 3 | **SECOND FLOOR** |  | 2026-03-19 → 2026-05-15 (+57d) |  |  |  |  |  |
| T-INT-SF-2080 | Environmental Wall | 2026-01-26 → 2026-02-06 A (+11d) | 2026-01-30 → 2026-02-25 A (+26d) |  | 0% → 100% | 134d → none |  |  |
| T-INT-SF-9000 | Second Floor Interior Completion | 2026-03-19 → 2026-05-15 (+57d) | 2026-03-19 → 2026-05-15 (+57d) |  |  | 101d → 61d |  |  |
| 4 | **Electrical Works L2** |  | 2026-03-19 → 2026-04-24 (+36d) |  |  |  |  |  |
| T-INT-SF-ELEC-1030 | Install CDP for Roof | 2026-01-22 → 2026-01-26 A (+4d) | 2026-01-28 → 2026-01-30 A (+2d) |  | 0% → 100% | 99d → none |  |  |
| T-INT-SF-ELEC-1040 | House Panel Install | 2026-01-29 → 2026-02-02 A (+4d) | 2026-02-04 → 2026-02-06 A (+2d) |  | 0% → 100% | 99d → none |  |  |
| T-INT-SF-ELEC-1060 | Ceiling Rough In | 2026-03-13 → 2026-04-20 (+38d) | 2026-03-19 → 2026-04-24 (+36d) |  |  | 74d → 62d |  |  |
| 1 | **Mechanical Room L2 (AQ205)** |  | 2026-03-16 → 2026-05-15 (+60d) |  |  |  |  |  |
| T-INT-SF-MR-2030 | Mechanical Room Fitout Including Piping,Ducts Works (TBC) |  | 2026-03-12 → 2026-04-17 (+36d) |  |  | 41d → 7d |  |  |
| T-INT-SF-MR-2060 | Place of AC Indoor Unit | 2026-01-26 → 2026-02-04 A (+9d) | 2026-01-30 → 2026-02-25 A (+26d) |  | 0% → 100% | 39d → none |  | constraint start on or after 2026-01-26 → none |
| T-INT-SF-MR-2070 | Place of Unit Heater | 2026-02-02 → 2026-02-26 A (+24d) | 2026-02-06 → 2026-03-04 A (+26d) |  | 0% → 100% | 39d → none |  |  |
| T-INT-SF-MR-2100 | Mechanical Connections for Equipments | 2026-02-02 → 2026-04-13 (+70d) | 2026-03-02 → 2026-05-08 (+67d) |  |  | 39d → 7d | T-INT-SF-MR-2020, T-INT-SF-MR-2040, T-INT-SF-MR-2010, P-PRO-757, T-INT-SF-MR-2070 SS → T-INT-SF-MR-2020, T-INT-SF-MR-2040, T-INT-SF-MR-2010, P-PRO-757, T-INT-SF-MR-2070 SS, T-INT-SF-MR-2030 FS-5d |  |
| T-INT-SF-MR-2090 | Electrical Connections for Mechanical Equipments | 2026-02-17 → 2026-04-20 (+62d) | 2026-03-16 → 2026-05-15 (+60d) |  |  | 39d → 7d | T-INT-SF-MR-2020, T-INT-SF-MR-2040, T-INT-SF-MR-2100 FF+10d, T-INT-SF-MR-2010, P-PRO-757, T-INT-SF-MR-2070 SS → T-INT-SF-MR-2020, T-INT-SF-MR-2040, T-INT-SF-MR-2010, P-PRO-757, T-INT-SF-MR-2070 SS, T-INT-SF-MR-2030 |  |
| T-INT-SF-MR-2150 | Install Outside Air Duct | 2026-02-02 → 2026-04-20 (+77d) | 2026-02-06 → 2026-04-24 (+77d) |  |  | 64d → 22d | T-INT-SF-MR-2030 SS, P-PRO-607 → P-PRO-607, IPP-SAFE-204, T-INT-SF-MR-2030 |  |
| T-INT-SF-MR-2110 | Final Paint | 2026-03-03 → 2026-05-11 (+69d) | 2026-03-09 → 2026-05-15 (+67d) |  |  | 44d → 7d |  |  |
| T-INT-SF-MR-2120 | Room is Ready | 2026-03-16 → 2026-05-15 (+60d) | 2026-03-16 → 2026-05-15 (+60d) |  |  | 39d → 7d |  |  |
| 4 | **ELEVATOR** |  | 2026-04-08 → 2026-07-07 (+90d) |  |  |  |  |  |
| T-MEIT-EL-1010 | Shaft Devices Install | 2026-01-19 → 2026-02-19 A (+31d) | 2026-02-06 → 2026-03-05 A (+27d) |  | 0% → 100% | 74d → none |  |  |
| T-MEIT-EL-1040 | Site Readiness | 2026-02-06 → 2026-03-05 A (+27d) | 2026-02-06 → 2026-03-05 A (+27d) |  | 0% → 100% | 74d → none | T-MEIT-EL-1010 → T-MEIT-EL-1010 FF |  |
| T-MEIT-EL-1020 | Elevator Fabrication and Delivery | 2026-02-20 → 2026-05-20 (+89d) | 2026-02-20 → 2026-05-20 (+89d) |  |  | 66d → 18d |  |  |
| T-MEIT-EL-1050 | Elevator Installation | 2026-02-23 → 2026-05-22 (+88d) | 2026-03-20 → 2026-06-18 (+90d) |  |  | 66d → 17d |  |  |
| T-MEIT-EL-1060 | Shaft Cleandown | 2026-03-23 → 2026-06-19 (+88d) | 2026-03-27 → 2026-06-25 (+90d) |  |  | 66d → 17d |  |  |
| T-MEIT-EL-1070 | Elevator Pre-AEDARDSA Inspection Testing | 2026-03-30 → 2026-06-26 (+88d) | 2026-04-06 → 2026-07-03 (+88d) |  |  | 66d → 17d |  |  |
| T-MEIT-EL-1080 | Elevator Testing and Commissioning / AEDARDSA Inspection & Acceptance | 2026-04-07 → 2026-07-06 (+90d) | 2026-04-08 → 2026-07-07 (+90d) |  |  | 66d → 17d |  |  |
| 1 | **COMMISSIONING & STARTUP OF GLOBAL MEIT SYSTEMS** | 2026-03-11 → 2026-05-08 (+58d) | 2026-07-13 → 2026-07-30 (+17d) |  |  |  |  |  |
| 2 | **ELECTRICAL** | 2026-03-11 → 2026-05-08 (+58d) | 2026-06-23 → 2026-07-10 (+17d) |  |  |  |  |  |
| CX-2000 | CDP Energization | 2026-03-11 → 2026-05-08 (+58d) | 2026-03-11 → 2026-05-08 (+58d) |  |  | 57d → 40d | T-INT-MF-Z1-ER-1150 FF → T-INT-MF-Z1-ER-1150 FF, IPP-QAQC-349 |  |
| CX-2001 | Lighting Functional Testing | 2026-05-22 → 2026-06-24 (+33d) | 2026-05-28 → 2026-06-30 (+33d) |  |  | 8d → 9d | CX-2000, T-INT-BA-2080, T-INT-MF-Z6-1140, T-INT-MF-Z5-1080, T-INT-MF-Z4-1180, T-INT-MF-Z3-1170, T-INT-MF-Z2-1130, T-INT-MF-Z1-1090, T-INT-BA-2080 FF, T-INT-MF-Z5-2280 → CX-2000, T-INT-BA-2080, T-INT-MF-Z6-1140, T-INT-MF-Z5-1080, T-INT-MF-Z4-1180, T-INT-MF-Z3-1170, T-INT-MF-Z2-1130, T-INT-MF-Z1-1090, T-INT-BA-2080 FF, T-INT-MF-Z5-2280, T-INT-MF-Z1-ER-1180 |  |
| CX-2002 | Lighting Control Function Testing | 2026-05-29 → 2026-06-24 (+26d) | 2026-06-04 → 2026-06-30 (+26d) |  |  | 8d → 9d | CX-2001 → CX-2001 SS |  |
| CX-2003 | Fire Alarm Pre-checks | 2026-06-05 → 2026-07-02 (+27d) | 2026-06-11 → 2026-07-08 (+27d) |  |  | 8d → 9d |  |  |
| CX-2006 | Fire Alarm Interface with BMS/Security/Bold Centre | 2026-06-17 → 2026-07-06 (+19d) | 2026-06-23 → 2026-07-10 (+17d) |  |  | 8d → 9d | CX-2005 → CX-2005 FF |  |
| CX-2007 | Access Control and Security Integration | 2026-06-17 → 2026-07-06 (+19d) | 2026-06-23 → 2026-07-10 (+17d) |  |  | 8d → 9d |  |  |
| CX-2004 | Fire Alarm Verification FAVI | 2026-06-12 → 2026-07-09 (+27d) | 2026-06-15 → 2026-07-10 (+25d) |  |  | 8d → 9d |  |  |
| CX-2005 | Fire Alarm Battery Test | 2026-06-16 → 2026-07-10 (+24d) | 2026-06-16 → 2026-07-10 (+24d) |  |  | 8d → 9d | CX-2004 → CX-2004 FF |  |
| 1 | **MECHANICAL** | 2026-04-29 → 2026-05-25 (+26d) | 2026-06-25 → 2026-07-14 (+19d) |  |  |  |  |  |
| CX-2009 | Domestic Water System Start Up | 2026-04-29 → 2026-05-25 (+26d) | 2026-05-05 → 2026-05-29 (+24d) |  |  | 9d → 3d | T-INT-MF-Z1-MR-1180, T-INT-SF-MR-2120, MIL-C-810 → T-INT-MF-Z1-MR-1180, T-INT-SF-MR-2120, MIL-C-810, T-INT-MF-Z1-MR-1190 |  |
| CX-2010 | Underground Drainage System Start Up (P13A/B, P12A/B, P14) | 2026-05-06 → 2026-06-01 (+26d) | 2026-05-06 → 2026-06-01 (+26d) |  |  | 9d → 3d |  |  |
| CX-2018 | Sprinkler System Testing and Fill | 2026-05-06 → 2026-06-01 (+26d) | 2026-05-12 → 2026-06-05 (+24d) |  |  | 24d → 26d |  |  |
| CX-2011 | Natural Gas System and Meter Installation | 2026-05-07 → 2026-06-02 (+26d) | 2026-05-07 → 2026-06-02 (+26d) |  |  | 9d → 3d |  |  |
| CX-2012 | Hot Water Heating System Start Up | 2026-05-08 → 2026-06-03 (+26d) | 2026-05-11 → 2026-06-04 (+24d) |  |  | 9d → 3d |  |  |
| CX-2013 | Pool Heat Exchanger Start Up | 2026-05-12 → 2026-06-05 (+24d) | 2026-05-14 → 2026-06-09 (+26d) |  |  | 9d → 3d |  |  |
| CX-2019 | BMS System Integration | 2026-05-13 → 2026-06-08 (+26d) | 2026-05-20 → 2026-06-12 (+23d) |  |  | 32d → 28d |  |  |
| CX-2014 | Glycol Heating System Start Up | 2026-05-15 → 2026-06-10 (+26d) | 2026-05-19 → 2026-06-11 (+23d) |  |  | 11d → 7d |  |  |
| CX-2015 | Ventilation System Start Up (AHU, HRV, RTU, Exhaust Fans) | 2026-05-20 → 2026-06-12 (+23d) | 2026-05-26 → 2026-06-18 (+23d) |  |  | 11d → 7d |  |  |

| ID | Task | Start | Finish | Duration | Total float | Predecessors |
| --- | --- | --- | --- | --- | --- | --- |
| CX-2016 | Air Cooling System Start Up | 2026-05-27 → 2026-06-19 (+23d) | 2026-05-28 → 2026-06-22 (+25d) |  | 11d → 7d |  |
| CX-2017 | Air and Water Balancing | 2026-06-05 → 2026-06-23 (+18d) | 2026-06-25 → 2026-07-14 (+19d) |  | 6d → 7d |  |
| 3 | **POOLS** | 2026-05-21 → 2026-06-15 (+25d) | 2026-07-13 → 2026-07-30 (+17d) |  |  |  |
| CX-2025 | Waterslide Commissioning | 2026-05-21 → 2026-06-15 (+25d) | 2026-05-25 → 2026-06-17 (+23d) |  | 34d → 30d |  |
| CX-2067 | Pool Fill- Lap Pool/ Leisure Pool, Adult Hot Tub & Family Hot Tub | 2026-05-27 → 2026-06-15 (+19d) | 2026-06-05 → 2026-06-24 (+19d) |  | 2d → 0d | CX-2009, CX-2012, CX-2013, T-INT-MF-Z5-2390, C-FDN-SN-LPT-1040, C-FDN-SN-S1E/S1F/S7/S2B-1100, C-FDN-A8-1070, C-FDN-PH3-1010, MIL-C-650, T-INT-MF-Z5-2880, T-INT-MF-Z5-2860, T-INT-MF-Z5-2410 SS+15d, T-INT-MF-Z5-2400, T-INT-MF-Z5-1150, T-INT-MF-Z5-2940, T-INT-MF-Z5-2440 → CX-2009, CX-2012, CX-2013, T-INT-MF-Z5-2390, C-FDN-SN-LPT-1040, C-FDN-SN-S1E/S1F/S7/S2B-1100, C-FDN-A8-1070, C-FDN-PH3-1010, MIL-C-650, T-INT-MF-Z5-2880 FS-5d, T-INT-MF-Z5-2860, T-INT-MF-Z5-2410 SS+15d, T-INT-MF-Z5-2400, T-INT-MF-Z5-1150, T-INT-MF-Z5-2940, T-INT-MF-Z5-2440, IPP-QAQC-329 |
| CX-2024 | Pool Deck Flood Test | 2026-05-28 → 2026-06-19 (+22d) | 2026-05-29 → 2026-06-22 (+24d) |  | 30d → 27d |  |
| CX-2023 | Pool Piping and Equipment Start Up ( Pool Mechanical CX) | 2026-06-08 → 2026-06-25 (+17d) | 2026-07-13 → 2026-07-30 (+17d) |  |  |  |
| CX-2026 | Steam/Sauna Commissioning | 2026-06-10 → 2026-06-29 (+19d) | 2026-06-16 → 2026-07-06 (+20d) |  |  |  |
| CX-2022 | Pool Fill- Outdoor Hot Tub | 2026-06-10 → 2026-07-07 (+27d) | 2026-06-12 → 2026-07-09 (+27d) |  | 31d → 21d | CX-2013, CX-2012, CX-2009, T-INT-MF-Z5-2430, C-FDN-A18-1340, MIL-C-470, Pool E System → CX-2013, CX-2012, CX-2009, T-INT-MF-Z5-2430, C-FDN-A18-1340, MIL-C-470 |
| CX-2027 | Chemical Treatment/Balance Tank | 2026-07-07 → 2026-07-24 (+17d) | 2026-07-13 → 2026-07-30 (+17d) |  |  |  |
| CX-2047 | Pool Commissioning Complete | 2026-07-13 → 2026-07-30 (+17d) | 2026-07-13 → 2026-07-30 (+17d) |  |  | CX-2022 FF, CX-2023 FF, CX-2024 FF, CX-2025 FF, CX-2026 FF, CX-2027 FF, CX-2067 FF, T-INT-MF-Z5-2430 FF, C-FDN-A18-1340 FF, T-INT-MF-Z5-1200 FF, MIL-C-470 FF → CX-2022 FF, CX-2023 FF, CX-2024 FF, CX-2025 FF, CX-2026 FF, CX-2027 FF, CX-2067 FF, T-INT-MF-Z5-2430 FF, C-FDN-A18-1340 FF, T-INT-MF-Z5-1200 FF, MIL-C-470 FF, T-INT-MF-Z4-1230 FF |
| 4 | **INSPECTION & DEFICIENCY CLOSEOUT** | 2026-01-19 → 2026-03-05 (+45d) | 2026-07-03 → 2026-07-21 (+18d) |  |  |  |
| IX-ST-1010 | Structural | 2026-01-19 → 2026-03-05 A (+45d) | 2026-01-23 → 2026-04-24 (+91d) |  | 117d → 67d | C-FDN-SN-S1E/S1F/S7/S2B-1100, IPP-QAQC-309 → C-FDN-SN-S1E/S1F/S7/S2B-1100, IPP-QAQC-309, T-INT-MF-Z5-2360 FF |
| IX-ENV-1020 | Building Envelope | 2026-02-23 → 2026-05-01 (+67d) | 2026-02-27 → 2026-05-07 (+69d) |  | 94d → 59d | MIL-C-740, MIL-C-440, MIL-C-490, MIL-C-710, MIL-C-720, MIL-C-730, MIL-C-740 FF, C-ENV-SID-GL-S-1020, C-ENV-SID-CL-AC-1110, C-ENV-SID-CL-E-1010, C-ENV-GL-1000, C-ENV-SID-CL-N-1040 → MIL-C-440, MIL-C-490, MIL-C-710, MIL-C-720, MIL-C-730, MIL-C-740 FF, C-ENV-SID-GL-S-1020, C-ENV-SID-CL-AC-1110, C-ENV-SID-CL-E-1010, C-ENV-GL-1000, C-ENV-SID-CL-N-1040, C-ENV-GL-1010 |
| IX-Z2-ARC-1010 | Zone 2 Architectural | 2026-05-04 → 2026-05-11 (+7d) | 2026-05-08 → 2026-05-15 (+7d) |  | 45d → 53d |  |
| IX-Z1-ARC-1000 | Zone 1 Architectural | 2026-04-21 → 2026-05-14 (+23d) | 2026-04-27 → 2026-05-21 (+24d) |  | 54d → 50d |  |
| IX-L2-ARC-1060 | Level 2 Architectural | 2026-04-20 → 2026-05-19 (+29d) | 2026-04-24 → 2026-05-25 (+31d) |  | 55d → 48d |  |
| IX-POOLMECH-1040 | Pool Mechanical | 2026-05-07 → 2026-06-18 (+42d) | 2026-05-13 → 2026-06-24 (+42d) |  | 41d → 25d | Flow Meters, Pumps and Boosters, Storage, T-INT-MF-Z4-1140, T-INT-BA-2090, T-INT-MF-Z4-1230, T-INT-MF-Z5-2210 → T-INT-BA-2090, T-INT-MF-Z4-1230, T-INT-MF-Z5-2210 |
| IX-Z4-ARC-1030 | Zone 4 Architectural | 2026-05-22 → 2026-06-24 (+33d) | 2026-05-28 → 2026-06-30 (+33d) |  | 17d → 7d |  |
| IX-Z3-ARC-1020 | Zone 3 Architectural | 2026-06-05 → 2026-06-29 (+24d) | 2026-06-11 → 2026-07-06 (+25d) |  | 22d → 19d |  |
| IX-Z6-ARC-1050 | Zone 6 Architectural | 2026-06-22 → 2026-06-30 (+8d) | 2026-06-26 → 2026-07-07 (+11d) |  | 11d → 18d |  |
| IX-Z5-ARC-1040 | Zone 5 Architectural | 2026-06-10 → 2026-07-07 (+27d) | 2026-06-16 → 2026-07-13 (+27d) |  | 19d → 14d |  |
| IX-ELEC-1010 | Electrical | 2026-06-24 → 2026-07-13 (+19d) | 2026-06-30 → 2026-07-17 (+17d) |  | 8d → 9d |  |
| IX-MECH-1000 | Mechanical | 2026-06-26 → 2026-07-15 (+19d) | 2026-07-03 → 2026-07-21 (+18d) |  | 6d → 7d |  |
| 9 | **PROJECT CLOSEOUT** | 2026-01-26 → 2026-04-27 (+91d) |  |  |  |  |
| PCO-2000 | Structural C-Schedule | 2026-01-26 → 2026-04-27 (+91d) | 2026-01-26 → 2026-04-27 (+91d) |  | 117d → 67d |  |
| PCO-2040 | Sprinkler C Schedule Issued | 2026-05-13 → 2026-06-08 (+26d) | 2026-05-13 → 2026-06-08 (+26d) |  | 43d → 39d |  |
| PCO-1020 | LLB staff training etc | 2026-07-14 → 2026-06-30 (-14d) | 2026-07-27 → 2026-07-14 (-13d) |  | 12d → 21d | PCO-1000 FF, CX-2023 → CX-2067 SS+15d |
| PCO-2100 | Signage & Wayfinding (TBC) | 2026-05-29 → 2026-07-02 (+34d) | 2026-06-18 → 2026-07-22 (+34d) |  | 17d → 7d |  |
| PCO-2030 | AEDARSA Final | 2026-04-09 → 2026-07-08 (+90d) | 2026-04-09 → 2026-07-08 (+90d) |  | 66d → 17d |  |
| PCO-2010 | FAVI Certificate Issued | 2026-06-16 → 2026-07-13 (+27d) | 2026-06-16 → 2026-07-13 (+27d) |  | 20d → 15d |  |
| PCO-2050 | Final BIST | 2026-06-26 → 2026-07-15 (+19d) | 2026-06-26 → 2026-07-15 (+19d) |  | 12d → 13d |  |
| PCO-2070 | Electrical C-Schedule | 2026-07-02 → 2026-07-20 (+18d) | 2026-07-02 → 2026-07-20 (+18d) |  | 8d → 9d |  |
| PCO-2060 | Mechanical C-Schedule | 2026-07-06 → 2026-07-22 (+16d) | 2026-07-06 → 2026-07-22 (+16d) |  | 6d → 7d |  |
| PCO-2020 | Occupancy Pre-Reviews with AHS and Code Authority | 2026-06-19 → 2026-07-23 (+34d) | 2026-06-19 → 2026-07-23 (+34d) |  | 17d → 7d | T-INT-MF-Z5-1090, T-INT-MF-Z5-1150, T-INT-MF-Z5-1200, T-INT-MF-Z5-1210, T-INT-MF-Z5-2410, T-INT-MF-Z5-2330, T-INT-MF-Z5-2390, T-INT-MF-Z5-2310, T-INT-MF-Z5-2400, C-FDN-A18-1340, MIL-C-470, C-FDN-SN-LPT-1040, T-INT-MF-Z5-1080, T-INT-MF-Z5-1040, T-INT-MF-Z5-1270, C-FDN-SN-S1E/S1F/S7/S2B-1100, C-FDN-A8-1070, C-FDN-PH3-1010, MIL-C-650, T-INT-MF-Z3-1150, T-INT-MF-Z5-1310, IPP-QAQC-190, C-FDN-A7-SN-1390, T-INT-MF-Z5-2280 SS, T-INT-MF-Z5-2360, T-INT-MF-Z5-2310 SS, T-INT-MF-Z5-2740, C-FDN-NN-S6/S2A-1080, T-INT-MF-Z5-2370 SS, PCO-2100 → T-INT-MF-Z5-1090, T-INT-MF-Z5-1150, T-INT-MF-Z5-1200, T-INT-MF-Z5-1210, T-INT-MF-Z5-2410, T-INT-MF-Z5-2330, T-INT-MF-Z5-2390, T-INT-MF-Z5-2310, T-INT-MF-Z5-2400, C-FDN-A18-1340, MIL-C-470, C-FDN-SN-LPT-1040, T-INT-MF-Z5-1080, T-INT-MF-Z5-1040, T-INT-MF-Z5-1270, C-FDN-SN-S1E/S1F/S7/S2B-1100, C-FDN-A8-1070, C-FDN-PH3-1010, MIL-C-650, T-INT-MF-Z3-1150, T-INT-MF-Z5-1310, IPP-QAQC-190, C-FDN-A7-SN-1390, T-INT-MF-Z5-2280 SS, T-INT-MF-Z5-2360, T-INT-MF-Z5-2310 SS, T-INT-MF-Z5-2740, C-FDN-NN-S6/S2A-1080, T-INT-MF-Z5-2370 SS, PCO-2100, PCO-2150 |
| PCO-2090 | Pool Mechanical C-Schedule | 2026-07-14 → 2026-07-31 (+17d) | 2026-07-14 → 2026-07-31 (+17d) |  |  |  |
| PCO-2080 | Architectural C-Schedule | 2026-07-15 → 2026-08-04 (+20d) | 2026-07-15 → 2026-08-04 (+20d) |  |  | PCO-2000, PCO-2060, PCO-2070, PCO-2090, IX-ENV-1020, IX-L2-ARC-1060, IX-EXT-1030, IX-Z1-ARC-1000, IX-Z2-ARC-1010, IX-Z3-ARC-1020, IX-Z4-ARC-1030, IX-Z5-ARC-1040, IX-Z6-ARC-1050 → PCO-2000, PCO-2060, PCO-2070, PCO-2090, IX-ENV-1020, IX-L2-ARC-1060, IX-EXT-1030, IX-Z1-ARC-1000, IX-Z2-ARC-1010, IX-Z3-ARC-1020, IX-Z4-ARC-1030, IX-Z5-ARC-1040, IX-Z6-ARC-1050, IX-ENV-1070 |
| PCO-1000 | Substantial Completion | 2026-07-16 → 2026-08-05 (+20d) | 2026-07-16 → 2026-08-05 (+20d) |  |  |  |
| PCO-1010 | Final Deficiencies Closeout | 2026-07-16 → 2026-08-05 (+20d) |  | 20d → 7d |  |  |
| PCO-2110 | Final Clean | 2026-07-16 → 2026-08-05 (+20d) | 2026-07-29 → 2026-08-11 (+13d) | 10d → 5d | 9d → 1d |  |
| PCO-2120 | County Interim Move-In | 2026-07-17 → 2026-08-06 (+20d) | 2026-07-23 → 2026-08-12 (+20d) |  | 14d → 1d |  |
